# 01. Programa de Obra - 6 Casas - Altozano

Schedule from MS Project XML, 2026-05-11 to 2027-01-20, status date 2026-05-20, costs in $, A marks actual dates.

## Calendars

- METTA: Mon-Fri 08:00-12:00, 13:00-17:00; Sat 08:00-13:00; Sun off. Exceptions (off unless hours are given): 2026-09-16 (Independencia de Mx), 2026-11-16 (Revolucion MX), 2026-12-24 to 2026-12-25 (Navidad), 2026-12-31 to 2027-01-01 (Año Nuevo).

## Resources

| Resource | Rate |
| --- | --- |
| Artico - Trazo y nivelación | 2101.94 |
| Artico - Excavación a mano material tipo B | 3471.96 |
| Artico - Acarreo en carretilla 20 m |  |
| Artico - Cimbra perimetral losa de cimentación | 7809.03 |
| Artico - Sistema antitermitas PVC | 5045.08 |
| Artico - Hule negro en cimentación | 2143.32 |
| Artico - Ramaleo poliducto eléctrico cimentación | 2764.5 |
| Artico - Ramaleo eléctrico base-medición a centro de carga | 1573.13 |
| Artico - Ramaleo eléctrico exterior | 549.68 |
| Artico - Ramaleo para cable poliducto 3/4 | 1205.12 |
| Artico - Ramaleo para TV poliducto 3/4 | 903.84 |
| Artico - Ramaleo hidráulico CPVC 1" cimentación | 1475.2 |
| Artico - Ramaleo hidráulico CPVC 3/4" cimentación | 2857.22 |
| Artico - Ramaleo hidráulico CPVC 1/2" cimentación | 2531.74 |
| Artico - Prueba hidráulica | 574.99 |
| Artico - Ramaleo sanitario PVC 4" cimentación | 3105.23 |
| Artico - Ramaleo sanitario PVC 2" cimentación | 350.55 |
| Artico - Prueba sanitaria | 574.99 |
| Artico - Acero contratrabe CT-1 | 11705.7 |
| Artico - Acero contratrabe CT-2 | 6523.48 |
| Artico - Malla electrosoldada 6-6/8-8 | 3303.29 |
| Artico - Bastón de refuerzo LS | 5638.16 |
| Artico - Bastón de refuerzo LI | 6583.86 |
| Artico - Colado losa de cimentación f’c=200 | 30432.4 |
| Artico - Curado de concreto | 1632.22 |
| Artico - Acero zapata ZT-1 | 2325.48 |
| Artico - Acero zapata ZT-2 | 7596 |
| Artico - Colado zapatas aisladas f’c=200 | 2148.17 |
| Artico - Cimbra frontera zapatas | 3005.4 |
| Artico - Castillo K1 |  |
| Artico - Castillo K2 | 6659.71 |
| Artico - Castillo K3 | 1630.51 |
| Artico - Castillo K4 | 28258.4 |
| Artico - Castillo K5 | 6623.16 |
| Artico - Refuerzo de muro K6 | 8627.4 |
| Artico - Columna C1 | 4759.74 |
| Artico - Columna C2 | 1930.42 |
| Artico - Dala de cerramiento CR-1 | 15378.5 |
| Artico - Dala de cerramiento CR-2 |  |
| Artico - Cadena block dala | 12036.4 |
| Artico - Muro de ladrillo aparente | 43281.5 |
| Artico - Muro de block planta baja | 13340.9 |
| Artico - Escalera de concreto armado | 19320.2 |
| Artico - Vigueta pretensada 1.40 m | 706.06 |
| Artico - Vigueta pretensada 1.95 m | 2255.35 |
| Artico - Vigueta pretensada 3.35 m | 3503.1 |
| Artico - Vigueta pretensada 3.50 m | 2909.44 |
| Artico - Vigueta pretensada 3.75 m | 2315.76 |
| Artico - Vigueta pretensada 3.90 m | 7986.5 |
| Artico - Bovedilla poliestireno entrepiso | 12681.1 |
| Artico - Dala de coronamiento | 2427.91 |
| Artico - Nervadura NR-1 | 4151.02 |
| Artico - Nervadura NR-2 | 1305.84 |
| Artico - Trabe TR-1 | 4403.43 |
| Artico - Malla 66-10/10 losa de compresión | 3285.06 |
| Artico - Cimbra losa de azotea | 22457.2 |
| Artico - Concreto losa de entrepiso f’c=200 | 24413.5 |
| Artico - Curado de concreto | 1977 |
| Artico - Cimbra exterior corta losa | 6758.73 |
| Artico - Ramaleo poliducto eléctrico entrepiso | 5471.78 |
| Artico - Ramaleo para cable poliducto 3/4 | 1411.38 |
| Artico - Ramaleo para TV poliducto 3/4 | 1411.38 |
| Artico - Ramaleo hidráulico CPVC 3/4" | 1227.26 |
| Artico - Ramaleo hidráulico CPVC 1/2" | 2250.43 |
| Artico - Prueba hidráulica | 574.99 |
| Artico - Ramaleo sanitario PVC 4" | 1376.37 |
| Artico - Ramaleo sanitario PVC 2" | 967.52 |
| Artico - Prueba sanitaria | 574.99 |
| Artico - Castillo K1 | 6504.92 |
| Artico - Castillo K2 | 11814.9 |
| Artico - Castillo K3 | 5150.71 |
| Artico - Castillo K4 | 47507.6 |
| Artico - Castillo K5 | 2823 |
| Artico - Refuerzo de muro K6 | 13197.4 |
| Artico - Dala de cerramiento CR-1 | 16847.9 |
| Artico - Cadena block dala | 22412.9 |
| Artico - Muro de ladrillo aparente | 51035.8 |
| Artico - Muro de block planta alta | 26007.1 |
| Artico - Cortalosa CL-1 | 5979.6 |
| Artico - Vigueta pretensada V11-40 390 | 10233.5 |
| Artico - Vigueta pretensada V11-30 280 | 1790.52 |
| Artico - Vigueta pretensada V11-30 285 | 605.75 |
| Artico - Vigueta pretensada V11-30 220 | 489.89 |
| Artico - Vigueta pretensada V11-40 75 | 231.43 |
| Artico - Vigueta pretensada V11-40 195 | 2226.65 |
| Artico - Vigueta pretensada V11-50 450 | 5399.22 |
| Artico - Bovedilla poliestireno azotea | 14539.3 |
| Artico - Malla 66-10/10 losa de compresión | 3345.03 |
| Artico - Concreto losa de azotea f’c=200 | 26392.1 |
| Artico - Curado de concreto | 2094.73 |
| Artico - Cimbra losa de azotea | 22883.1 |
| Artico - Ramaleo de poliducto para instalacion electrica en azotea | 2156.76 |
| Artico - Castillo K1 | 2222.52 |
| Artico - Dala de cerramiento en pretil | 9021.93 |
| Artico - Muro de block 12x15x40 | 8210.4 |
| Artico - Chaflán en azotea | 5086.68 |
| Artico - Aplanado exterior Mortermax fino | 4289.05 |
| Artico - Acabado de azotea para impermeabilizar | 18662.7 |
| Artico - Curado de concreto | 2094.73 |
| Artico - Primera limpieza de obra | 1676 |
| Artico - Primera carga y acarreo de escombro | 2541 |
| Artico - Impermeabilización de pretil Kover 5 años | 4130.46 |
| Artico - Impermeabilización de losa Kover 5 años | 17995.7 |
| Artico - Lavadero de granito | 2170.59 |
| Artico - Ramaleo hidráulico exterior CPVC 1 1/4" | 742.82 |
| Artico - Ramaleo hidráulico exterior CPVC 1" | 73.76 |
| Artico - Ramaleo hidráulico exterior CPVC 3/4" | 431.46 |
| Artico - Ramaleo hidráulico exterior CPVC 1/2" | 2375.46 |
| Artico - Prueba hidráulica | 444.83 |
| Artico - Ramaleo sanitario exterior PVC 4" | 3122.01 |
| Artico - Ramaleo sanitario exterior PVC 2" | 210.33 |
| Artico - Prueba sanitaria | 1 |
| Artico - Centro de carga muros PB | 5038.08 |
| Artico - Firme de concreto 8 cm | 17945 |
| Artico - Curado de concreto | 1029.23 |
| Artico - Cisterna 2800 L con instalación | 33719.4 |
| Artico - Banqueta y huellas de concreto | 6661.78 |
| Artico - Curado de concreto | 341.35 |
| Artico - Número oficial | 732.54 |
| Artico - Detallado de rodapié exterior |  |
| Artico - Detallado de muros interiores | 28690.3 |
| Artico - Aplanado grueso fachada | 70781 |
| Artico - Aplanado fino estuco fachada | 40492.2 |
| Artico - Pintura acrílica 1-0102P | 19337.9 |
| Artico - Pintura acrílica 1-1404D | 1806.65 |
| Artico - Yeso pulido en muros | 89347.4 |
| Artico - Pintura vinílica 699 Cottage White | 33243 |
| Artico - Pintura vinílica 691 Pacific Bungalow | 4696.15 |
| Artico - Yeso pulido en plafones | 36494.3 |
| Artico - Pintura vinílica Nano White | 12771 |
| Artico - Perfilado de puertas y ventanas | 9583.13 |
| Artico - Piso Moonside Crema 60x60 | 28103.5 |
| Artico - Zoclo piso 60x60 Moonside Crema | 8885.16 |
| Artico - Piso Moonside Crema 60x60 | 7843.75 |
| Artico - Zoclo piso 60x60 Moonside Crema | 5000.15 |
| Artico - Piso porcelánico Acali 20x20 beige | 2806.17 |
| Artico - Impermeabilización en regadera | 871.42 |
| Artico - Azulejo Moonside Crema 60x60 | 13382.5 |
| Artico - Fabricacion de nicho decorativo en baños | 2419.7 |
| Artico - Sardinel en regadera | 3047.83 |
| Artico - Piso Moonside Crema 60x60 | 7411.85 |
| Artico - Zoclo piso 60x60 Moonside Crema | 3910.63 |
| Artico - Rastrilleo, afine y nivelado de tierra | 601.23 |
| Artico - Segunda limpieza de obra | 4908 |
| Artico - Segunda carga y acarreo de escombro | 1840 |
| Artico - Puerta ventana P-05 corrediza | 22907.7 |
| Artico - Ventana corrediza V-01 | 13744.6 |
| Artico - Ventana corrediza V-03 | 5059.93 |
| Artico - Ventana corrediza V-05 | 16035.4 |
| Artico - Ventana corrediza tipo XO | 20239.7 |
| Artico - Ventana fija escalera | 6013.27 |
| Artico - Puerta P-01 de seguridad | 15352.3 |
| Artico - Puerta P-03 interior | 24149.7 |
| Artico - Puerta P-02 interior | 24149.7 |
| Artico - Puerta exterior lavandería | 5576.28 |
| Artico - Alimentación eléctrica base a centro de carga | 12127.7 |
| Artico - Interruptor termomagnético 1x15 A | 2414.94 |
| Artico - Interruptor termomagnético 1x20 A | 747.48 |
| Artico - Interruptor termomagnético 2x20 A | 5851.14 |
| Artico - Salida para apagador 3 vías | 2824.4 |
| Artico - Salida para apagador triple | 1117.24 |
| Artico - Salida para apagador doble | 2711.1 |
| Artico - Salida para apagador sencillo | 4337.76 |
| Artico - Salida de alumbrado en losa | 10302.2 |
| Artico - Salida de alumbrado en muro | 5027.58 |
| Artico - Salida para contacto 220 V | 3863.94 |
| Artico - Salida para contacto doble | 11569.3 |
| Artico - Salida para contacto doble área húmeda | 3653.46 |
| Artico - Salida TV / telefonía / intercom | 1255.8 |
| Artico - Extractor 4" baño | 2863.44 |
| Artico - Prueba eléctrica | 3674.2 |
| Artico - Murete convencional | 9859.86 |
| Artico - Tubo PVC 3/4" red de condensados | 1693.92 |
| Artico - Caja PVC para lavadora | 1322.48 |
| Artico - Salida para secadora PVC 4" | 828.09 |
| Artico - Salida hidráulica para boiler | 1545.82 |
| Artico - Salida hidráulica para llave de jardín | 1294.44 |
| Artico - Salida hidráulica para lavabo | 4637.46 |
| Artico - Salida hidráulica para purificación | 561.44 |
| Artico - Salida sanitaria para lavabo | 4960.26 |
| Artico - Salida hidráulica para lavadero | 711.4 |
| Artico - Salida sanitaria para lavadero | 769.21 |
| Artico - Salida hidráulica para lavadora | 1422.8 |
| Artico - Salida sanitaria para lavadora | 769.21 |
| Artico - Salida hidráulica para regadera | 2845.6 |
| Artico - Salida sanitaria para regadera | 1594.78 |
| Artico - Salida hidráulica para WC | 1765.02 |
| Artico - Salida sanitaria para WC | 2396.31 |
| Artico - Salida hidráulica para zinc | 1176.68 |
| Artico - Salida sanitaria para zinc | 797.39 |
| Artico - Tubo para ventila de baño 2" | 4437.96 |
| Artico - Tubo para minisplit PVC 3" | 2001.51 |
| Artico - Cuadro de medición | 5226.34 |
| Artico - Prueba sanitaria | 287.5 |
| Artico - Prueba hidráulica | 287.5 |
| Artico - Salida hidráulica para tanque hidroneumático | 663.84 |
| Artico - Salida hidráulica para Active Driver | 742.81 |
| Artico - Ramaleo para gas 1/2" | 6244.41 |
| Artico - Excavación a mano material tipo B | 1202.97 |
| Artico - WC one piece Smart Corona | 9496.2 |
| Artico - Lavabo Tarento Vanity | 33355.9 |
| Artico - Regadera y monomando Thames | 6045.86 |
| Artico - Coladera cuadrada para inserto cerámico | 5513.04 |
| Artico - Toallero argolla Thames | 2336.73 |
| Artico - Toallero barra Thames | 1557.82 |
| Artico - Portapapel Thames | 1837.02 |
| Artico - Gancho percha Thames | 838.12 |
| Artico - Electronivel Rotoplas 5 m | 1197.02 |
| Artico - Manómetro | 1437.48 |
| Artico - Interruptor de presión 30-50 PSI | 431.24 |
| Artico - Tanque hidroneumático FPS-24LX | 7647.39 |
| Artico - Bomba sumergible Dominator 1.2 HP | 11232.5 |
| Artico - Cisterna prefabricada 2800 L | 11997.3 |
| Artico - Roseta de cerámica para luminaria | 1317.5 |
| Artico - Spot Brighton | 1618.02 |
| Artico - Arbotante bidireccional 12W | 9659.88 |
| Artico - Limpieza fina para entrega | 2229.82 |
| Artico - Tercera limpieza de obra | 1083.87 |
| Artico - Tercera carga y acarreo de escombro | 1960.2 |
| Artico - Barda de block aparente | 26996 |
| Corsac - Trazo y nivelación | 9070.2 |
| Corsac - Excavación a mano material tipo B | 1118.55 |
| Corsac - Acarreo en carretilla 20 m | 736.82 |
| Corsac - Cimbra perimetral losa de cimentación | 10207.6 |
| Corsac - Sistema antitermitas PVC | 5045.08 |
| Corsac - Hule negro en cimentación | 3100.09 |
| Corsac - Ramaleo poliducto eléctrico cimentación | 2653.92 |
| Corsac - Ramaleo eléctrico base-medición a centro de carga | 1452.12 |
| Corsac - Ramaleo eléctrico exterior | 2404.85 |
| Corsac - Ramaleo para cable poliducto 3/4 | 753.2 |
| Corsac - Ramaleo para TV poliducto 3/4 | 753.2 |
| Corsac - Ramaleo hidráulico CPVC 1-1/4" cimentación | 272.37 |
| Corsac - Ramaleo hidráulico CPVC 1" cimentación | 371.75 |
| Corsac - Ramaleo hidráulico CPVC 3/4" cimentación | 2465.07 |
| Corsac - Ramaleo hidráulico CPVC 1/2" cimentación | 582.14 |
| Corsac - Prueba hidráulica | 574.99 |
| Corsac - Ramaleo sanitario PVC 4" cimentación | 1659.62 |
| Corsac - Ramaleo sanitario PVC 2" cimentación | 87.1 |
| Corsac - Prueba sanitaria | 574.99 |
| Corsac - Acero contratrabe CT-1 | 18766.1 |
| Corsac - Acero contratrabe CT-2 | 11214.8 |
| Corsac - Malla electrosoldada 6-6/8-8 | 5062.15 |
| Corsac - Bastón de refuerzo LS | 7598.06 |
| Corsac - Bastón de refuerzo LI | 14734 |
| Corsac - Colado losa de cimentación f’c=200 | 50517.8 |
| Corsac - Curado de concreto | 2501.31 |
| Corsac - Acero zapata ZL | 13441.1 |
| Corsac - Acero zapata ZT-1 | 26888.5 |
| Corsac - Cimbra frontera zapatas |  |
| Corsac - Castillo K1 | 25106.1 |
| Corsac - Castillo K3 | 19843.7 |
| Corsac - Castillo K4 | 2267.86 |
| Corsac - Castillo K5 | 3146.27 |
| Corsac - Refuerzo de muro K6 | 6981.21 |
| Corsac - Dala de cerramiento CR-1 | 21736.7 |
| Corsac - Dala de cerramiento CR-2 | 6832.58 |
| Corsac - Cadena block dala | 7108.11 |
| Corsac - Muro de ladrillo aparente | 18986.4 |
| Corsac - Muro de block planta baja | 52446.5 |
| Corsac - Ramaleo electrico en Muros Planta Baja | 1637.54 |
| Corsac - Ramaleo para cable poliducto 3/4 | 470.46 |
| Corsac - Ramaleo para TV poliducto 3/4 | 470.46 |
| Corsac - Escalera de concreto armado | 26683.1 |
| Corsac - Dala de Coronamiento 10cm | 12050.3 |
| Corsac - Dala de Coronamiento 12cm | 7601.03 |
| Corsac - Trabe TR-1 | 975.71 |
| Corsac - Trabe TR-2 | 1982.23 |
| Corsac - Nervadura NR-1 | 1165.56 |
| Corsac - Nervadura NR-2 | 11155.3 |
| Corsac - Nervadura NR-3 | 8306.69 |
| Corsac - Nervadura NR-4 | 1060.23 |
| Corsac - Acero de refuerzo en nervios #3 | 22015.5 |
| Corsac - Acero de refuerzo long. #3 | 2269.54 |
| Corsac - Acero de refuerzo long. #4 | 1319.5 |
| Corsac - Malla 66-10/10 losa de compresión | 3628.43 |
| Corsac - Acero de Losa Maciza | 1314.66 |
| Corsac - Caseton de 60x60x20cm | 20441.7 |
| Corsac - Concreto losa de entrepiso f’c=200 | 57407.4 |
| Corsac - Curado de concreto | 2378.69 |
| Corsac - Cimbra losa de entrepiso | 33366.2 |
| Corsac - Cimbra exterior corta losa | 4977.22 |
| Corsac - Ramaleo poliducto eléctrico entrepiso | 5312.02 |
| Corsac - Ramaleo hidráulico CPVC 3/4" | 717.18 |
| Corsac - Ramaleo hidráulico CPVC 1/2" | 1532.33 |
| Corsac - Prueba hidráulica | 574.99 |
| Corsac - Ramaleo sanitario PVC 4" | 402.9 |
| Corsac - Ramaleo sanitario PVC 2" | 476.74 |
| Corsac - Prueba sanitaria | 574.99 |
| Corsac - Castillo K1 | 28730.9 |
| Corsac - Castillo K2 | 13836.4 |
| Corsac - Castillo K4 | 4849.94 |
| Corsac - Castillo K5 | 7235.14 |
| Corsac - Castillo K6 | 3264.93 |
| Corsac - Refuerzo de muro | 14238.5 |
| Corsac - Dala de cerramiento CR-1 | 25086.7 |
| Corsac - Dala de cerramiento CR-2 | 18304.1 |
| Corsac - Cadena block dala | 20409.6 |
| Corsac - Muro de ladrillo aparente | 38435.5 |
| Corsac - Muro de block planta alta | 51569.7 |
| Corsac - Ramaleo electrico en Muros Planta Alta | 958.56 |
| Corsac - Cortalosa CL-1 | 7848.02 |
| Corsac - Cortalosa CL-2 | 9347.38 |
| Corsac - Vigueta pretensada V11-30 125 | 2564.4 |
| Corsac - Vigueta pretensada V11-30 185 | 1710.04 |
| Corsac - Vigueta pretensada V11-30 190 | 872.84 |
| Corsac - Vigueta pretensada V11-30 205 | 463.16 |
| Corsac - Vigueta pretensada V11-30 215 | 1923.92 |
| Corsac - Vigueta pretensada V11-30 260 | 1683.57 |
| Corsac - Vigueta pretensada V11-30 285 | 3634.5 |
| Corsac - Vigueta pretensada V11-40 330 | 4115.76 |
| Corsac - Vigueta pretensada V11-40 335 | 6948.8 |
| Corsac - Vigueta pretensada V11-50 505 | 7983.2 |
| Corsac - Bovedilla poliestireno azotea | 17107.4 |
| Corsac - Malla 66-10/10 losa de compresión | 3974.1 |
| Corsac - Concreto losa de azotea f’c=200 | 27590.8 |
| Corsac - Curado de concreto | 2488.67 |
| Corsac - Cimbra losa de azotea | 24031.5 |
| Corsac - Ramaleo de poliducto para instalacion electrica en azotea | 2196.7 |
| Corsac - Castillo K1 | 4464.6 |
| Corsac - Dala de cerramiento en pretil | 14239.8 |
| Corsac - Muro de ladrillo 7x14x28 | 20649 |
| Corsac - Chaflán en azotea | 4296.96 |
| Corsac - Diamante de entortado | 2318.32 |
| Corsac - Aplanado exterior Mortermax fino | 5749.92 |
| Corsac - Entortado en Losa | 36613.7 |
| Corsac - Curado de concreto | 2488.67 |
| Corsac - Primera limpieza de obra | 5509.8 |
| Corsac - Primera carga y acarreo de escombro | 1840.86 |
| Corsac - Impermeabilización de pretil Kover 5 años | 3716.95 |
| Corsac - Impermeabilización de losa Kover 5 años | 21333.8 |
| Corsac - Lavadero de granito | 2170.59 |
| Corsac - Ranurado y resane general inst. en muros |  |
| Corsac - Ranurado y resane eléctrico 1/2" a 3/4" | 9159.15 |
| Corsac - Ranurado y resane hidráulico 1/2" a 1" | 6332.5 |
| Corsac - Resane sanitario tubería 2" | 1656.86 |
| Corsac - Resane sanitario tubería 4" | 261.53 |
| Corsac - Resane minisplit tubería 3" | 1615.32 |
| Corsac - Ramal hidráulico exterior CPVC 1 1/4" | 3892.35 |
| Corsac - Ramal hidráulico exterior CPVC 1" | 103.26 |
| Corsac - Ramal hidráulico exterior CPVC 3/4" | 2300.16 |
| Corsac - Ramal hidráulico exterior CPVC 1/2" | 697.01 |
| Corsac - Prueba hidrostática ramal hidráulico | 574.99 |
| Corsac - Ramal sanitario exterior PVC 4" | 4001.07 |
| Corsac - Ramal sanitario exterior PVC 2" | 582.17 |
| Corsac - Prueba instalación sanitaria | 574.99 |
| Corsac - Centro de carga eléctrico en muros PB | 5038.08 |
| Corsac - Firme de concreto 8 cm f’c=200 | 19232.1 |
| Corsac - Curado con membrana Sika | 961.86 |
| Corsac - Nicho para cisterna 2.72x2.72x1.47 m | 34476.1 |
| Corsac - Banqueta y huellas de concreto 10 cm | 7984.25 |
| Corsac - Curado de concreto | 399.32 |
| Corsac - Número oficial | 742.91 |
| Corsac - Detalle rodapié exterior acabado fino | 9692.98 |
| Corsac - Detalle de losas y volados acabado fino | 29626.6 |
| Corsac - Detalle fino en muros interiores | 33171.1 |
| Corsac - Jardín interior bajo escalera con pozo de absorción | 13646.9 |
| Corsac - Aplanado grueso fachada | 64808.1 |
| Corsac - Aplanado fino estuco fachada | 38790.7 |
| Corsac - Pintura acrílica 1-0102P | 22861.3 |
| Corsac - Pintura acrílica 1-1404D | 3311.24 |
| Corsac - Cantera 40x60cm | 17501 |
| Corsac - Lambrin de permabase 1 cara | 12951.7 |
| Corsac - Enchapado de Permabase | 3589.26 |
| Corsac - Cubierta de Permabase | 2719.7 |
| Corsac - Yeso pulido en muros | 101453 |
| Corsac - Aplanado en muros enjarre grueso | 5107.77 |
| Corsac - Pintura vinílica OR-W13 SHOELACE | 36924.8 |
| Corsac - Pintura vinílica PPUI5-13 Creamy M. | 6597.05 |
| Corsac - Pintura vinílica MD-06 Nano White | 15890 |
| Corsac - Yeso pulido en plafones | 35433.1 |
| Corsac - Perfilado de puertas y ventanas | 10491.2 |
| Corsac - Piso Adhara 44X89 | 66316 |
| Corsac - Zoclo Adhara 44X89 | 13192.3 |
| Corsac - Acabado aparente de pisos - pulido | 11266.2 |
| Corsac - Azulejo Mod. Ornamenta 60x30 | 15685.9 |
| Corsac - Impermeabilización en regadera | 844.6 |
| Corsac - Piso Mod. Valparaiso 20x20 | 2869.85 |
| Corsac - Zoclo Adhara 44X89 | 3126.61 |
| Corsac - Piso Adhara 44X89 | 6617.83 |
| Corsac - Fabricacion de nicho decorativo en baños | 2474.74 |
| Corsac - Sardinel en regadera | 2781.14 |
| Corsac - Piso Adhara 44X89 | 3161.04 |
| Corsac - Zoclo Adhara 44X89 |  |
| Corsac - Rastrilleo, afine y nivelado de tierra | 883.4 |
| Corsac - Segunda limpieza de obra | 5509.8 |
| Corsac - Segunda carga y acarreo de escombro | 1840 |
| Corsac - Fijo medidas 0.30x4.90m | 21476 |
| Corsac - Ventana Corrediza 1.80x1.60m | 13840.1 |
| Corsac - Ventana Corrediza 0.60x0.40m | 1145.38 |
| Corsac - Ventana Corrediza 1.54x0.50m | 3817.95 |
| Corsac - Fijo medidas 1.40x2.50m | 16703.5 |
| Corsac - Ventana Corrediza 1.80x1.50m | 12885.6 |
| Corsac - Ventana Corrediza 1.40x1.60m | 32070.8 |
| Corsac - Ventana Corrediza 0.95x0.40m | 7254.1 |
| Corsac - Puerta corrediza 3.85x2.10m | 38656.7 |
| Corsac - Barandal de Cristal Templado | 6324.91 |
| Corsac - Puerta P-01 de seguridad | 15449.4 |
| Corsac - Puerta P-01 interior | 3869.74 |
| Corsac - Puerta P-02 interior | 14719.8 |
| Corsac - Puerta P-03 interior | 7359.9 |
| Corsac - Puerta P-04 interior | 8049.89 |
| Corsac - Barandal de Herreria en escalera | 30552.8 |
| Corsac - Escalera de herreria | 38703 |
| Corsac - Techumbre en acceso Principal | 18629.7 |
| Corsac - Techumbre en 1.80x0.50m | 9290.03 |
| Corsac - Techumbre en 1.40x0.50m | 6899.9 |
| Corsac - Imper con manto prefabricado | 748.28 |
| Corsac - Plafon hoja tablaroca std | 1519.88 |
| Corsac - Acabado Woodstock en parte inf. Cubierta | 2380.01 |
| Corsac - Instalación eléctrica base a centro de carga | 12127.7 |
| Corsac - Interruptor termomagnético 1x20 | 3363.66 |
| Corsac - Interruptor termomagnético 2x20 | 1950.38 |
| Corsac - Salida apagador 3 vías | 6835.52 |
| Corsac - Salida apagador doble | 4973.84 |
| Corsac - Salida apagador sencillo | 7460.76 |
| Corsac - Salida alumbrado en losa | 27397.7 |
| Corsac - Salida contacto exterior doble | 3461.84 |
| Corsac - Salida contacto 220V exterior | 3911.4 |
| Corsac - Salida contacto doble | 20762.5 |
| Corsac - Salida contacto área húmeda | 2863.8 |
| Corsac - Salida TV / telefonía / intercom | 3432.1 |
| Corsac - Extractor 4” baño | 1908.96 |
| Corsac - Prueba eléctrica | 3674.2 |
| Corsac - Tubería condensados PVC 1" | 5970.02 |
| Corsac - Tubería sanitaria PVC 4" | 3607.47 |
| Corsac - Coladera H-444 | 7359.88 |
| Corsac - Caja PVC lavadora | 1322.48 |
| Corsac - Salida secadora PVC 4" | 786.65 |
| Corsac - Salida hidráulica boiler | 1545.82 |
| Corsac - Salida llave de jardín | 431.48 |
| Corsac - Salida hidráulica lavabo | 4637.46 |
| Corsac - Salida hidráulica purificador |  |
| Corsac - Salida sanitaria lavabo | 1865.46 |
| Corsac - Salida hidráulica lavadero | 711.4 |
| Corsac - Salida sanitaria lavadero | 564.32 |
| Corsac - Salida hidráulica lavadora | 1422.8 |
| Corsac - Salida sanitaria lavadora 2" | 564.32 |
| Corsac - Salida hidráulica regadera | 2845.6 |
| Corsac - Salida sanitaria regadera 2" | 1185 |
| Corsac - Salida hidráulica WC | 1765.02 |
| Corsac - Salida sanitaria WC 4" | 2271.96 |
| Corsac - Salida hidráulica zinc | 1176.68 |
| Corsac - Salida sanitaria zinc | 592.5 |
| Corsac - Ventila baño PVC 2" | 4417.83 |
| Corsac - Paso minisplit PVC 3" | 2656.08 |
| Corsac - Cuadro de medición columpio | 5226.34 |
| Corsac - Pozo de absorción 0.50x0.50x0.50 | 1306.58 |
| Corsac - Prueba sanitaria final | 287.5 |
| Corsac - Prueba hidrostática final | 287.5 |
| Corsac - Salida válvula control 19 mm | 2157.4 |
| Corsac - Salida válvula control 13 mm | 2318.73 |
| Corsac - Salida tanque hidroneumático 1" | 663.84 |
| Corsac - Salida Active Driver 1 1/4" | 742.81 |
| Corsac - Ramaleo para gas 1/2" | 11607.8 |
| Corsac - Excavación a mano material tipo B | 681.62 |
| Corsac - WC completo Austral | 13692.9 |
| Corsac - Lavabo Senna con pedestal | 1447.83 |
| Corsac - Tarja / lavabo combo Guinea 80x45 | 7359.9 |
| Corsac - Regadera con monomando | 5979.92 |
| Corsac - Coladera inserto cerámico | 3255.54 |
| Corsac - Toallero sencillo | 4242.66 |
| Corsac - Toallero barra | 5242.86 |
| Corsac - Portapapel | 4950.69 |
| Corsac - Gancho baño | 1244.52 |
| Corsac - Electronivel Rotoplas | 1197.02 |
| Corsac - Manómetro | 1437.48 |
| Corsac - Interruptor de presión 30-50 PSI | 431.24 |
| Corsac - Tanque hidroneumático FPS-24LX | 7647.39 |
| Corsac - Bomba sumergible 1.2 HP | 10349.9 |
| Corsac - Cisterna prefabricada 2800 L | 13728.2 |
| Corsac - Roseta cerámica | 1472.5 |
| Corsac - Luminaria lagartijera LED | 3219.96 |
| Corsac - Spot 6W Tecnolite | 9168.78 |
| Corsac - Spot 7W Tecnolite | 3104.94 |
| Corsac - Arbotante exterior | 19319.8 |
| Corsac - Estaca LED exterior | 7129.92 |
| Corsac - Tira LED |  |
| Corsac - Spot exterior 50W | 1897.45 |
| Corsac - Timbre inalámbrico con bocina | 861.34 |
| Corsac - Murete convencional | 9859.86 |
| Corsac - Barda de block | 14392.5 |
| Corsac - Limpieza fina de casa | 14290.2 |
| Corsac - Limpieza general exterior | 5509.8 |
| Corsac - Carga y acarreo final de escombro | 1840 |

## Schedule

| ID | WBS | Task | Type | Duration | Start | Finish | Predecessors | Complete | Remaining | Baseline start | Baseline finish | Baseline duration | Total slack | Free slack | Resources | Cost | Baseline cost | Actual cost |
| --- | --- | --- | --- | --- | --- | --- | --- | --- | --- | --- | --- | --- | --- | --- | --- | --- | --- | --- |
| 1 | 1 | **ALTOZANO - METTA - 6 CASAS** |  | 199d | 2026-05-11 A | 2027-01-20 |  |  | 198.46d | 2026-05-11 | 2027-01-20 | 199d | 0d |  |  | 4,185,794.36 | 4,185,794.36 | 28,284.77 |
| 2 | 1.1 | **HITOS IMPORTANTES** |  | 14d | 2026-05-11 A | 2026-05-27 |  |  | 14d | 2026-05-11 | 2026-05-27 | 14d | 0d |  |  |  |  |  |
| 3 | 1.1.1 | INICIO DEL PROYECTO | milestone | 0d | 2026-05-11 A | 2026-05-11 A |  | 100% |  | 2026-05-11 | 2026-05-11 |  |  |  |  |  |  |  |
| 4 | 1.1.2 | INICIO LOTE-20 M-668 ARTICO-A | milestone | 0d | 2026-05-11 A | 2026-05-11 A | 3 | 100% |  | 2026-05-11 | 2026-05-11 |  |  |  |  |  |  |  |
| 5 | 1.1.3 | INICIO LOTE-21 M-668 CORSAC-A | milestone | 0d | 2026-05-20 A | 2026-05-20 A | 3FS+8d | 100% |  | 2026-05-20 | 2026-05-20 |  |  |  |  |  |  |  |
| 6 | 1.1.4 | INICIO LOTE-22 M-668 CORSAC-B | milestone | 0d | 2026-05-15 A | 2026-05-15 A | 3FS+5d | 100% |  | 2026-05-15 | 2026-05-15 |  |  |  |  |  |  |  |
| 7 | 1.1.5 | INICIO LOTE-02 M-661 CORSAC-B | milestone | 0d | 2026-05-20 A | 2026-05-20 A | 3FS+8d | 100% |  | 2026-05-20 | 2026-05-20 |  |  |  |  |  |  |  |
| 8 | 1.1.6 | INICIO LOTE-03 M-661 CORSAC-A | milestone | 0d | 2026-05-15 A | 2026-05-15 A | 3FS+5d | 100% |  | 2026-05-15 | 2026-05-15 |  |  |  |  |  |  |  |
| 9 | 1.1.7 | INICIO LOTE-04 M-661 ARTICO-A | milestone | 0d | 2026-05-27 | 2026-05-27 | 3FS+14d |  |  | 2026-05-27 | 2026-05-27 |  | 0d |  |  |  |  |  |
| 10 | 1.2 | **LOTE 04 M-661 ARTICO-A** |  | 175d | 2026-05-11 A | 2026-12-16 |  | 2% | 171.92d | 2026-05-11 | 2026-12-16 | 175d | 24d |  |  | 1,720,903.22 | 1,720,903.22 | 22,615.9 |
| 11 | 1.2.1 | **HITOS IMPORTANTES DEL LOTE** |  | 175d | 2026-05-11 A | 2026-12-16 |  |  | 175d | 2026-05-11 | 2026-12-16 | 175d | 24d |  |  |  |  |  |
| 12 | 1.2.1.1 | Inicio del LOTE 04 M-661 ARTICO-A | milestone | 0d | 2026-05-11 A | 2026-05-11 A | 4 | 100% |  | 2026-05-11 | 2026-05-11 |  |  |  |  |  |  |  |
| 13 | 1.2.1.2 | Colado de Losa de Cimentación | milestone | 0d | 2026-06-01 | 2026-06-01 | 43 |  |  | 2026-06-01 | 2026-06-01 |  | 182d |  |  |  |  |  |
| 14 | 1.2.1.3 | Colado de Losa de Entrepiso | milestone | 0d | 2026-07-08 | 2026-07-08 | 80 |  |  | 2026-07-08 | 2026-07-08 |  | 151d |  |  |  |  |  |
| 15 | 1.2.1.4 | Colado de Losa de Azotea | milestone | 0d | 2026-08-14 | 2026-08-14 | 115 |  |  | 2026-08-14 | 2026-08-14 |  | 121d |  |  |  |  |  |
| 16 | 1.2.1.5 | Entrega de vivienda | milestone | 0d | 2026-12-16 | 2026-12-16 | 264, 265, 266 |  |  | 2026-12-16 | 2026-12-16 |  | 24d |  |  |  |  |  |
| 17 | 1.2.2 | **TRABAJOS PRELIMINARES** |  | 2d | 2026-05-11 A | 2026-05-12 A |  | 100% |  | 2026-05-11 | 2026-05-12 | 2d |  |  |  | 2,101.94 | 2,101.94 | 2,101.94 |
| 18 | 1.2.2.1 | Trazo y nivelación |  | 2d | 2026-05-11 A | 2026-05-12 A | 12 | 100% |  | 2026-05-11 | 2026-05-12 | 2d |  |  | Artico - Trazo y nivelación | 2,101.94 | 2,101.94 | 2,101.94 |
| 19 | 1.2.3 | **EXCAVACIONES** |  | 3d | 2026-05-13 A | 2026-05-15 A |  | 100% |  | 2026-05-13 | 2026-05-15 | 3d |  |  |  | 3,471.96 | 3,471.96 | 3,471.96 |
| 20 | 1.2.3.1 | Excavación a mano material tipo B |  | 3d | 2026-05-13 A | 2026-05-15 A | 18 | 100% |  | 2026-05-13 | 2026-05-15 | 3d |  |  | Artico - Excavación a mano material tipo B | 3,471.96 | 3,471.96 | 3,471.96 |
| 21 | 1.2.3.2 | Acarreo en carretilla 20 m |  | 2d | 2026-05-14 A | 2026-05-15 A | 20SS+1d | 100% |  | 2026-05-14 | 2026-05-15 | 2d |  |  | Artico - Acarreo en carretilla 20 m |  |  |  |
| 22 | 1.2.4 | **CIMENTACION** |  | 13d | 2026-05-16 A | 2026-06-02 |  | 15% | 10.99d | 2026-05-16 | 2026-06-02 | 13d | 181d |  |  | 114,357.79 | 114,357.79 | 17,042 |
| 23 | 1.2.4.1 | Cimbra perimetral losa de cimentación |  | 3d | 2026-05-16 A | 2026-05-20 A | 20, 21 | 100% |  | 2026-05-16 | 2026-05-20 | 3d |  |  | Artico - Cimbra perimetral losa de cimentación | 7,809.03 | 7,809.03 | 7,809.03 |
| 24 | 1.2.4.2 | Sistema antitermitas PVC |  | 3d | 2026-05-16 A | 2026-05-20 A | 20, 21 | 100% |  | 2026-05-16 | 2026-05-20 | 3d |  |  | Artico - Sistema antitermitas PVC | 5,045.08 | 5,045.08 | 5,045.08 |
| 25 | 1.2.4.3 | Hule negro en cimentación |  | 1d | 2026-05-20 A | 2026-05-21 | 24 | 63% | 0.38d | 2026-05-20 | 2026-05-21 | 1d | 25d | 0d | Artico - Hule negro en cimentación | 2,143.32 | 2,143.32 | 1,339.58 |
| 26 | 1.2.4.4 | Ramaleo poliducto eléctrico cimentación |  | 2d | 2026-05-21 | 2026-05-23 | 25 |  |  | 2026-05-21 | 2026-05-23 | 2d | 28d | 0d | Artico - Ramaleo poliducto eléctrico cimentación | 2,764.5 | 2,764.5 |  |
| 27 | 1.2.4.5 | Ramaleo eléctrico base-medición a centro de carga |  | 1d | 2026-05-21 | 2026-05-22 | 25 |  |  | 2026-05-21 | 2026-05-22 | 1d | 29d | 1d | Artico - Ramaleo eléctrico base-medición a centro de carga | 1,573.13 | 1,573.13 |  |
| 28 | 1.2.4.6 | Ramaleo eléctrico exterior |  | 1d | 2026-05-23 | 2026-05-25 | 26, 27 |  |  | 2026-05-23 | 2026-05-25 | 1d | 28d | 4d | Artico - Ramaleo eléctrico exterior | 549.68 | 549.68 |  |
| 29 | 1.2.4.7 | Ramaleo para cable poliducto 3/4 |  | 1d | 2026-05-23 | 2026-05-25 | 26, 27 |  |  | 2026-05-23 | 2026-05-25 | 1d | 28d | 4d | Artico - Ramaleo para cable poliducto 3/4 | 1,205.12 | 1,205.12 |  |
| 30 | 1.2.4.8 | Ramaleo para TV poliducto 3/4 |  | 1d | 2026-05-23 | 2026-05-25 | 26, 27 |  |  | 2026-05-23 | 2026-05-25 | 1d | 28d | 4d | Artico - Ramaleo para TV poliducto 3/4 | 903.84 | 903.84 |  |
| 31 | 1.2.4.9 | Ramaleo hidráulico CPVC 1 cimentación |  | 1d | 2026-05-21 | 2026-05-22 | 25 |  |  | 2026-05-21 | 2026-05-22 | 1d | 25d | 0d | Artico - Ramaleo hidráulico CPVC 1" cimentación | 1,475.2 | 1,475.2 |  |
| 32 | 1.2.4.10 | Ramaleo hidráulico CPVC 3/4 cimentación |  | 2d | 2026-05-22 | 2026-05-25 | 31 |  |  | 2026-05-22 | 2026-05-25 | 2d | 25d | 0d | Artico - Ramaleo hidráulico CPVC 3/4" cimentación | 2,857.22 | 2,857.22 |  |
| 33 | 1.2.4.11 | Ramaleo hidráulico CPVC 1/2 cimentación |  | 2d | 2026-05-25 | 2026-05-27 | 32 |  |  | 2026-05-25 | 2026-05-27 | 2d | 25d | 0d | Artico - Ramaleo hidráulico CPVC 1/2" cimentación | 2,531.74 | 2,531.74 |  |
| 34 | 1.2.4.12 | Prueba hidráulica |  | 1d | 2026-05-27 | 2026-05-28 | 31, 32, 33 |  |  | 2026-05-27 | 2026-05-28 | 1d | 25d | 1d | Artico - Prueba hidráulica | 574.99 | 574.99 |  |
| 35 | 1.2.4.13 | Ramaleo sanitario PVC 4 cimentación |  | 2d | 2026-05-22 | 2026-05-25 | 25FS+1d |  |  | 2026-05-22 | 2026-05-25 | 2d | 26d | 0d | Artico - Ramaleo sanitario PVC 4" cimentación | 3,105.23 | 3,105.23 |  |
| 36 | 1.2.4.14 | Ramaleo sanitario PVC 2 cimentación |  | 1d | 2026-05-25 | 2026-05-26 | 35 |  |  | 2026-05-25 | 2026-05-26 | 1d | 26d | 0d | Artico - Ramaleo sanitario PVC 2" cimentación | 350.55 | 350.55 |  |
| 37 | 1.2.4.15 | Prueba sanitaria |  | 1d | 2026-05-26 | 2026-05-27 | 35, 36 |  |  | 2026-05-26 | 2026-05-27 | 1d | 26d | 2d | Artico - Prueba sanitaria | 574.99 | 574.99 |  |
| 38 | 1.2.4.16 | Acero contratrabe CT-1 |  | 4d | 2026-05-20 A | 2026-05-25 | 23 | 16% | 3.38d | 2026-05-20 | 2026-05-25 | 4d | 24d | 0d | Artico - Acero contratrabe CT-1 | 11,705.73 | 11,705.73 | 1,829.02 |
| 39 | 1.2.4.17 | Acero contratrabe CT-2 |  | 4d | 2026-05-20 A | 2026-05-25 | 23 | 16% | 3.38d | 2026-05-20 | 2026-05-25 | 4d | 24d | 0d | Artico - Acero contratrabe CT-2 | 6,523.48 | 6,523.48 | 1,019.29 |
| 40 | 1.2.4.18 | Malla electrosoldada 6-6/8-8 |  | 2d | 2026-05-27 | 2026-05-29 | 38, 39, 41, 42 |  |  | 2026-05-27 | 2026-05-29 | 2d | 24d | 0d | Artico - Malla electrosoldada 6-6/8-8 | 3,303.29 | 3,303.29 |  |
| 41 | 1.2.4.19 | Bastón de refuerzo LS |  | 2d | 2026-05-25 | 2026-05-27 | 38, 39 |  |  | 2026-05-25 | 2026-05-27 | 2d | 24d | 0d | Artico - Bastón de refuerzo LS | 5,638.16 | 5,638.16 |  |
| 42 | 1.2.4.20 | Bastón de refuerzo LI |  | 2d | 2026-05-25 | 2026-05-27 | 38, 39 |  |  | 2026-05-25 | 2026-05-27 | 2d | 24d | 0d | Artico - Bastón de refuerzo LI | 6,583.86 | 6,583.86 |  |
| 43 | 1.2.4.21 | Colado losa de cimentación f’c=200 |  | 1d | 2026-05-29 | 2026-06-01 | 23, 25, 38, 39, 40, 41, 42, 37, 34, 28, 29, 30 |  |  | 2026-05-29 | 2026-06-01 | 1d | 24d | 0d | Artico - Colado losa de cimentación f’c=200 | 30,432.38 | 30,432.38 |  |
| 44 | 1.2.4.22 | Curado de concreto |  | 1d | 2026-06-01 | 2026-06-02 | 43 |  |  | 2026-06-01 | 2026-06-02 | 1d | 24d | 0d | Artico - Curado de concreto | 1,632.22 | 1,632.22 |  |
| 45 | 1.2.4.23 | Acero zapata ZT-1 |  | 4d | 2026-05-25 | 2026-05-29 | 38, 39 |  |  | 2026-05-25 | 2026-05-29 | 4d | 181d | 0d | Artico - Acero zapata ZT-1 | 2,325.48 | 2,325.48 |  |
| 46 | 1.2.4.24 | Acero zapata ZT-2 |  | 4d | 2026-05-25 | 2026-05-29 | 38, 39 |  |  | 2026-05-25 | 2026-05-29 | 4d | 181d | 0d | Artico - Acero zapata ZT-2 | 7,596 | 7,596 |  |
| 47 | 1.2.4.25 | Colado zapatas aisladas f’c=200 |  | 1d | 2026-06-01 | 2026-06-02 | 48 |  |  | 2026-06-01 | 2026-06-02 | 1d | 181d |  | Artico - Colado zapatas aisladas f’c=200 | 2,148.17 | 2,148.17 |  |
| 48 | 1.2.4.26 | Cimbra frontera zapatas |  | 3d | 2026-05-27 | 2026-06-01 | 45FS-2d, 46FS-2d |  |  | 2026-05-27 | 2026-06-01 | 3d | 181d | 0d | Artico - Cimbra frontera zapatas | 3,005.4 | 3,005.4 |  |

| ID | WBS | Task | Duration | Start | Finish | Predecessors | Baseline start | Baseline finish | Baseline duration | Total slack | Free slack | Resources | Cost | Baseline cost |
| --- | --- | --- | --- | --- | --- | --- | --- | --- | --- | --- | --- | --- | --- | --- |
| 49 | 1.2.5 | **MUROS, PLANTA BAJA. CASTILLOS Y CERRAMIENTOS** | 20d | 2026-05-26 | 2026-06-19 |  | 2026-05-26 | 2026-06-19 | 20d | 29d |  |  | 142,526.66 | 142,526.66 |
| 50 | 1.2.5.1 | Anclaje de castillos y Columnas PB | 5d | 2026-05-26 | 2026-06-02 | 38FS+1d, 39FS+1d | 2026-05-26 | 2026-06-02 | 5d | 169d | 0d |  |  |  |
| 51 | 1.2.5.2 | Castillo K1 | 4d | 2026-06-02 | 2026-06-06 | 50, 44 | 2026-06-02 | 2026-06-06 | 4d | 169d | 0d | Artico - Castillo K1 |  |  |
| 52 | 1.2.5.3 | Castillo K2 | 4d | 2026-06-02 | 2026-06-06 | 50, 44 | 2026-06-02 | 2026-06-06 | 4d | 173d | 1d | Artico - Castillo K2 | 6,659.71 | 6,659.71 |
| 53 | 1.2.5.4 | Castillo K3 | 3d | 2026-06-04 | 2026-06-08 | 51FS-2d | 2026-06-04 | 2026-06-08 | 3d | 169d | 0d | Artico - Castillo K3 | 1,630.51 | 1,630.51 |
| 54 | 1.2.5.5 | Castillo K4 | 3d | 2026-06-04 | 2026-06-08 | 51FS-2d | 2026-06-04 | 2026-06-08 | 3d | 169d | 0d | Artico - Castillo K4 | 28,258.41 | 28,258.41 |
| 55 | 1.2.5.6 | Castillo K5 | 3d | 2026-06-06 | 2026-06-10 | 53FS-1d, 54FS-1d | 2026-06-06 | 2026-06-10 | 3d | 169d | 0d | Artico - Castillo K5 | 6,623.16 | 6,623.16 |
| 56 | 1.2.5.7 | Refuerzo de muro K6 | 3d | 2026-06-08 | 2026-06-11 | 55FS-2d | 2026-06-08 | 2026-06-11 | 3d | 169d | 0d | Artico - Refuerzo de muro K6 | 8,627.4 | 8,627.4 |
| 57 | 1.2.5.8 | Columna C1 | 4d | 2026-06-02 | 2026-06-06 | 50, 44 | 2026-06-02 | 2026-06-06 | 4d | 173d | 0d | Artico - Columna C1 | 4,759.74 | 4,759.74 |
| 58 | 1.2.5.9 | Columna C2 | 4d | 2026-06-06 | 2026-06-11 | 57 | 2026-06-06 | 2026-06-11 | 4d | 173d |  | Artico - Columna C2 | 1,930.42 | 1,930.42 |
| 59 | 1.2.5.10 | Dala de cerramiento CR-1 | 4d | 2026-06-08 | 2026-06-12 | 51, 52, 53 | 2026-06-08 | 2026-06-12 | 4d | 172d |  | Artico - Dala de cerramiento CR-1 | 15,378.5 | 15,378.5 |
| 60 | 1.2.5.11 | Dala de cerramiento CR-2 | 3d | 2026-06-08 | 2026-06-11 | 51, 52, 53 | 2026-06-08 | 2026-06-11 | 3d | 173d |  | Artico - Dala de cerramiento CR-2 |  |  |
| 61 | 1.2.5.12 | Cadena block dala | 4d | 2026-06-11 | 2026-06-16 | 56 | 2026-06-11 | 2026-06-16 | 4d | 169d |  | Artico - Cadena block dala | 12,036.42 | 12,036.42 |
| 62 | 1.2.5.13 | Muro de ladrillo aparente | 15d | 2026-06-02 | 2026-06-19 | 44 | 2026-06-02 | 2026-06-19 | 15d | 24d | 0d | Artico - Muro de ladrillo aparente | 43,281.54 | 43,281.54 |
| 63 | 1.2.5.14 | Muro de block planta baja | 13d | 2026-06-04 | 2026-06-19 | 44FS+2d | 2026-06-04 | 2026-06-19 | 13d | 24d | 0d | Artico - Muro de block planta baja | 13,340.85 | 13,340.85 |
| 64 | 1.2.6 | **ESCALERA** | 14d | 2026-07-09 | 2026-07-27 |  | 2026-07-09 | 2026-07-27 | 14d | 137d |  |  | 19,320.24 | 19,320.24 |
| 65 | 1.2.6.1 | Escalera de concreto armado | 14d | 2026-07-09 | 2026-07-27 | 80 | 2026-07-09 | 2026-07-27 | 14d | 137d |  | Artico - Escalera de concreto armado | 19,320.24 | 19,320.24 |
| 66 | 1.2.7 | **LOSA DE ENTREPISO (viegueta y caseton)** | 18d | 2026-06-17 | 2026-07-09 |  | 2026-06-17 | 2026-07-09 | 18d | 27d |  |  | 118,803.13 | 118,803.13 |
| 67 | 1.2.7.1 | Vigueta pretensada 1.40 m | 3d | 2026-06-17 | 2026-06-22 | 62FS-2d, 63FS-2d | 2026-06-17 | 2026-06-22 | 3d | 29d | 4d | Artico - Vigueta pretensada 1.40 m | 706.06 | 706.06 |
| 68 | 1.2.7.2 | Vigueta pretensada 1.95 m | 4d | 2026-06-18 | 2026-06-24 | 62FS-1d, 63FS-1d | 2026-06-18 | 2026-06-24 | 4d | 27d | 2d | Artico - Vigueta pretensada 1.95 m | 2,255.35 | 2,255.35 |
| 69 | 1.2.7.3 | Vigueta pretensada 3.35 m | 4d | 2026-06-19 | 2026-06-25 | 62, 63 | 2026-06-19 | 2026-06-25 | 4d | 26d | 1d | Artico - Vigueta pretensada 3.35 m | 3,503.1 | 3,503.1 |
| 70 | 1.2.7.4 | Vigueta pretensada 3.50 m | 4d | 2026-06-22 | 2026-06-26 | 62FS+1d, 63FS+1d | 2026-06-22 | 2026-06-26 | 4d | 25d | 0d | Artico - Vigueta pretensada 3.50 m | 2,909.44 | 2,909.44 |
| 71 | 1.2.7.5 | Vigueta pretensada 3.75 m | 4d | 2026-06-22 | 2026-06-26 | 62FS+1d, 63FS+1d | 2026-06-22 | 2026-06-26 | 4d | 25d | 0d | Artico - Vigueta pretensada 3.75 m | 2,315.76 | 2,315.76 |
| 72 | 1.2.7.6 | Vigueta pretensada 3.90 m | 4d | 2026-06-22 | 2026-06-26 | 62FS+1d, 63FS+1d | 2026-06-22 | 2026-06-26 | 4d | 25d | 0d | Artico - Vigueta pretensada 3.90 m | 7,986.5 | 7,986.5 |
| 73 | 1.2.7.7 | Bovedilla poliestireno entrepiso | 2d | 2026-06-26 | 2026-06-29 | 67, 68, 69, 70, 71, 72 | 2026-06-26 | 2026-06-29 | 2d | 25d | 0d | Artico - Bovedilla poliestireno entrepiso | 12,681.12 | 12,681.12 |
| 74 | 1.2.7.8 | Dala de coronamiento | 3d | 2026-06-26 | 2026-06-30 | 79FS-1d, 67, 68, 69, 70, 71, 72 | 2026-06-26 | 2026-06-30 | 3d | 28d | 3d | Artico - Dala de coronamiento | 2,427.91 | 2,427.91 |
| 75 | 1.2.7.9 | Nervadura NR-1 | 3d | 2026-06-27 | 2026-07-01 | 79, 67, 68, 69, 70, 71, 72 | 2026-06-27 | 2026-07-01 | 3d | 24d | 0d | Artico - Nervadura NR-1 | 4,151.02 | 4,151.02 |
| 76 | 1.2.7.10 | Nervadura NR-2 | 3d | 2026-06-27 | 2026-07-01 | 75SS | 2026-06-27 | 2026-07-01 | 3d | 26d | 0d | Artico - Nervadura NR-2 | 1,305.84 | 1,305.84 |
| 77 | 1.2.7.11 | Trabe TR-1 | 5d | 2026-06-27 | 2026-07-03 | 75SS | 2026-06-27 | 2026-07-03 | 5d | 24d | 0d | Artico - Trabe TR-1 | 4,403.43 | 4,403.43 |
| 78 | 1.2.7.12 | Malla 66-10/10 losa de compresión | 2d | 2026-07-03 | 2026-07-06 | 73, 74, 88, 91 | 2026-07-03 | 2026-07-06 | 2d | 25d | 1d | Artico - Malla 66-10/10 losa de compresión | 3,285.06 | 3,285.06 |
| 79 | 1.2.7.13 | Cimbra losa de azotea | 5d | 2026-06-22 | 2026-06-27 | 62FS+1d, 63FS+1d | 2026-06-22 | 2026-06-27 | 5d | 24d | 0d | Artico - Cimbra losa de azotea | 22,457.19 | 22,457.19 |
| 80 | 1.2.7.14 | Concreto losa de entrepiso f’c=200 | 1d | 2026-07-08 | 2026-07-08 | 75, 76, 77, 78, 85, 88, 91, 82, 93 | 2026-07-08 | 2026-07-08 | 1d | 24d | 0d | Artico - Concreto losa de entrepiso f’c=200 | 24,413.52 | 24,413.52 |
| 81 | 1.2.7.15 | Curado de concreto | 1d | 2026-07-09 | 2026-07-09 | 80 | 2026-07-09 | 2026-07-09 | 1d | 24d | 0d | Artico - Curado de concreto | 1,977 | 1,977 |
| 82 | 1.2.7.16 | Cimbra exterior corta losa | 3d | 2026-06-30 | 2026-07-03 | 75FS-1d, 76FS-1d | 2026-06-30 | 2026-07-03 | 3d | 27d | 3d | Artico - Cimbra exterior corta losa | 6,758.73 | 6,758.73 |
| 83 | 1.2.7.17 | Ramaleo poliducto eléctrico entrepiso | 2d | 2026-06-29 | 2026-07-01 | 73 | 2026-06-29 | 2026-07-01 | 2d | 28d | 0d | Artico - Ramaleo poliducto eléctrico entrepiso | 5,471.78 | 5,471.78 |
| 84 | 1.2.7.18 | Ramaleo para cable poliducto 3/4 | 1d | 2026-06-29 | 2026-06-30 | 73 | 2026-06-29 | 2026-06-30 | 1d | 158d |  | Artico - Ramaleo para cable poliducto 3/4 | 1,411.38 | 1,411.38 |
| 85 | 1.2.7.19 | Ramaleo para TV poliducto 3/4 | 1d | 2026-07-01 | 2026-07-02 | 83 | 2026-07-01 | 2026-07-02 | 1d | 28d | 4d | Artico - Ramaleo para TV poliducto 3/4 | 1,411.38 | 1,411.38 |
| 86 | 1.2.7.20 | Ramaleo hidráulico CPVC 3/4 | 2d | 2026-06-30 | 2026-07-02 | 73FS+1d | 2026-06-30 | 2026-07-02 | 2d | 25d | 0d | Artico - Ramaleo hidráulico CPVC 3/4" | 1,227.26 | 1,227.26 |
| 87 | 1.2.7.21 | Ramaleo hidráulico CPVC 1/2 | 1d | 2026-07-02 | 2026-07-03 | 86 | 2026-07-02 | 2026-07-03 | 1d | 25d | 0d | Artico - Ramaleo hidráulico CPVC 1/2" | 2,250.43 | 2,250.43 |
| 88 | 1.2.7.22 | Prueba hidráulica | 1d | 2026-07-02 | 2026-07-03 | 86, 87FS-1d | 2026-07-02 | 2026-07-03 | 1d | 25d | 0d | Artico - Prueba hidráulica | 574.99 | 574.99 |
| 89 | 1.2.7.23 | Ramaleo sanitario PVC 4 | 2d | 2026-06-30 | 2026-07-02 | 73FS+1d | 2026-06-30 | 2026-07-02 | 2d | 25d | 0d | Artico - Ramaleo sanitario PVC 4" | 1,376.37 | 1,376.37 |
| 90 | 1.2.7.24 | Ramaleo sanitario PVC 2 | 1d | 2026-07-02 | 2026-07-03 | 89 | 2026-07-02 | 2026-07-03 | 1d | 25d | 0d | Artico - Ramaleo sanitario PVC 2" | 967.52 | 967.52 |
| 91 | 1.2.7.25 | Prueba sanitaria | 1d | 2026-07-02 | 2026-07-03 | 89, 90FS-1d | 2026-07-02 | 2026-07-03 | 1d | 25d | 0d | Artico - Prueba sanitaria | 574.99 | 574.99 |

| ID | WBS | Task | Duration | Start | Finish | Predecessors | Baseline start | Baseline finish | Baseline duration | Total slack | Free slack | Resources | Cost | Baseline cost |
| --- | --- | --- | --- | --- | --- | --- | --- | --- | --- | --- | --- | --- | --- | --- |
| 92 | 1.2.8 | **MUROS EN PLANTA ALTA, CASTILLOS Y CERRM.** | 21d | 2026-07-02 | 2026-07-29 |  | 2026-07-02 | 2026-07-29 | 21d | 24d |  |  | 203,302.15 | 203,302.15 |
| 93 | 1.2.8.1 | Anclaje de castillos y Columnas PA | 4d | 2026-07-02 | 2026-07-07 | 75FS-1d, 76FS-1d, 77FS-1d | 2026-07-02 | 2026-07-07 | 4d | 24d | 0d |  |  |  |
| 94 | 1.2.8.2 | Castillo K1 | 4d | 2026-07-10 | 2026-07-15 | 81 | 2026-07-10 | 2026-07-15 | 4d | 28d | 0d | Artico - Castillo K1 | 6,504.92 | 6,504.92 |
| 95 | 1.2.8.3 | Castillo K2 | 4d | 2026-07-11 | 2026-07-16 | 81FS+1d | 2026-07-11 | 2026-07-16 | 4d | 27d | 0d | Artico - Castillo K2 | 11,814.9 | 11,814.9 |
| 96 | 1.2.8.4 | Castillo K3 | 3d | 2026-07-13 | 2026-07-16 | 81FS+2d | 2026-07-13 | 2026-07-16 | 3d | 27d | 0d | Artico - Castillo K3 | 5,150.71 | 5,150.71 |
| 97 | 1.2.8.5 | Castillo K4 | 3d | 2026-07-15 | 2026-07-18 | 94 | 2026-07-15 | 2026-07-18 | 3d | 28d | 1d | Artico - Castillo K4 | 47,507.64 | 47,507.64 |
| 98 | 1.2.8.6 | Castillo K5 | 3d | 2026-07-15 | 2026-07-18 | 94 | 2026-07-15 | 2026-07-18 | 3d | 28d | 1d | Artico - Castillo K5 | 2,823 | 2,823 |
| 99 | 1.2.8.7 | Refuerzo de muro K6 | 3d | 2026-07-16 | 2026-07-20 | 94, 95, 96 | 2026-07-16 | 2026-07-20 | 3d | 27d | 0d | Artico - Refuerzo de muro K6 | 13,197.36 | 13,197.36 |
| 100 | 1.2.8.8 | Dala de cerramiento CR-1 | 4d | 2026-07-20 | 2026-07-24 | 97, 98, 99 | 2026-07-20 | 2026-07-24 | 4d | 27d | 0d | Artico - Dala de cerramiento CR-1 | 16,847.9 | 16,847.9 |
| 101 | 1.2.8.9 | Cadena block dala | 3d | 2026-07-24 | 2026-07-29 | 99, 100 | 2026-07-24 | 2026-07-29 | 3d | 27d | 0d | Artico - Cadena block dala | 22,412.86 | 22,412.86 |
| 102 | 1.2.8.10 | Muro de ladrillo aparente | 15d | 2026-07-10 | 2026-07-29 | 81 | 2026-07-10 | 2026-07-29 | 15d | 24d | 0d | Artico - Muro de ladrillo aparente | 51,035.76 | 51,035.76 |
| 103 | 1.2.8.11 | Muro de block planta alta | 14d | 2026-07-11 | 2026-07-29 | 81FS+1d | 2026-07-11 | 2026-07-29 | 14d | 24d | 0d | Artico - Muro de block planta alta | 26,007.1 | 26,007.1 |
| 104 | 1.2.9 | **LOSA AZOTEA** | 15d | 2026-07-29 | 2026-08-17 |  | 2026-07-29 | 2026-08-17 | 15d | 24d |  |  | 98,367.6 | 98,367.6 |
| 105 | 1.2.9.1 | Cortalosa CL-1 | 2d | 2026-08-11 | 2026-08-13 | 113 | 2026-08-11 | 2026-08-13 | 2d | 24d | 0d | Artico - Cortalosa CL-1 | 5,979.6 | 5,979.6 |
| 106 | 1.2.9.2 | Vigueta pretensada V11-40 390 | 5d | 2026-07-29 | 2026-08-04 | 102, 103, 101 | 2026-07-29 | 2026-08-04 | 5d | 27d | 3d | Artico - Vigueta pretensada V11-40 390 | 10,233.47 | 10,233.47 |
| 107 | 1.2.9.3 | Vigueta pretensada V11-30 280 | 5d | 2026-07-29 | 2026-08-04 | 102, 103 | 2026-07-29 | 2026-08-04 | 5d | 27d | 3d | Artico - Vigueta pretensada V11-30 280 | 1,790.52 | 1,790.52 |
| 108 | 1.2.9.4 | Vigueta pretensada V11-30 285 | 5d | 2026-07-29 | 2026-08-04 | 102, 103 | 2026-07-29 | 2026-08-04 | 5d | 27d | 3d | Artico - Vigueta pretensada V11-30 285 | 605.75 | 605.75 |
| 109 | 1.2.9.5 | Vigueta pretensada V11-30 220 | 5d | 2026-07-31 | 2026-08-06 | 102FS+2d, 103FS+2d | 2026-07-31 | 2026-08-06 | 5d | 25d | 1d | Artico - Vigueta pretensada V11-30 220 | 489.89 | 489.89 |
| 110 | 1.2.9.6 | Vigueta pretensada V11-40 75 | 5d | 2026-07-31 | 2026-08-06 | 102FS+2d, 103FS+2d | 2026-07-31 | 2026-08-06 | 5d | 25d | 1d | Artico - Vigueta pretensada V11-40 75 | 231.43 | 231.43 |
| 111 | 1.2.9.7 | Vigueta pretensada V11-40 195 | 5d | 2026-08-01 | 2026-08-07 | 102FS+3d, 103FS+3d | 2026-08-01 | 2026-08-07 | 5d | 24d | 0d | Artico - Vigueta pretensada V11-40 195 | 2,226.65 | 2,226.65 |
| 112 | 1.2.9.8 | Vigueta pretensada V11-50 450 | 5d | 2026-08-01 | 2026-08-07 | 102FS+3d, 103FS+3d | 2026-08-01 | 2026-08-07 | 5d | 24d | 0d | Artico - Vigueta pretensada V11-50 450 | 5,399.22 | 5,399.22 |
| 113 | 1.2.9.9 | Bovedilla poliestireno azotea | 3d | 2026-08-07 | 2026-08-11 | 106, 107, 108, 109, 110, 111, 112 | 2026-08-07 | 2026-08-11 | 3d | 24d | 0d | Artico - Bovedilla poliestireno azotea | 14,539.28 | 14,539.28 |
| 114 | 1.2.9.10 | Malla 66-10/10 losa de compresión | 2d | 2026-08-11 | 2026-08-13 | 113 | 2026-08-11 | 2026-08-13 | 2d | 24d | 0d | Artico - Malla 66-10/10 losa de compresión | 3,345.03 | 3,345.03 |
| 115 | 1.2.9.11 | Concreto losa de azotea f’c=200 | 1d | 2026-08-13 | 2026-08-14 | 105, 113, 114, 118, 117 | 2026-08-13 | 2026-08-14 | 1d | 24d | 0d | Artico - Concreto losa de azotea f’c=200 | 26,392.14 | 26,392.14 |
| 116 | 1.2.9.12 | Curado de concreto | 1d | 2026-08-14 | 2026-08-17 | 115 | 2026-08-14 | 2026-08-17 | 1d | 24d | 0d | Artico - Curado de concreto | 2,094.73 | 2,094.73 |
| 117 | 1.2.9.13 | Cimbra losa de azotea | 5d | 2026-07-29 | 2026-08-04 | 102, 103 | 2026-07-29 | 2026-08-04 | 5d | 32d | 8d | Artico - Cimbra losa de azotea | 22,883.13 | 22,883.13 |
| 118 | 1.2.9.14 | Ramaleo de poliducto para inst. electrica en azotea | 2d | 2026-08-11 | 2026-08-13 | 113 | 2026-08-11 | 2026-08-13 | 2d | 24d | 0d | Artico - Ramaleo de poliducto para instalacion electrica en azotea | 2,156.76 | 2,156.76 |

| ID | WBS | Task | Duration | Start | Finish | Predecessors | Baseline start | Baseline finish | Baseline duration | Total slack | Free slack | Resources | Cost | Baseline cost |
| --- | --- | --- | --- | --- | --- | --- | --- | --- | --- | --- | --- | --- | --- | --- |
| 119 | 1.2.10 | **PRETIL Y ACABADOS DE AZOTEA** | 19d | 2026-08-17 | 2026-09-09 |  | 2026-08-17 | 2026-09-09 | 19d | 24d |  |  | 49,587.97 | 49,587.97 |
| 120 | 1.2.10.1 | Castillo K1 | 5d | 2026-08-19 | 2026-08-25 | 122SS+2d | 2026-08-19 | 2026-08-25 | 5d | 24d | 0d | Artico - Castillo K1 | 2,222.52 | 2,222.52 |
| 121 | 1.2.10.2 | Dala de cerramiento en pretil | 4d | 2026-08-22 | 2026-08-27 | 120FS-2d, 122FS-2d | 2026-08-22 | 2026-08-27 | 4d | 24d | 0d | Artico - Dala de cerramiento en pretil | 9,021.93 | 9,021.93 |
| 122 | 1.2.10.3 | Muro de block 12x15x40 | 5d | 2026-08-17 | 2026-08-22 | 116 | 2026-08-17 | 2026-08-22 | 5d | 24d | 0d | Artico - Muro de block 12x15x40 | 8,210.4 | 8,210.4 |
| 123 | 1.2.10.4 | Chaflán en azotea | 4d | 2026-08-25 | 2026-08-29 | 122, 120 | 2026-08-25 | 2026-08-29 | 4d | 24d | 0d | Artico - Chaflán en azotea | 5,086.68 | 5,086.68 |
| 124 | 1.2.10.5 | Aplanado exterior Mortermax fino | 5d | 2026-08-27 | 2026-09-02 | 123FS-2d, 121 | 2026-08-27 | 2026-09-02 | 5d | 24d | 0d | Artico - Aplanado exterior Mortermax fino | 4,289.05 | 4,289.05 |
| 125 | 1.2.10.6 | Acabado de azotea para impermeabilizar | 4d | 2026-09-04 | 2026-09-09 | 126 | 2026-09-04 | 2026-09-09 | 4d | 24d | 0d | Artico - Acabado de azotea para impermeabilizar | 18,662.66 | 18,662.66 |
| 126 | 1.2.10.7 | Curado de concreto | 1d | 2026-09-03 | 2026-09-03 | 123, 124 | 2026-09-03 | 2026-09-03 | 1d | 24d | 0d | Artico - Curado de concreto | 2,094.73 | 2,094.73 |
| 127 | 1.2.11 | **PRIMERA LIMPIEZA DE OBRA** | 4d | 2026-08-17 | 2026-08-21 |  | 2026-08-17 | 2026-08-21 | 4d | 77d |  |  | 4,217 | 4,217 |
| 128 | 1.2.11.1 | Primera limpieza de obra | 2d | 2026-08-17 | 2026-08-19 | 116 | 2026-08-17 | 2026-08-19 | 2d | 77d | 0d | Artico - Primera limpieza de obra | 1,676 | 1,676 |
| 129 | 1.2.11.2 | Primera carga y acarreo de escombro | 2d | 2026-08-19 | 2026-08-21 | 128 | 2026-08-19 | 2026-08-21 | 2d | 77d | 1d | Artico - Primera carga y acarreo de escombro | 2,541 | 2,541 |
| 130 | 1.2.12 | **IMPERMEABILIZACION** | 5d | 2026-09-09 | 2026-09-15 |  | 2026-09-09 | 2026-09-15 | 5d | 24d |  |  | 22,126.14 | 22,126.14 |
| 131 | 1.2.12.1 | Impermeabilización de pretil Kover 5 años | 4d | 2026-09-09 | 2026-09-14 | 125 | 2026-09-09 | 2026-09-14 | 4d | 25d | 1d | Artico - Impermeabilización de pretil Kover 5 años | 4,130.46 | 4,130.46 |
| 132 | 1.2.12.2 | Impermeabilización de losa Kover 5 años | 5d | 2026-09-09 | 2026-09-15 | 125 | 2026-09-09 | 2026-09-15 | 5d | 24d | 0d | Artico - Impermeabilización de losa Kover 5 años | 17,995.68 | 17,995.68 |
| 133 | 1.2.13 | **ALBAÑILERIA** | 62d | 2026-08-22 | 2026-11-09 |  | 2026-08-22 | 2026-11-09 | 62d | 43d |  |  | 103,730 | 103,730 |
| 134 | 1.2.13.1 | Lavadero de granito | 4d | 2026-10-06 | 2026-10-12 | 158SS+8d | 2026-10-06 | 2026-10-12 | 4d | 76d |  | Artico - Lavadero de granito | 2,170.59 | 2,170.59 |
| 135 | 1.2.13.2 | Ramaleo hidráulico exterior CPVC 1 1/4 | 3d | 2026-09-15 | 2026-09-21 | 131, 132 | 2026-09-15 | 2026-09-21 | 3d | 24d | 0d | Artico - Ramaleo hidráulico exterior CPVC 1 1/4" | 742.82 | 742.82 |
| 136 | 1.2.13.3 | Ramaleo hidráulico exterior CPVC 1 | 2d | 2026-09-15 | 2026-09-18 | 135SS | 2026-09-15 | 2026-09-18 | 2d | 24d | 0d | Artico - Ramaleo hidráulico exterior CPVC 1" | 73.76 | 73.76 |
| 137 | 1.2.13.4 | Ramaleo hidráulico exterior CPVC 3/4 | 2d | 2026-09-18 | 2026-09-22 | 136 | 2026-09-18 | 2026-09-22 | 2d | 24d | 0d | Artico - Ramaleo hidráulico exterior CPVC 3/4" | 431.46 | 431.46 |
| 138 | 1.2.13.5 | Ramaleo hidráulico exterior CPVC 1/2 | 2d | 2026-09-18 | 2026-09-22 | 136 | 2026-09-18 | 2026-09-22 | 2d | 24d | 0d | Artico - Ramaleo hidráulico exterior CPVC 1/2" | 2,375.46 | 2,375.46 |
| 139 | 1.2.13.6 | Prueba hidráulica | 1d | 2026-09-22 | 2026-09-23 | 135, 136, 137, 138 | 2026-09-22 | 2026-09-23 | 1d | 24d | 0d | Artico - Prueba hidráulica | 444.83 | 444.83 |
| 140 | 1.2.13.7 | Ramaleo sanitario exterior PVC 4 | 4d | 2026-09-15 | 2026-09-22 | 131, 132 | 2026-09-15 | 2026-09-22 | 4d | 24d | 0d | Artico - Ramaleo sanitario exterior PVC 4" | 3,122.01 | 3,122.01 |
| 141 | 1.2.13.8 | Ramaleo sanitario exterior PVC 2 | 3d | 2026-09-17 | 2026-09-22 | 140SS+1d | 2026-09-17 | 2026-09-22 | 3d | 24d | 0d | Artico - Ramaleo sanitario exterior PVC 2" | 210.33 | 210.33 |
| 142 | 1.2.13.9 | Prueba sanitaria | 1d | 2026-09-22 | 2026-09-23 | 140, 141 | 2026-09-22 | 2026-09-23 | 1d | 24d | 0d | Artico - Prueba sanitaria | 1 | 1 |
| 143 | 1.2.13.10 | Centro de carga muros PB | 4d | 2026-09-21 | 2026-09-25 | 131FS+3d, 132FS+3d | 2026-09-21 | 2026-09-25 | 4d | 26d | 2d | Artico - Centro de carga muros PB | 5,038.08 | 5,038.08 |
| 144 | 1.2.13.11 | Firme de concreto 8 cm | 4d | 2026-09-23 | 2026-09-28 | 139, 142, 146 | 2026-09-23 | 2026-09-28 | 4d | 70d | 0d | Artico - Firme de concreto 8 cm | 17,945.02 | 17,945.02 |
| 145 | 1.2.13.12 | Curado de concreto | 1d | 2026-09-28 | 2026-09-29 | 144 | 2026-09-28 | 2026-09-29 | 1d | 70d | 17d | Artico - Curado de concreto | 1,029.23 | 1,029.23 |
| 146 | 1.2.13.13 | Cisterna 2800 L con instalación | 18d | 2026-08-22 | 2026-09-14 | 122, 128, 129 | 2026-08-22 | 2026-09-14 | 18d | 76d | 0d | Artico - Cisterna 2800 L con instalación | 33,719.4 | 33,719.4 |
| 147 | 1.2.13.14 | Banqueta y huellas de concreto | 8d | 2026-09-30 | 2026-10-09 | 139, 142, 180, 235FS-2d, 241 | 2026-09-30 | 2026-10-09 | 8d | 53d | 0d | Artico - Banqueta y huellas de concreto | 6,661.78 | 6,661.78 |
| 148 | 1.2.13.15 | Curado de concreto | 1d | 2026-10-09 | 2026-10-12 | 147 | 2026-10-09 | 2026-10-12 | 1d | 53d | 0d | Artico - Curado de concreto | 341.35 | 341.35 |
| 149 | 1.2.13.16 | Número oficial | 1d | 2026-11-07 | 2026-11-09 | 155, 156 | 2026-11-07 | 2026-11-09 | 1d | 53d |  | Artico - Número oficial | 732.54 | 732.54 |
| 150 | 1.2.13.17 | Detallado de rodapié exterior | 4d | 2026-09-25 | 2026-09-30 | 153 | 2026-09-25 | 2026-09-30 | 4d | 85d |  | Artico - Detallado de rodapié exterior |  |  |
| 151 | 1.2.13.18 | Detallado de muros interiores | 4d | 2026-09-15 | 2026-09-22 | 131, 132 | 2026-09-15 | 2026-09-22 | 4d | 28d | 4d | Artico - Detallado de muros interiores | 28,690.34 | 28,690.34 |

| ID | WBS | Task | Duration | Start | Finish | Predecessors | Baseline start | Baseline finish | Baseline duration | Total slack | Free slack | Resources | Cost | Baseline cost |
| --- | --- | --- | --- | --- | --- | --- | --- | --- | --- | --- | --- | --- | --- | --- |
| 152 | 1.2.14 | **ACABADOS EN FACHADA A** | 47d | 2026-09-09 | 2026-11-07 |  | 2026-09-09 | 2026-11-07 | 47d | 54d |  |  | 132,417.71 | 132,417.71 |
| 153 | 1.2.14.1 | Aplanado grueso fachada | 12d | 2026-09-09 | 2026-09-25 | 125 | 2026-09-09 | 2026-09-25 | 12d | 84d | 0d | Artico - Aplanado grueso fachada | 70,780.96 | 70,780.96 |
| 154 | 1.2.14.2 | Aplanado fino estuco fachada | 10d | 2026-09-18 | 2026-10-01 | 153SS+7d | 2026-09-18 | 2026-10-01 | 10d | 84d |  | Artico - Aplanado fino estuco fachada | 40,492.24 | 40,492.24 |
| 155 | 1.2.14.3 | Pintura acrílica 1-0102P | 8d | 2026-10-27 | 2026-11-05 | 145FS+5d, 148FS+12d | 2026-10-27 | 2026-11-05 | 8d | 55d | 2d | Artico - Pintura acrílica 1-0102P | 19,337.86 | 19,337.86 |
| 156 | 1.2.14.4 | Pintura acrílica 1-1404D | 10d | 2026-10-27 | 2026-11-07 | 145FS+5d, 148FS+12d | 2026-10-27 | 2026-11-07 | 10d | 53d | 0d | Artico - Pintura acrílica 1-1404D | 1,806.65 | 1,806.65 |
| 157 | 1.2.15 | **APLANADOS Y PINTURA** | 63d | 2026-09-15 | 2026-12-04 |  | 2026-09-15 | 2026-12-04 | 63d | 26d |  |  | 186,135.04 | 186,135.04 |
| 158 | 1.2.15.1 | Yeso pulido en muros | 14d | 2026-09-26 | 2026-10-14 | 161FS-4d, 151, 143FS-1d, 215FS-2d, 216, 217, 218, 219, 220FS-1d, 221FS-1d, 222FS-1d, 223FS-1d, 224FS-2d, 225FS-2d, 226FS-3d, 229FS-1d, 230FS-5d, 231FS-5d, 232FS-6d, 233FS-2d, 234FS-7d | 2026-09-26 | 2026-10-14 | 14d | 24d | 0d | Artico - Yeso pulido en muros | 89,347.38 | 89,347.38 |
| 159 | 1.2.15.2 | Pintura vinílica 699 Cottage White | 13d | 2026-11-19 | 2026-12-04 | 166FS-2d, 167FS-2d, 178FS-2d, 185, 186, 187, 188, 189, 190, 192, 193, 194, 195, 244, 245, 246, 247 | 2026-11-19 | 2026-12-04 | 13d | 24d | 0d | Artico - Pintura vinílica 699 Cottage White | 33,243.03 | 33,243.03 |
| 160 | 1.2.15.3 | Pintura vinílica 691 Pacific Bungalow | 10d | 2026-11-06 | 2026-11-20 | 166, 167, 178 | 2026-11-06 | 2026-11-20 | 10d | 45d |  | Artico - Pintura vinílica 691 Pacific Bungalow | 4,696.15 | 4,696.15 |
| 161 | 1.2.15.4 | Yeso pulido en plafones | 10d | 2026-09-15 | 2026-09-29 | 131, 132 | 2026-09-15 | 2026-09-29 | 10d | 26d | 2d | Artico - Yeso pulido en plafones | 36,494.33 | 36,494.33 |
| 162 | 1.2.15.5 | Pintura vinílica Nano White | 7d | 2026-11-10 | 2026-11-20 | 166FS+3d, 167FS+3d, 178FS+3d | 2026-11-10 | 2026-11-20 | 7d | 45d |  | Artico - Pintura vinílica Nano White | 12,771.02 | 12,771.02 |
| 163 | 1.2.15.6 | Perfilado de puertas y ventanas | 4d | 2026-10-01 | 2026-10-06 | 158SS+4d | 2026-10-01 | 2026-10-06 | 4d | 80d |  | Artico - Perfilado de puertas y ventanas | 9,583.13 | 9,583.13 |
| 164 | 1.2.16 | **PISOS Y AZULEJOS** | 23d | 2026-10-08 | 2026-11-06 |  | 2026-10-08 | 2026-11-06 | 23d | 26d |  |  | 83,682.61 | 83,682.61 |
| 165 | 1.2.16.1 | **AREA SOCIAL** | 15d | 2026-10-12 | 2026-10-29 |  | 2026-10-12 | 2026-10-29 | 15d | 24d |  |  | 36,988.63 | 36,988.63 |
| 166 | 1.2.16.1.1 | Piso Moonside Crema 60x60 | 14d | 2026-10-12 | 2026-10-28 | 158FS-2d, 237, 236 | 2026-10-12 | 2026-10-28 | 14d | 24d | 0d | Artico - Piso Moonside Crema 60x60 | 28,103.47 | 28,103.47 |
| 167 | 1.2.16.1.2 | Zoclo piso 60x60 Moonside Crema | 5d | 2026-10-23 | 2026-10-29 | 166FS-4d | 2026-10-23 | 2026-10-29 | 5d | 41d | 6d | Artico - Zoclo piso 60x60 Moonside Crema | 8,885.16 | 8,885.16 |
| 168 | 1.2.16.2 | **BAÑOS** | 17d | 2026-10-08 | 2026-10-29 |  | 2026-10-08 | 2026-10-29 | 17d | 35d |  |  | 35,371.5 | 35,371.5 |
| 169 | 1.2.16.2.1 | Piso Moonside Crema 60x60 | 4d | 2026-10-23 | 2026-10-28 | 173 | 2026-10-23 | 2026-10-28 | 4d | 35d | 0d | Artico - Piso Moonside Crema 60x60 | 7,843.75 | 7,843.75 |
| 170 | 1.2.16.2.2 | Zoclo piso 60x60 Moonside Crema | 2d | 2026-10-28 | 2026-10-29 | 169FS-1d | 2026-10-28 | 2026-10-29 | 2d | 61d |  | Artico - Zoclo piso 60x60 Moonside Crema | 5,000.15 | 5,000.15 |
| 171 | 1.2.16.2.3 | Piso porcelánico Acali 20x20 beige | 3d | 2026-10-23 | 2026-10-27 | 173 | 2026-10-23 | 2026-10-27 | 3d | 63d |  | Artico - Piso porcelánico Acali 20x20 beige | 2,806.17 | 2,806.17 |
| 172 | 1.2.16.2.4 | Impermeabilización en regadera | 2d | 2026-10-16 | 2026-10-19 | 158, 174 | 2026-10-16 | 2026-10-19 | 2d | 35d | 0d | Artico - Impermeabilización en regadera | 871.42 | 871.42 |
| 173 | 1.2.16.2.5 | Azulejo Moonside Crema 60x60 | 5d | 2026-10-17 | 2026-10-23 | 172FS-1d, 227, 228, 237 | 2026-10-17 | 2026-10-23 | 5d | 35d | 0d | Artico - Azulejo Moonside Crema 60x60 | 13,382.48 | 13,382.48 |
| 174 | 1.2.16.2.6 | Fabricacion de nicho decorativo en baños | 6d | 2026-10-08 | 2026-10-16 | 158FS-4d | 2026-10-08 | 2026-10-16 | 6d | 35d | 0d | Artico - Fabricacion de nicho decorativo en baños | 2,419.7 | 2,419.7 |
| 175 | 1.2.16.2.7 | Sardinel en regadera | 4d | 2026-10-23 | 2026-10-28 | 173 | 2026-10-23 | 2026-10-28 | 4d | 62d |  | Artico - Sardinel en regadera | 3,047.83 | 3,047.83 |

| ID | WBS | Task | Duration | Start | Finish | Predecessors | Baseline start | Baseline finish | Baseline duration | Total slack | Free slack | Resources | Cost | Baseline cost |
| --- | --- | --- | --- | --- | --- | --- | --- | --- | --- | --- | --- | --- | --- | --- |
| 176 | 1.2.16.3 | **ESCALERA** | 9d | 2026-10-27 | 2026-11-06 |  | 2026-10-27 | 2026-11-06 | 9d | 24d |  |  | 11,322.48 | 11,322.48 |
| 177 | 1.2.16.3.1 | Piso Moonside Crema 60x60 | 7d | 2026-10-27 | 2026-11-04 | 158, 166FS-2d | 2026-10-27 | 2026-11-04 | 7d | 24d | 0d | Artico - Piso Moonside Crema 60x60 | 7,411.85 | 7,411.85 |
| 178 | 1.2.16.3.2 | Zoclo piso 60x60 Moonside Crema | 4d | 2026-11-02 | 2026-11-06 | 177FS-2d | 2026-11-02 | 2026-11-06 | 4d | 24d | 0d | Artico - Zoclo piso 60x60 Moonside Crema | 3,910.63 | 3,910.63 |
| 179 | 1.2.17 | **EXTERIOR** | 3d | 2026-09-23 | 2026-09-26 |  | 2026-09-23 | 2026-09-26 | 3d | 30d |  |  | 601.23 | 601.23 |
| 180 | 1.2.17.1 | Rastrilleo, afine y nivelado de tierra | 3d | 2026-09-23 | 2026-09-26 | 139, 142 | 2026-09-23 | 2026-09-26 | 3d | 30d | 0d | Artico - Rastrilleo, afine y nivelado de tierra | 601.23 | 601.23 |
| 181 | 1.2.18 | **SEGUNDA LIMPIEZA DE OBRA** | 4d | 2026-11-06 | 2026-11-11 |  | 2026-11-06 | 2026-11-11 | 4d | 42d |  |  | 6,748 | 6,748 |
| 182 | 1.2.18.1 | Segunda limpieza de obra | 2d | 2026-11-06 | 2026-11-09 | 177, 178 | 2026-11-06 | 2026-11-09 | 2d | 42d | 0d | Artico - Segunda limpieza de obra | 4,908 | 4,908 |
| 183 | 1.2.18.2 | Segunda carga y acarreo de escombro | 2d | 2026-11-09 | 2026-11-11 | 182 | 2026-11-09 | 2026-11-11 | 2d | 42d | 18d | Artico - Segunda carga y acarreo de escombro | 1,840 | 1,840 |
| 184 | 1.2.19 | **CANCELERIA PUERTAS Y VENTANAS DE ALUMINIO** | 13d | 2026-10-27 | 2026-11-11 |  | 2026-10-27 | 2026-11-11 | 13d | 29d |  |  | 84,000.59 | 84,000.59 |
| 185 | 1.2.19.1 | Puerta ventana P-05 corrediza | 7d | 2026-10-29 | 2026-11-06 | 158, 166 | 2026-10-29 | 2026-11-06 | 7d | 33d | 9d | Artico - Puerta ventana P-05 corrediza | 22,907.69 | 22,907.69 |
| 186 | 1.2.19.2 | Ventana corrediza V-01 | 4d | 2026-10-27 | 2026-10-30 | 158FS+10d | 2026-10-27 | 2026-10-30 | 4d | 38d | 14d | Artico - Ventana corrediza V-01 | 13,744.6 | 13,744.6 |
| 187 | 1.2.19.3 | Ventana corrediza V-03 | 4d | 2026-10-29 | 2026-11-03 | 158FS+12d | 2026-10-29 | 2026-11-03 | 4d | 36d | 12d | Artico - Ventana corrediza V-03 | 5,059.93 | 5,059.93 |
| 188 | 1.2.19.4 | Ventana corrediza V-05 | 4d | 2026-10-29 | 2026-11-03 | 158FS+12d | 2026-10-29 | 2026-11-03 | 4d | 36d | 12d | Artico - Ventana corrediza V-05 | 16,035.38 | 16,035.38 |
| 189 | 1.2.19.5 | Ventana corrediza tipo XO | 4d | 2026-11-02 | 2026-11-06 | 158FS+10d, 166FS+3d | 2026-11-02 | 2026-11-06 | 4d | 33d | 9d | Artico - Ventana corrediza tipo XO | 20,239.72 | 20,239.72 |
| 190 | 1.2.19.6 | Ventana fija escalera | 6d | 2026-11-04 | 2026-11-11 | 158FS+7d, 166FS+2d, 177 | 2026-11-04 | 2026-11-11 | 6d | 29d | 5d | Artico - Ventana fija escalera | 6,013.27 | 6,013.27 |
| 191 | 1.2.20 | **CARPINTERIA, PUERTAS EXTERIORES E INTERIORES** | 9d | 2026-11-06 | 2026-11-19 |  | 2026-11-06 | 2026-11-19 | 9d | 24d |  |  | 69,227.91 | 69,227.91 |
| 192 | 1.2.20.1 | Puerta P-01 de seguridad | 5d | 2026-11-06 | 2026-11-12 | 178 | 2026-11-06 | 2026-11-12 | 5d | 28d | 4d | Artico - Puerta P-01 de seguridad | 15,352.29 | 15,352.29 |
| 193 | 1.2.20.2 | Puerta P-03 interior | 8d | 2026-11-06 | 2026-11-18 | 178 | 2026-11-06 | 2026-11-18 | 8d | 25d | 1d | Artico - Puerta P-03 interior | 24,149.67 | 24,149.67 |
| 194 | 1.2.20.3 | Puerta P-02 interior | 8d | 2026-11-06 | 2026-11-18 | 178 | 2026-11-06 | 2026-11-18 | 8d | 25d | 1d | Artico - Puerta P-02 interior | 24,149.67 | 24,149.67 |
| 195 | 1.2.20.4 | Puerta exterior lavandería | 4d | 2026-11-12 | 2026-11-19 | 178FS+5d | 2026-11-12 | 2026-11-19 | 4d | 24d | 0d | Artico - Puerta exterior lavandería | 5,576.28 | 5,576.28 |
| 196 | 1.2.21 | **INSTALACION ELECTRICA** | 19d | 2026-10-05 | 2026-10-28 |  | 2026-10-05 | 2026-10-28 | 19d | 53d |  |  | 84,201.54 | 84,201.54 |
| 197 | 1.2.21.1 | Alimentación eléctrica base a centro de carga | 5d | 2026-10-14 | 2026-10-20 | 143, 158 | 2026-10-14 | 2026-10-20 | 5d | 57d | 0d | Artico - Alimentación eléctrica base a centro de carga | 12,127.73 | 12,127.73 |
| 198 | 1.2.21.2 | Interruptor termomagnético 1x15 A | 1d | 2026-10-20 | 2026-10-21 | 197 | 2026-10-20 | 2026-10-21 | 1d | 57d | 4d | Artico - Interruptor termomagnético 1x15 A | 2,414.94 | 2,414.94 |
| 199 | 1.2.21.3 | Interruptor termomagnético 1x20 A | 1d | 2026-10-20 | 2026-10-21 | 197 | 2026-10-20 | 2026-10-21 | 1d | 57d | 4d | Artico - Interruptor termomagnético 1x20 A | 747.48 | 747.48 |
| 200 | 1.2.21.4 | Interruptor termomagnético 2x20 A | 1d | 2026-10-20 | 2026-10-21 | 197 | 2026-10-20 | 2026-10-21 | 1d | 57d | 4d | Artico - Interruptor termomagnético 2x20 A | 5,851.14 | 5,851.14 |
| 201 | 1.2.21.5 | Salida para apagador 3 vías | 4d | 2026-10-08 | 2026-10-14 | 131, 158FS-4d | 2026-10-08 | 2026-10-14 | 4d | 53d | 0d | Artico - Salida para apagador 3 vías | 2,824.4 | 2,824.4 |
| 202 | 1.2.21.6 | Salida para apagador triple | 3d | 2026-10-14 | 2026-10-17 | 131, 132, 158 | 2026-10-14 | 2026-10-17 | 3d | 57d | 0d | Artico - Salida para apagador triple | 1,117.24 | 1,117.24 |
| 203 | 1.2.21.7 | Salida para apagador doble | 3d | 2026-10-17 | 2026-10-21 | 201, 202 | 2026-10-17 | 2026-10-21 | 3d | 57d | 4d | Artico - Salida para apagador doble | 2,711.1 | 2,711.1 |
| 204 | 1.2.21.8 | Salida para apagador sencillo | 3d | 2026-10-14 | 2026-10-17 | 201 | 2026-10-14 | 2026-10-17 | 3d | 60d | 7d | Artico - Salida para apagador sencillo | 4,337.76 | 4,337.76 |
| 205 | 1.2.21.9 | Salida de alumbrado en losa | 5d | 2026-10-14 | 2026-10-20 | 201 | 2026-10-14 | 2026-10-20 | 5d | 55d | 0d | Artico - Salida de alumbrado en losa | 10,302.18 | 10,302.18 |
| 206 | 1.2.21.10 | Salida de alumbrado en muro | 4d | 2026-10-14 | 2026-10-19 | 201 | 2026-10-14 | 2026-10-19 | 4d | 59d | 6d | Artico - Salida de alumbrado en muro | 5,027.58 | 5,027.58 |
| 207 | 1.2.21.11 | Salida para contacto 220 V | 3d | 2026-10-16 | 2026-10-20 | 201FS+2d | 2026-10-16 | 2026-10-20 | 3d | 53d | 0d | Artico - Salida para contacto 220 V | 3,863.94 | 3,863.94 |
| 208 | 1.2.21.12 | Salida para contacto doble | 5d | 2026-10-16 | 2026-10-22 | 201FS+2d | 2026-10-16 | 2026-10-22 | 5d | 56d | 3d | Artico - Salida para contacto doble | 11,569.29 | 11,569.29 |
| 209 | 1.2.21.13 | Salida para contacto doble área húmeda | 2d | 2026-10-20 | 2026-10-22 | 207 | 2026-10-20 | 2026-10-22 | 2d | 56d | 3d | Artico - Salida para contacto doble área húmeda | 3,653.46 | 3,653.46 |
| 210 | 1.2.21.14 | Salida TV / telefonía / intercom | 4d | 2026-10-20 | 2026-10-24 | 207 | 2026-10-20 | 2026-10-24 | 4d | 54d | 1d | Artico - Salida TV / telefonía / intercom | 1,255.8 | 1,255.8 |
| 211 | 1.2.21.15 | Extractor 4 baño | 5d | 2026-10-20 | 2026-10-26 | 207 | 2026-10-20 | 2026-10-26 | 5d | 53d | 0d | Artico - Extractor 4" baño | 2,863.44 | 2,863.44 |
| 212 | 1.2.21.16 | Prueba eléctrica | 2d | 2026-10-27 | 2026-10-28 | 197, 198, 199, 200, 201, 202, 203, 204, 205, 206, 207, 208, 209, 210, 211, 213, 260, 261, 262 | 2026-10-27 | 2026-10-28 | 2d | 53d | 29d | Artico - Prueba eléctrica | 3,674.2 | 3,674.2 |
| 213 | 1.2.21.17 | Murete convencional | 4d | 2026-10-05 | 2026-10-09 | 147FS-4d | 2026-10-05 | 2026-10-09 | 4d | 66d | 13d | Artico - Murete convencional | 9,859.86 | 9,859.86 |

| ID | WBS | Task | Duration | Start | Finish | Predecessors | Baseline start | Baseline finish | Baseline duration | Total slack | Free slack | Resources | Cost | Baseline cost |
| --- | --- | --- | --- | --- | --- | --- | --- | --- | --- | --- | --- | --- | --- | --- |
| 214 | 1.2.22 | **INSTALACIÓN HIDRO-SANITARIA** | 11d | 2026-09-23 | 2026-10-06 |  | 2026-09-23 | 2026-10-06 | 11d | 24d |  |  | 44,739.77 | 44,739.77 |
| 215 | 1.2.22.1 | Tubo PVC 3/4 red de condensados | 5d | 2026-09-23 | 2026-09-29 | 139 | 2026-09-23 | 2026-09-29 | 5d | 24d | 0d | Artico - Tubo PVC 3/4" red de condensados | 1,693.92 | 1,693.92 |
| 216 | 1.2.22.2 | Caja PVC para lavadora | 3d | 2026-09-23 | 2026-09-26 | 139 | 2026-09-23 | 2026-09-26 | 3d | 24d | 0d | Artico - Caja PVC para lavadora | 1,322.48 | 1,322.48 |
| 217 | 1.2.22.3 | Salida para secadora PVC 4 | 3d | 2026-09-23 | 2026-09-26 | 142 | 2026-09-23 | 2026-09-26 | 3d | 24d | 0d | Artico - Salida para secadora PVC 4" | 828.09 | 828.09 |
| 218 | 1.2.22.4 | Salida hidráulica para boiler | 2d | 2026-09-23 | 2026-09-25 | 139 | 2026-09-23 | 2026-09-25 | 2d | 25d | 1d | Artico - Salida hidráulica para boiler | 1,545.82 | 1,545.82 |
| 219 | 1.2.22.5 | Salida hidráulica para llave de jardín | 3d | 2026-09-23 | 2026-09-26 | 139 | 2026-09-23 | 2026-09-26 | 3d | 24d | 0d | Artico - Salida hidráulica para llave de jardín | 1,294.44 | 1,294.44 |
| 220 | 1.2.22.6 | Salida hidráulica para lavabo | 4d | 2026-09-23 | 2026-09-28 | 139 | 2026-09-23 | 2026-09-28 | 4d | 24d | 0d | Artico - Salida hidráulica para lavabo | 4,637.46 | 4,637.46 |
| 221 | 1.2.22.7 | Salida hidráulica para purificación | 4d | 2026-09-23 | 2026-09-28 | 139 | 2026-09-23 | 2026-09-28 | 4d | 24d | 0d | Artico - Salida hidráulica para purificación | 561.44 | 561.44 |
| 222 | 1.2.22.8 | Salida sanitaria para lavabo | 2d | 2026-09-25 | 2026-09-28 | 139FS+2d | 2026-09-25 | 2026-09-28 | 2d | 24d | 0d | Artico - Salida sanitaria para lavabo | 4,960.26 | 4,960.26 |
| 223 | 1.2.22.9 | Salida hidráulica para lavadero | 2d | 2026-09-25 | 2026-09-28 | 139FS+2d | 2026-09-25 | 2026-09-28 | 2d | 24d | 0d | Artico - Salida hidráulica para lavadero | 711.4 | 711.4 |
| 224 | 1.2.22.10 | Salida sanitaria para lavadero | 2d | 2026-09-26 | 2026-09-29 | 139FS+3d | 2026-09-26 | 2026-09-29 | 2d | 24d | 0d | Artico - Salida sanitaria para lavadero | 769.21 | 769.21 |
| 225 | 1.2.22.11 | Salida hidráulica para lavadora | 2d | 2026-09-26 | 2026-09-29 | 139FS+3d | 2026-09-26 | 2026-09-29 | 2d | 24d | 0d | Artico - Salida hidráulica para lavadora | 1,422.8 | 1,422.8 |
| 226 | 1.2.22.12 | Salida sanitaria para lavadora | 2d | 2026-09-28 | 2026-09-30 | 142FS+4d | 2026-09-28 | 2026-09-30 | 2d | 24d | 0d | Artico - Salida sanitaria para lavadora | 769.21 | 769.21 |
| 227 | 1.2.22.13 | Salida hidráulica para regadera | 5d | 2026-09-28 | 2026-10-03 | 139FS+4d | 2026-09-28 | 2026-10-03 | 5d | 29d | 0d | Artico - Salida hidráulica para regadera | 2,845.6 | 2,845.6 |
| 228 | 1.2.22.14 | Salida sanitaria para regadera | 4d | 2026-09-28 | 2026-10-02 | 142FS+4d | 2026-09-28 | 2026-10-02 | 4d | 30d | 2d | Artico - Salida sanitaria para regadera | 1,594.78 | 1,594.78 |
| 229 | 1.2.22.15 | Salida hidráulica para WC | 2d | 2026-09-25 | 2026-09-28 | 142FS+2d | 2026-09-25 | 2026-09-28 | 2d | 24d | 0d | Artico - Salida hidráulica para WC | 1,765.02 | 1,765.02 |
| 230 | 1.2.22.16 | Salida sanitaria para WC | 4d | 2026-09-28 | 2026-10-02 | 142FS+4d | 2026-09-28 | 2026-10-02 | 4d | 24d | 0d | Artico - Salida sanitaria para WC | 2,396.31 | 2,396.31 |
| 231 | 1.2.22.17 | Salida hidráulica para zinc | 4d | 2026-09-28 | 2026-10-02 | 142FS+4d | 2026-09-28 | 2026-10-02 | 4d | 24d | 0d | Artico - Salida hidráulica para zinc | 1,176.68 | 1,176.68 |
| 232 | 1.2.22.18 | Salida sanitaria para zinc | 3d | 2026-09-30 | 2026-10-03 | 142FS+6d | 2026-09-30 | 2026-10-03 | 3d | 24d | 0d | Artico - Salida sanitaria para zinc | 797.39 | 797.39 |
| 233 | 1.2.22.19 | Tubo para ventila de baño 2 | 5d | 2026-09-23 | 2026-09-29 | 215SS | 2026-09-23 | 2026-09-29 | 5d | 24d | 0d | Artico - Tubo para ventila de baño 2" | 4,437.96 | 4,437.96 |
| 234 | 1.2.22.20 | Tubo para minisplit PVC 3 | 5d | 2026-09-29 | 2026-10-05 | 233 | 2026-09-29 | 2026-10-05 | 5d | 24d | 0d | Artico - Tubo para minisplit PVC 3" | 2,001.51 | 2,001.51 |
| 235 | 1.2.22.21 | Cuadro de medición | 5d | 2026-09-26 | 2026-10-02 | 180 | 2026-09-26 | 2026-10-02 | 5d | 30d | 0d | Artico - Cuadro de medición | 5,226.34 | 5,226.34 |
| 236 | 1.2.22.22 | Prueba sanitaria | 1d | 2026-10-05 | 2026-10-06 | 217, 222, 224, 226, 228, 230, 233, 234 | 2026-10-05 | 2026-10-06 | 1d | 28d | 4d | Artico - Prueba sanitaria | 287.5 | 287.5 |
| 237 | 1.2.22.23 | Prueba hidráulica | 1d | 2026-10-03 | 2026-10-05 | 215, 218, 219, 220, 221, 223, 225, 227, 229, 231, 235, 238, 239 | 2026-10-03 | 2026-10-05 | 1d | 29d | 5d | Artico - Prueba hidráulica | 287.5 | 287.5 |
| 238 | 1.2.22.24 | Salida hidráulica para tanque hidroneumático | 3d | 2026-09-26 | 2026-09-30 | 180 | 2026-09-26 | 2026-09-30 | 3d | 32d | 3d | Artico - Salida hidráulica para tanque hidroneumático | 663.84 | 663.84 |
| 239 | 1.2.22.25 | Salida hidráulica para Active Driver | 3d | 2026-09-26 | 2026-09-30 | 180 | 2026-09-26 | 2026-09-30 | 3d | 32d | 3d | Artico - Salida hidráulica para Active Driver | 742.81 | 742.81 |

| ID | WBS | Task | Duration | Start | Finish | Predecessors | Baseline start | Baseline finish | Baseline duration | Total slack | Free slack | Resources | Cost | Baseline cost |
| --- | --- | --- | --- | --- | --- | --- | --- | --- | --- | --- | --- | --- | --- | --- |
| 240 | 1.2.23 | **INSTALACION DE GAS** | 8d | 2026-09-21 | 2026-09-30 |  | 2026-09-21 | 2026-09-30 | 8d | 53d |  |  | 7,447.38 | 7,447.38 |
| 241 | 1.2.23.1 | Ramaleo para gas 1/2 | 5d | 2026-09-24 | 2026-09-30 | 180FS-2d, 242 | 2026-09-24 | 2026-09-30 | 5d | 53d | 0d | Artico - Ramaleo para gas 1/2" | 6,244.41 | 6,244.41 |
| 242 | 1.2.23.2 | Excavación a mano material tipo B | 3d | 2026-09-21 | 2026-09-24 | 180FF-2d | 2026-09-21 | 2026-09-24 | 3d | 53d | 0d | Artico - Excavación a mano material tipo B | 1,202.97 | 1,202.97 |
| 243 | 1.2.24 | **MUEBLES SANITARIOS** | 29d | 2026-10-29 | 2026-12-04 |  | 2026-10-29 | 2026-12-04 | 29d | 24d |  |  | 60,980.65 | 60,980.65 |
| 244 | 1.2.24.1 | WC one piece Smart Corona | 2d | 2026-10-29 | 2026-10-30 | 236, 237, 166, 169 | 2026-10-29 | 2026-10-30 | 2d | 38d | 14d | Artico - WC one piece Smart Corona | 9,496.2 | 9,496.2 |
| 245 | 1.2.24.2 | Lavabo Tarento Vanity | 4d | 2026-10-29 | 2026-11-03 | 236, 237, 166, 169, 173 | 2026-10-29 | 2026-11-03 | 4d | 36d | 12d | Artico - Lavabo Tarento Vanity | 33,355.86 | 33,355.86 |
| 246 | 1.2.24.3 | Regadera y monomando Thames | 3d | 2026-10-31 | 2026-11-04 | 236, 237, 173FS+2d, 166, 169FS+2d | 2026-10-31 | 2026-11-04 | 3d | 35d | 11d | Artico - Regadera y monomando Thames | 6,045.86 | 6,045.86 |
| 247 | 1.2.24.4 | Coladera cuadrada para inserto cerámico | 2d | 2026-11-02 | 2026-11-04 | 237, 173, 169FS+3d | 2026-11-02 | 2026-11-04 | 2d | 35d | 11d | Artico - Coladera cuadrada para inserto cerámico | 5,513.04 | 5,513.04 |
| 248 | 1.2.24.5 | Toallero argolla Thames | 1d | 2026-12-03 | 2026-12-04 | 159FS-1d | 2026-12-03 | 2026-12-04 | 1d | 24d | 0d | Artico - Toallero argolla Thames | 2,336.73 | 2,336.73 |
| 249 | 1.2.24.6 | Toallero barra Thames | 1d | 2026-12-03 | 2026-12-04 | 159FS-1d | 2026-12-03 | 2026-12-04 | 1d | 24d | 0d | Artico - Toallero barra Thames | 1,557.82 | 1,557.82 |
| 250 | 1.2.24.7 | Portapapel Thames | 1d | 2026-12-03 | 2026-12-04 | 159FS-1d | 2026-12-03 | 2026-12-04 | 1d | 24d | 0d | Artico - Portapapel Thames | 1,837.02 | 1,837.02 |
| 251 | 1.2.24.8 | Gancho percha Thames | 1d | 2026-12-03 | 2026-12-04 | 159FS-1d | 2026-12-03 | 2026-12-04 | 1d | 24d | 0d | Artico - Gancho percha Thames | 838.12 | 838.12 |
| 252 | 1.2.25 | **EQUIPAMIENTO** | 6d | 2026-09-12 | 2026-09-22 |  | 2026-09-12 | 2026-09-22 | 6d | 83d |  |  | 33,942.88 | 33,942.88 |
| 253 | 1.2.25.1 | Electronivel Rotoplas 5 m | 2d | 2026-09-14 | 2026-09-17 | 258 | 2026-09-14 | 2026-09-17 | 2d | 86d | 62d | Artico - Electronivel Rotoplas 5 m | 1,197.02 | 1,197.02 |
| 254 | 1.2.25.2 | Manómetro | 1d | 2026-09-14 | 2026-09-15 | 258 | 2026-09-14 | 2026-09-15 | 1d | 87d | 63d | Artico - Manómetro | 1,437.48 | 1,437.48 |
| 255 | 1.2.25.3 | Interruptor de presión 30-50 PSI | 1d | 2026-09-14 | 2026-09-15 | 258 | 2026-09-14 | 2026-09-15 | 1d | 87d | 63d | Artico - Interruptor de presión 30-50 PSI | 431.24 | 431.24 |
| 256 | 1.2.25.4 | Tanque hidroneumático FPS-24LX | 3d | 2026-09-14 | 2026-09-18 | 258 | 2026-09-14 | 2026-09-18 | 3d | 83d | 0d | Artico - Tanque hidroneumático FPS-24LX | 7,647.39 | 7,647.39 |
| 257 | 1.2.25.5 | Bomba sumergible Dominator 1.2 HP | 2d | 2026-09-18 | 2026-09-22 | 256 | 2026-09-18 | 2026-09-22 | 2d | 83d | 59d | Artico - Bomba sumergible Dominator 1.2 HP | 11,232.46 | 11,232.46 |
| 258 | 1.2.25.6 | Cisterna prefabricada 2800 L | 1d | 2026-09-12 | 2026-09-14 | 146FF | 2026-09-12 | 2026-09-14 | 1d | 83d | 0d | Artico - Cisterna prefabricada 2800 L | 11,997.29 | 11,997.29 |
| 259 | 1.2.26 | **LUMINARIAS** | 3d | 2026-10-20 | 2026-10-23 |  | 2026-10-20 | 2026-10-23 | 3d | 55d |  |  | 12,595.4 | 12,595.4 |
| 260 | 1.2.26.1 | Roseta de cerámica para luminaria | 3d | 2026-10-20 | 2026-10-23 | 205 | 2026-10-20 | 2026-10-23 | 3d | 55d | 2d | Artico - Roseta de cerámica para luminaria | 1,317.5 | 1,317.5 |
| 261 | 1.2.26.2 | Spot Brighton | 3d | 2026-10-20 | 2026-10-23 | 205 | 2026-10-20 | 2026-10-23 | 3d | 55d | 2d | Artico - Spot Brighton | 1,618.02 | 1,618.02 |
| 262 | 1.2.26.3 | Arbotante bidireccional 12W | 2d | 2026-10-20 | 2026-10-22 | 205 | 2026-10-20 | 2026-10-22 | 2d | 56d | 3d | Artico - Arbotante bidireccional 12W | 9,659.88 | 9,659.88 |
| 263 | 1.2.27 | **TERCER LIMPIEZA DE OBRA** | 9d | 2026-12-04 | 2026-12-16 |  | 2026-12-04 | 2026-12-16 | 9d | 24d |  |  | 5,273.89 | 5,273.89 |
| 264 | 1.2.27.1 | Limpieza fina para entrega | 5d | 2026-12-04 | 2026-12-11 | 212, 195, 190, 159, 237, 236, 248, 249, 250, 251, 268, 253, 254, 255, 256, 257, 183 | 2026-12-04 | 2026-12-11 | 5d | 24d | 0d | Artico - Limpieza fina para entrega | 2,229.82 | 2,229.82 |
| 265 | 1.2.27.2 | Tercera limpieza de obra | 4d | 2026-12-08 | 2026-12-12 | 264FS-3d | 2026-12-08 | 2026-12-12 | 4d | 24d | 0d | Artico - Tercera limpieza de obra | 1,083.87 | 1,083.87 |
| 266 | 1.2.27.3 | Tercera carga y acarreo de escombro | 3d | 2026-12-12 | 2026-12-16 | 265 | 2026-12-12 | 2026-12-16 | 3d | 24d | 0d | Artico - Tercera carga y acarreo de escombro | 1,960.2 | 1,960.2 |

| ID | WBS | Task | Type | Duration | Start | Finish | Predecessors | Complete | Remaining | Baseline start | Baseline finish | Baseline duration | Total slack | Free slack | Resources | Cost | Baseline cost | Actual cost |
| --- | --- | --- | --- | --- | --- | --- | --- | --- | --- | --- | --- | --- | --- | --- | --- | --- | --- | --- |
| 267 | 1.2.28 | **OBRA EXTERIOR - BARDA** |  | 18d | 2026-09-26 | 2026-10-19 |  |  |  | 2026-09-26 | 2026-10-19 | 18d | 61d |  |  | 26,996.04 | 26,996.04 |  |
| 268 | 1.2.28.1 | Barda de block aparente |  | 18d | 2026-09-26 | 2026-10-19 | 180 |  |  | 2026-09-26 | 2026-10-19 | 18d | 61d | 37d | Artico - Barda de block aparente | 26,996.04 | 26,996.04 |  |
| 269 | 1.3 | **LOTE 02 M-661 CORSAC-B** |  | 178d | 2026-05-20 A | 2027-01-04 |  |  | 177.89d | 2026-05-20 | 2027-01-04 | 178d | 13d |  |  | 2,435,578.6 | 2,435,578.6 | 2,834.44 |
| 270 | 1.3.1 | **HITOS IMPORTANTES DEL LOTE** |  | 178d | 2026-05-20 A | 2027-01-04 |  |  | 178d | 2026-05-20 | 2027-01-04 | 178d | 13d |  |  |  |  |  |
| 271 | 1.3.1.1 | Inicio del LOTE 02 M-661 CORSAC-B | milestone | 0d | 2026-05-20 A | 2026-05-20 A | 5 | 100% |  | 2026-05-20 | 2026-05-20 |  |  |  |  |  |  |  |
| 272 | 1.3.1.2 | Colado de Losa de Cimentación | milestone | 0d | 2026-06-10 | 2026-06-10 | 303 |  |  | 2026-06-10 | 2026-06-10 |  | 174d |  |  |  |  |  |
| 273 | 1.3.1.3 | Colado de Losa de Entrepiso | milestone | 0d | 2026-07-17 | 2026-07-17 | 339 |  |  | 2026-07-17 | 2026-07-17 |  | 144d |  |  |  |  |  |
| 274 | 1.3.1.4 | Colado de Losa de Azotea | milestone | 0d | 2026-08-24 | 2026-08-24 | 379 |  |  | 2026-08-24 | 2026-08-24 |  | 114d |  |  |  |  |  |
| 275 | 1.3.1.5 | Entrega de vivienda | milestone | 0d | 2027-01-04 | 2027-01-04 | 571, 572, 573 |  |  | 2027-01-04 | 2027-01-04 |  | 13d |  |  |  |  |  |
| 276 | 1.3.2 | **TRABAJOS PRELIMINARES** |  | 2d | 2026-05-20 A | 2026-05-22 |  | 31% | 1.38d | 2026-05-20 | 2026-05-22 | 2d | 13d |  |  | 9,070.2 | 9,070.2 | 2,834.44 |
| 277 | 1.3.2.1 | Trazo y nivelación |  | 2d | 2026-05-20 A | 2026-05-22 | 271 | 31% | 1.38d | 2026-05-20 | 2026-05-22 | 2d | 13d | 0d | Corsac - Trazo y nivelación | 9,070.2 | 9,070.2 | 2,834.44 |
| 278 | 1.3.3 | **EXCAVACIONES** |  | 3d | 2026-05-22 | 2026-05-26 |  |  |  | 2026-05-22 | 2026-05-26 | 3d | 13d |  |  | 1,855.37 | 1,855.37 |  |
| 279 | 1.3.3.1 | Excavación a mano material tipo B |  | 3d | 2026-05-22 | 2026-05-26 | 277 |  |  | 2026-05-22 | 2026-05-26 | 3d | 13d | 0d | Corsac - Excavación a mano material tipo B | 1,118.55 | 1,118.55 |  |
| 280 | 1.3.3.2 | Acarreo en carretilla 20 m |  | 2d | 2026-05-23 | 2026-05-26 | 279SS+1d |  |  | 2026-05-23 | 2026-05-26 | 2d | 13d | 0d | Corsac - Acarreo en carretilla 20 m | 736.82 | 736.82 |  |
| 281 | 1.3.4 | **CIMENTACION** |  | 13d | 2026-05-26 | 2026-06-11 |  |  |  | 2026-05-26 | 2026-06-11 | 13d | 13d |  |  | 183,681.82 | 183,681.82 |  |
| 282 | 1.3.4.1 | Cimbra perimetral losa de cimentación |  | 3d | 2026-05-26 | 2026-05-29 | 279, 280 |  |  | 2026-05-26 | 2026-05-29 | 3d | 13d | 0d | Corsac - Cimbra perimetral losa de cimentación | 10,207.56 | 10,207.56 |  |
| 283 | 1.3.4.2 | Sistema antitermitas PVC |  | 3d | 2026-05-26 | 2026-05-29 | 279, 280 |  |  | 2026-05-26 | 2026-05-29 | 3d | 14d | 0d | Corsac - Sistema antitermitas PVC | 5,045.08 | 5,045.08 |  |
| 284 | 1.3.4.3 | Hule negro en cimentación |  | 1d | 2026-05-29 | 2026-06-01 | 283 |  |  | 2026-05-29 | 2026-06-01 | 1d | 14d | 0d | Corsac - Hule negro en cimentación | 3,100.09 | 3,100.09 |  |
| 285 | 1.3.4.4 | Ramaleo poliducto eléctrico cimentación |  | 2d | 2026-06-01 | 2026-06-03 | 284 |  |  | 2026-06-01 | 2026-06-03 | 2d | 17d | 0d | Corsac - Ramaleo poliducto eléctrico cimentación | 2,653.92 | 2,653.92 |  |
| 286 | 1.3.4.5 | Ramaleo eléctrico base-medición a centro de carga |  | 1d | 2026-06-01 | 2026-06-02 | 284 |  |  | 2026-06-01 | 2026-06-02 | 1d | 18d | 1d | Corsac - Ramaleo eléctrico base-medición a centro de carga | 1,452.12 | 1,452.12 |  |
| 287 | 1.3.4.6 | Ramaleo eléctrico exterior |  | 1d | 2026-06-03 | 2026-06-04 | 285, 286 |  |  | 2026-06-03 | 2026-06-04 | 1d | 17d | 4d | Corsac - Ramaleo eléctrico exterior | 2,404.85 | 2,404.85 |  |
| 288 | 1.3.4.7 | Ramaleo para cable poliducto 3/4 |  | 1d | 2026-06-03 | 2026-06-04 | 285, 286 |  |  | 2026-06-03 | 2026-06-04 | 1d | 17d | 4d | Corsac - Ramaleo para cable poliducto 3/4 | 753.2 | 753.2 |  |
| 289 | 1.3.4.8 | Ramaleo para TV poliducto 3/4 |  | 1d | 2026-06-03 | 2026-06-04 | 285, 286 |  |  | 2026-06-03 | 2026-06-04 | 1d | 17d | 4d | Corsac - Ramaleo para TV poliducto 3/4 | 753.2 | 753.2 |  |
| 290 | 1.3.4.9 | Ramaleo hidráulico CPVC 1-1/4" cimentación |  | 1d | 2026-06-01 | 2026-06-02 | 284 |  |  | 2026-06-01 | 2026-06-02 | 1d | 14d | 0d | Corsac - Ramaleo hidráulico CPVC 1-1/4" cimentación | 272.37 | 272.37 |  |
| 291 | 1.3.4.10 | Ramaleo hidráulico CPVC 1 cimentación |  | 1d | 2026-06-01 | 2026-06-02 | 284, 290SS |  |  | 2026-06-01 | 2026-06-02 | 1d | 14d | 0d | Corsac - Ramaleo hidráulico CPVC 1" cimentación | 371.75 | 371.75 |  |
| 292 | 1.3.4.11 | Ramaleo hidráulico CPVC 3/4 cimentación |  | 2d | 2026-06-02 | 2026-06-04 | 291 |  |  | 2026-06-02 | 2026-06-04 | 2d | 14d | 0d | Corsac - Ramaleo hidráulico CPVC 3/4" cimentación | 2,465.07 | 2,465.07 |  |
| 293 | 1.3.4.12 | Ramaleo hidráulico CPVC 1/2 cimentación |  | 2d | 2026-06-04 | 2026-06-06 | 292 |  |  | 2026-06-04 | 2026-06-06 | 2d | 14d | 0d | Corsac - Ramaleo hidráulico CPVC 1/2" cimentación | 582.14 | 582.14 |  |
| 294 | 1.3.4.13 | Prueba hidráulica |  | 1d | 2026-06-06 | 2026-06-08 | 290, 291, 292, 293 |  |  | 2026-06-06 | 2026-06-08 | 1d | 14d | 1d | Corsac - Prueba hidráulica | 574.99 | 574.99 |  |
| 295 | 1.3.4.14 | Ramaleo sanitario PVC 4 cimentación |  | 2d | 2026-06-02 | 2026-06-04 | 284FS+1d |  |  | 2026-06-02 | 2026-06-04 | 2d | 15d | 0d | Corsac - Ramaleo sanitario PVC 4" cimentación | 1,659.62 | 1,659.62 |  |
| 296 | 1.3.4.15 | Ramaleo sanitario PVC 2 cimentación |  | 1d | 2026-06-04 | 2026-06-05 | 295 |  |  | 2026-06-04 | 2026-06-05 | 1d | 15d | 0d | Corsac - Ramaleo sanitario PVC 2" cimentación | 87.1 | 87.1 |  |
| 297 | 1.3.4.16 | Prueba sanitaria |  | 1d | 2026-06-05 | 2026-06-06 | 295, 296 |  |  | 2026-06-05 | 2026-06-06 | 1d | 15d | 2d | Corsac - Prueba sanitaria | 574.99 | 574.99 |  |
| 298 | 1.3.4.17 | Acero contratrabe CT-1 |  | 4d | 2026-05-29 | 2026-06-04 | 282 |  |  | 2026-05-29 | 2026-06-04 | 4d | 13d | 0d | Corsac - Acero contratrabe CT-1 | 18,766.14 | 18,766.14 |  |
| 299 | 1.3.4.18 | Acero contratrabe CT-2 |  | 4d | 2026-05-29 | 2026-06-04 | 282 |  |  | 2026-05-29 | 2026-06-04 | 4d | 13d | 0d | Corsac - Acero contratrabe CT-2 | 11,214.79 | 11,214.79 |  |
| 300 | 1.3.4.19 | Malla electrosoldada 6-6/8-8 |  | 2d | 2026-06-06 | 2026-06-09 | 298, 299, 301, 302 |  |  | 2026-06-06 | 2026-06-09 | 2d | 13d | 0d | Corsac - Malla electrosoldada 6-6/8-8 | 5,062.15 | 5,062.15 |  |
| 301 | 1.3.4.20 | Bastón de refuerzo LS |  | 2d | 2026-06-04 | 2026-06-06 | 298, 299 |  |  | 2026-06-04 | 2026-06-06 | 2d | 13d | 0d | Corsac - Bastón de refuerzo LS | 7,598.06 | 7,598.06 |  |
| 302 | 1.3.4.21 | Bastón de refuerzo LI |  | 2d | 2026-06-04 | 2026-06-06 | 298, 299 |  |  | 2026-06-04 | 2026-06-06 | 2d | 13d | 0d | Corsac - Bastón de refuerzo LI | 14,734.01 | 14,734.01 |  |
| 303 | 1.3.4.22 | Colado losa de cimentación f’c=200 |  | 1d | 2026-06-09 | 2026-06-10 | 282, 284, 287, 288, 289, 294, 297, 298, 299, 300, 301, 302, 305, 306 |  |  | 2026-06-09 | 2026-06-10 | 1d | 13d | 0d | Corsac - Colado losa de cimentación f’c=200 | 50,517.75 | 50,517.75 |  |
| 304 | 1.3.4.23 | Curado de concreto |  | 1d | 2026-06-10 | 2026-06-11 | 303 |  |  | 2026-06-10 | 2026-06-11 | 1d | 13d | 0d | Corsac - Curado de concreto | 2,501.31 | 2,501.31 |  |
| 305 | 1.3.4.24 | Acero zapata ZT-1 |  | 4d | 2026-06-04 | 2026-06-09 | 298, 299 |  |  | 2026-06-04 | 2026-06-09 | 4d | 13d | 0d | Corsac - Acero zapata ZL | 13,441.06 | 13,441.06 |  |
| 306 | 1.3.4.25 | Acero zapata ZT-2 |  | 4d | 2026-06-04 | 2026-06-09 | 298, 299 |  |  | 2026-06-04 | 2026-06-09 | 4d | 13d | 0d | Corsac - Acero zapata ZT-1 | 26,888.5 | 26,888.5 |  |

| ID | WBS | Task | Duration | Start | Finish | Predecessors | Baseline start | Baseline finish | Baseline duration | Total slack | Free slack | Resources | Cost | Baseline cost |
| --- | --- | --- | --- | --- | --- | --- | --- | --- | --- | --- | --- | --- | --- | --- |
| 307 | 1.3.5 | **MUROS, PLANTA BAJA. CASTILLOS Y CERRAMIENTOS** | 20d | 2026-06-05 | 2026-06-30 |  | 2026-06-05 | 2026-06-30 | 20d | 18d |  |  | 167,033.85 | 167,033.85 |
| 308 | 1.3.5.1 | Anclaje de castillos y Columnas PB | 5d | 2026-06-05 | 2026-06-11 | 298FS+1d, 299FS+1d | 2026-06-05 | 2026-06-11 | 5d | 161d | 0d |  |  |  |
| 309 | 1.3.5.2 | Castillo K1 | 4d | 2026-06-11 | 2026-06-16 | 304, 308 | 2026-06-11 | 2026-06-16 | 4d | 161d | 0d | Corsac - Castillo K1 | 25,106.13 | 25,106.13 |
| 310 | 1.3.5.3 | Castillo K3 | 3d | 2026-06-13 | 2026-06-17 | 309FS-2d | 2026-06-13 | 2026-06-17 | 3d | 161d | 0d | Corsac - Castillo K3 | 19,843.65 | 19,843.65 |
| 311 | 1.3.5.4 | Castillo K4 | 3d | 2026-06-13 | 2026-06-17 | 309FS-2d | 2026-06-13 | 2026-06-17 | 3d | 161d | 0d | Corsac - Castillo K4 | 2,267.86 | 2,267.86 |
| 312 | 1.3.5.5 | Castillo K5 | 3d | 2026-06-16 | 2026-06-19 | 310FS-1d, 311FS-1d | 2026-06-16 | 2026-06-19 | 3d | 161d | 0d | Corsac - Castillo K5 | 3,146.27 | 3,146.27 |
| 313 | 1.3.5.6 | Refuerzo de muro K6 | 3d | 2026-06-17 | 2026-06-22 | 312FS-2d | 2026-06-17 | 2026-06-22 | 3d | 161d | 0d | Corsac - Refuerzo de muro K6 | 6,981.21 | 6,981.21 |
| 314 | 1.3.5.7 | Dala de cerramiento CR-1 | 4d | 2026-06-17 | 2026-06-23 | 309, 310 | 2026-06-17 | 2026-06-23 | 4d | 164d |  | Corsac - Dala de cerramiento CR-1 | 21,736.69 | 21,736.69 |
| 315 | 1.3.5.8 | Dala de cerramiento CR-2 | 3d | 2026-06-17 | 2026-06-22 | 309, 310 | 2026-06-17 | 2026-06-22 | 3d | 165d |  | Corsac - Dala de cerramiento CR-2 | 6,832.58 | 6,832.58 |
| 316 | 1.3.5.9 | Cadena block dala | 4d | 2026-06-22 | 2026-06-26 | 313 | 2026-06-22 | 2026-06-26 | 4d | 161d |  | Corsac - Cadena block dala | 7,108.11 | 7,108.11 |
| 317 | 1.3.5.10 | Muro de ladrillo aparente | 15d | 2026-06-11 | 2026-06-30 | 304 | 2026-06-11 | 2026-06-30 | 15d | 13d | 0d | Corsac - Muro de ladrillo aparente | 18,986.43 | 18,986.43 |
| 318 | 1.3.5.11 | Muro de block planta baja | 13d | 2026-06-13 | 2026-06-30 | 304FS+2d | 2026-06-13 | 2026-06-30 | 13d | 13d | 0d | Corsac - Muro de block planta baja | 52,446.46 | 52,446.46 |
| 319 | 1.3.5.12 | Ramaleo electrico en Muros Planta Baja | 4d | 2026-06-17 | 2026-06-23 | 317SS+5d | 2026-06-17 | 2026-06-23 | 4d | 16d | 0d | Corsac - Ramaleo electrico en Muros Planta Baja | 1,637.54 | 1,637.54 |
| 320 | 1.3.5.13 | Ramaleo para cable poliducto 3/4 | 2d | 2026-06-23 | 2026-06-25 | 319 | 2026-06-23 | 2026-06-25 | 2d | 16d | 0d | Corsac - Ramaleo para cable poliducto 3/4 | 470.46 | 470.46 |
| 321 | 1.3.5.14 | Ramaleo para TV poliducto 3/4 | 3d | 2026-06-25 | 2026-06-29 | 320 | 2026-06-25 | 2026-06-29 | 3d | 16d | 2d | Corsac - Ramaleo para TV poliducto 3/4 | 470.46 | 470.46 |
| 322 | 1.3.6 | **ESCALERA** | 10d | 2026-07-17 | 2026-07-30 |  | 2026-07-17 | 2026-07-30 | 10d | 90d |  |  | 26,683.07 | 26,683.07 |
| 323 | 1.3.6.1 | Escalera de concreto armado | 10d | 2026-07-17 | 2026-07-30 | 339 | 2026-07-17 | 2026-07-30 | 10d | 90d | 77d | Corsac - Escalera de concreto armado | 26,683.07 | 26,683.07 |
| 324 | 1.3.7 | **LOSA DE ENTREPISO (viegueta y caseton)** | 17d | 2026-06-27 | 2026-07-18 |  | 2026-06-27 | 2026-07-18 | 17d | 16d |  |  | 203,007.14 | 203,007.14 |
| 325 | 1.3.7.1 | Dala de coronamiento 10cm | 3d | 2026-07-07 | 2026-07-09 | 341FS-1d, 327, 328, 329, 330, 331, 332 | 2026-07-07 | 2026-07-09 | 3d | 16d | 3d | Corsac - Dala de Coronamiento 10cm | 12,050.32 | 12,050.32 |
| 326 | 1.3.7.2 | Dala de coronamiento 12cm | 3d | 2026-07-08 | 2026-07-10 | 341, 327, 328, 329, 330, 331, 332 | 2026-07-08 | 2026-07-10 | 3d | 15d | 2d | Corsac - Dala de Coronamiento 12cm | 7,601.03 | 7,601.03 |
| 327 | 1.3.7.3 | Trabe TR-1 | 3d | 2026-06-27 | 2026-07-01 | 317FS-2d, 318FS-2d | 2026-06-27 | 2026-07-01 | 3d | 17d | 4d | Corsac - Trabe TR-1 | 975.71 | 975.71 |
| 328 | 1.3.7.4 | Trabe TR-2 | 4d | 2026-06-29 | 2026-07-03 | 317FS-1d, 318FS-1d | 2026-06-29 | 2026-07-03 | 4d | 15d | 2d | Corsac - Trabe TR-2 | 1,982.23 | 1,982.23 |
| 329 | 1.3.7.5 | Nervadura NR-1 | 4d | 2026-06-30 | 2026-07-04 | 317, 318 | 2026-06-30 | 2026-07-04 | 4d | 14d | 1d | Corsac - Nervadura NR-1 | 1,165.56 | 1,165.56 |
| 330 | 1.3.7.6 | Nervadura NR-2 | 4d | 2026-07-01 | 2026-07-06 | 317FS+1d, 318FS+1d | 2026-07-01 | 2026-07-06 | 4d | 13d | 0d | Corsac - Nervadura NR-2 | 11,155.31 | 11,155.31 |
| 331 | 1.3.7.7 | Nervadura NR-3 | 4d | 2026-07-01 | 2026-07-06 | 317FS+1d, 318FS+1d | 2026-07-01 | 2026-07-06 | 4d | 13d | 0d | Corsac - Nervadura NR-3 | 8,306.69 | 8,306.69 |
| 332 | 1.3.7.8 | Nervadura NR-4 | 4d | 2026-07-01 | 2026-07-06 | 317FS+1d, 318FS+1d | 2026-07-01 | 2026-07-06 | 4d | 13d | 0d | Corsac - Nervadura NR-4 | 1,060.23 | 1,060.23 |
| 333 | 1.3.7.9 | Hacero de refuerzo en nervios #3 | 2d | 2026-07-07 | 2026-07-08 | 327, 328, 329, 330, 331, 332 | 2026-07-07 | 2026-07-08 | 2d | 13d | 0d | Corsac - Acero de refuerzo en nervios #3 | 22,015.54 | 22,015.54 |
| 334 | 1.3.7.10 | Acero de refuerzo long. #3 | 3d | 2026-07-08 | 2026-07-10 | 327, 328, 329, 330, 331, 332, 341 | 2026-07-08 | 2026-07-10 | 3d | 14d | 0d | Corsac - Acero de refuerzo long. #3 | 2,269.54 | 2,269.54 |
| 335 | 1.3.7.11 | Acero de refuerzo long. #4 | 3d | 2026-07-08 | 2026-07-10 | 334SS | 2026-07-08 | 2026-07-10 | 3d | 14d | 0d | Corsac - Acero de refuerzo long. #4 | 1,319.5 | 1,319.5 |
| 336 | 1.3.7.12 | Malla 66-10/10 losa de compresión | 2d | 2026-07-14 | 2026-07-16 | 325, 326, 333, 346, 349, 338 | 2026-07-14 | 2026-07-16 | 2d | 13d | 0d | Corsac - Malla 66-10/10 losa de compresión | 3,628.43 | 3,628.43 |
| 337 | 1.3.7.13 | Acero de Losa Maciza | 3d | 2026-07-07 | 2026-07-09 | 329, 330, 331, 332 | 2026-07-07 | 2026-07-09 | 3d | 18d | 5d | Corsac - Acero de Losa Maciza | 1,314.66 | 1,314.66 |
| 338 | 1.3.7.14 | Caseton de 60x60x20cm | 2d | 2026-07-07 | 2026-07-08 | 329, 330, 331, 332 | 2026-07-07 | 2026-07-08 | 2d | 17d | 4d | Corsac - Caseton de 60x60x20cm | 20,441.74 | 20,441.74 |
| 339 | 1.3.7.15 | Concreto losa de entrepiso f’c=200 | 1d | 2026-07-16 | 2026-07-17 | 334, 335, 336, 337, 346, 349, 342, 351 | 2026-07-16 | 2026-07-17 | 1d | 13d | 0d | Corsac - Concreto losa de entrepiso f’c=200 | 57,407.36 | 57,407.36 |
| 340 | 1.3.7.16 | Curado de concreto | 1d | 2026-07-17 | 2026-07-18 | 339 | 2026-07-17 | 2026-07-18 | 1d | 13d | 0d | Corsac - Curado de concreto | 2,378.69 | 2,378.69 |
| 341 | 1.3.7.17 | Cimbra losa de azotea | 5d | 2026-07-01 | 2026-07-07 | 317FS+1d, 318FS+1d, 321 | 2026-07-01 | 2026-07-07 | 5d | 14d | 0d | Corsac - Cimbra losa de entrepiso | 33,366.23 | 33,366.23 |
| 342 | 1.3.7.18 | Cimbra exterior corta losa | 3d | 2026-07-10 | 2026-07-14 | 334FS-1d, 335FS-1d | 2026-07-10 | 2026-07-14 | 3d | 15d | 2d | Corsac - Cimbra exterior corta losa | 4,977.22 | 4,977.22 |
| 343 | 1.3.7.19 | Ramaleo poliducto eléctrico entrepiso | 2d | 2026-07-09 | 2026-07-10 | 333 | 2026-07-09 | 2026-07-10 | 2d | 149d |  | Corsac - Ramaleo poliducto eléctrico entrepiso | 5,312.02 | 5,312.02 |
| 344 | 1.3.7.20 | Ramaleo hidráulico CPVC 3/4" | 2d | 2026-07-10 | 2026-07-13 | 333FS+1d | 2026-07-10 | 2026-07-13 | 2d | 13d | 0d | Corsac - Ramaleo hidráulico CPVC 3/4" | 717.18 | 717.18 |
| 345 | 1.3.7.21 | Ramaleo hidráulico CPVC 1/2" | 1d | 2026-07-13 | 2026-07-14 | 344 | 2026-07-13 | 2026-07-14 | 1d | 13d | 0d | Corsac - Ramaleo hidráulico CPVC 1/2" | 1,532.33 | 1,532.33 |
| 346 | 1.3.7.22 | Prueba hidráulica | 1d | 2026-07-13 | 2026-07-14 | 344, 345FS-1d | 2026-07-13 | 2026-07-14 | 1d | 13d | 0d | Corsac - Prueba hidráulica | 574.99 | 574.99 |
| 347 | 1.3.7.23 | Ramaleo sanitario PVC 4" | 2d | 2026-07-10 | 2026-07-13 | 333FS+1d | 2026-07-10 | 2026-07-13 | 2d | 13d | 0d | Corsac - Ramaleo sanitario PVC 4" | 402.9 | 402.9 |
| 348 | 1.3.7.24 | Ramaleo sanitario PVC 2" | 1d | 2026-07-13 | 2026-07-14 | 347 | 2026-07-13 | 2026-07-14 | 1d | 13d | 0d | Corsac - Ramaleo sanitario PVC 2" | 476.74 | 476.74 |
| 349 | 1.3.7.25 | Prueba sanitaria | 1d | 2026-07-13 | 2026-07-14 | 347, 348FS-1d | 2026-07-13 | 2026-07-14 | 1d | 13d | 0d | Corsac - Prueba sanitaria | 574.99 | 574.99 |

| ID | WBS | Task | Duration | Start | Finish | Predecessors | Baseline start | Baseline finish | Baseline duration | Total slack | Free slack | Resources | Cost | Baseline cost |
| --- | --- | --- | --- | --- | --- | --- | --- | --- | --- | --- | --- | --- | --- | --- |
| 350 | 1.3.8 | **MUROS EN PLANTA ALTA, CASTILLOS Y CERRM.** | 22d | 2026-07-10 | 2026-08-06 |  | 2026-07-10 | 2026-08-06 | 22d | 14d |  |  | 226,919.92 | 226,919.92 |
| 351 | 1.3.8.1 | Anclaje de castillos y Columnas PA | 4d | 2026-07-10 | 2026-07-15 | 334FS-1d, 335FS-1d | 2026-07-10 | 2026-07-15 | 4d | 14d | 1d |  |  |  |
| 352 | 1.3.8.2 | Castillo K1 | 4d | 2026-07-18 | 2026-07-23 | 340 | 2026-07-18 | 2026-07-23 | 4d | 17d | 0d | Corsac - Castillo K1 | 28,730.91 | 28,730.91 |
| 353 | 1.3.8.3 | Castillo K2 | 4d | 2026-07-20 | 2026-07-24 | 340FS+1d | 2026-07-20 | 2026-07-24 | 4d | 16d | 0d | Corsac - Castillo K2 | 13,836.35 | 13,836.35 |
| 354 | 1.3.8.4 | Castillo K4 | 3d | 2026-07-23 | 2026-07-28 | 352 | 2026-07-23 | 2026-07-28 | 3d | 17d | 1d | Corsac - Castillo K4 | 4,849.94 | 4,849.94 |
| 355 | 1.3.8.5 | Castillo K5 | 3d | 2026-07-23 | 2026-07-28 | 352 | 2026-07-23 | 2026-07-28 | 3d | 17d | 1d | Corsac - Castillo K5 | 7,235.14 | 7,235.14 |
| 356 | 1.3.8.6 | Castillo K6 | 3d | 2026-07-23 | 2026-07-28 | 352 | 2026-07-23 | 2026-07-28 | 3d | 17d | 1d | Corsac - Castillo K6 | 3,264.93 | 3,264.93 |
| 357 | 1.3.8.7 | Refuerzo de muro | 3d | 2026-07-24 | 2026-07-29 | 352, 353 | 2026-07-24 | 2026-07-29 | 3d | 16d | 0d | Corsac - Refuerzo de muro | 14,238.46 | 14,238.46 |
| 358 | 1.3.8.8 | Dala de cerramiento CR-1 | 4d | 2026-07-29 | 2026-08-03 | 354, 355, 356, 357 | 2026-07-29 | 2026-08-03 | 4d | 16d | 0d | Corsac - Dala de cerramiento CR-1 | 25,086.72 | 25,086.72 |
| 359 | 1.3.8.9 | Dala de cerramiento CR-2 | 4d | 2026-07-29 | 2026-08-03 | 354, 355, 356, 357 | 2026-07-29 | 2026-08-03 | 4d | 16d | 0d | Corsac - Dala de cerramiento CR-2 | 18,304.06 | 18,304.06 |
| 360 | 1.3.8.10 | Cadena block dala | 3d | 2026-08-03 | 2026-08-06 | 357, 358, 359 | 2026-08-03 | 2026-08-06 | 3d | 16d | 0d | Corsac - Cadena block dala | 20,409.62 | 20,409.62 |
| 361 | 1.3.8.11 | Muro de ladrillo aparente | 15d | 2026-07-18 | 2026-08-06 | 340 | 2026-07-18 | 2026-08-06 | 15d | 13d | 0d | Corsac - Muro de ladrillo aparente | 38,435.51 | 38,435.51 |
| 362 | 1.3.8.12 | Muro de block planta alta | 14d | 2026-07-20 | 2026-08-06 | 340FS+1d | 2026-07-20 | 2026-08-06 | 14d | 13d | 0d | Corsac - Muro de block planta alta | 51,569.72 | 51,569.72 |
| 363 | 1.3.8.13 | Ramaleo electrico en Muros Planta Alta | 4d | 2026-07-29 | 2026-08-03 | 361SS+8d | 2026-07-29 | 2026-08-03 | 4d | 24d | 3d | Corsac - Ramaleo electrico en Muros Planta Alta | 958.56 | 958.56 |
| 364 | 1.3.9 | **LOSA AZOTEA** | 15d | 2026-08-06 | 2026-08-25 |  | 2026-08-06 | 2026-08-25 | 15d | 13d |  |  | 126,484.85 | 126,484.85 |
| 365 | 1.3.9.1 | Cortalosa CL-1 | 2d | 2026-08-20 | 2026-08-22 | 377 | 2026-08-20 | 2026-08-22 | 2d | 13d | 0d | Corsac - Cortalosa CL-1 | 7,848.02 | 7,848.02 |
| 366 | 1.3.9.2 | Cortalosa CL-2 | 2d | 2026-08-20 | 2026-08-22 | 377 | 2026-08-20 | 2026-08-22 | 2d | 13d | 0d | Corsac - Cortalosa CL-2 | 9,347.38 | 9,347.38 |
| 367 | 1.3.9.3 | Vigueta pretensada V11-30 125 | 5d | 2026-08-06 | 2026-08-12 | 360, 361, 362 | 2026-08-06 | 2026-08-12 | 5d | 16d | 3d | Corsac - Vigueta pretensada V11-30 125 | 2,564.4 | 2,564.4 |
| 368 | 1.3.9.4 | Vigueta pretensada V11-30 185 | 5d | 2026-08-06 | 2026-08-12 | 361, 362 | 2026-08-06 | 2026-08-12 | 5d | 16d | 3d | Corsac - Vigueta pretensada V11-30 185 | 1,710.04 | 1,710.04 |
| 369 | 1.3.9.5 | Vigueta pretensada V11-30 190 | 5d | 2026-08-06 | 2026-08-12 | 361, 362 | 2026-08-06 | 2026-08-12 | 5d | 16d | 3d | Corsac - Vigueta pretensada V11-30 190 | 872.84 | 872.84 |
| 370 | 1.3.9.6 | Vigueta pretensada V11-30 205 | 5d | 2026-08-08 | 2026-08-14 | 361FS+2d, 362FS+2d | 2026-08-08 | 2026-08-14 | 5d | 14d | 1d | Corsac - Vigueta pretensada V11-30 205 | 463.16 | 463.16 |
| 371 | 1.3.9.7 | Vigueta pretensada V11-30 215 | 5d | 2026-08-08 | 2026-08-14 | 361FS+2d, 362FS+2d | 2026-08-08 | 2026-08-14 | 5d | 14d | 1d | Corsac - Vigueta pretensada V11-30 215 | 1,923.92 | 1,923.92 |
| 372 | 1.3.9.8 | Vigueta pretensada V11-30 260 | 5d | 2026-08-10 | 2026-08-17 | 361FS+3d, 362FS+3d | 2026-08-10 | 2026-08-17 | 5d | 13d | 0d | Corsac - Vigueta pretensada V11-30 260 | 1,683.57 | 1,683.57 |
| 373 | 1.3.9.9 | Vigueta pretensada V11-30 285 | 5d | 2026-08-10 | 2026-08-17 | 361FS+3d, 362FS+3d | 2026-08-10 | 2026-08-17 | 5d | 13d | 0d | Corsac - Vigueta pretensada V11-30 285 | 3,634.5 | 3,634.5 |
| 374 | 1.3.9.10 | Vigueta pretensada V11-40 330 | 5d | 2026-08-10 | 2026-08-17 | 361FS+3d, 362 | 2026-08-10 | 2026-08-17 | 5d | 13d | 0d | Corsac - Vigueta pretensada V11-40 330 | 4,115.76 | 4,115.76 |
| 375 | 1.3.9.11 | Vigueta pretensada V11-40 335 | 5d | 2026-08-10 | 2026-08-17 | 361FS+3d, 362 | 2026-08-10 | 2026-08-17 | 5d | 13d | 0d | Corsac - Vigueta pretensada V11-40 335 | 6,948.8 | 6,948.8 |
| 376 | 1.3.9.12 | Vigueta pretensada V11-40 505 | 5d | 2026-08-10 | 2026-08-17 | 361FS+3d, 362 | 2026-08-10 | 2026-08-17 | 5d | 13d | 0d | Corsac - Vigueta pretensada V11-50 505 | 7,983.2 | 7,983.2 |
| 377 | 1.3.9.13 | Bovedilla poliestireno azotea | 3d | 2026-08-17 | 2026-08-20 | 367, 368, 369, 370, 371, 372, 373, 374, 375, 376 | 2026-08-17 | 2026-08-20 | 3d | 13d | 0d | Corsac - Bovedilla poliestireno azotea | 17,107.44 | 17,107.44 |
| 378 | 1.3.9.14 | Malla 66-10/10 losa de compresión | 2d | 2026-08-20 | 2026-08-22 | 377 | 2026-08-20 | 2026-08-22 | 2d | 13d | 0d | Corsac - Malla 66-10/10 losa de compresión | 3,974.1 | 3,974.1 |
| 379 | 1.3.9.15 | Concreto losa de azotea f’c=200 | 1d | 2026-08-22 | 2026-08-24 | 365, 366, 377, 378, 382, 381 | 2026-08-22 | 2026-08-24 | 1d | 13d | 0d | Corsac - Concreto losa de azotea f’c=200 | 27,590.82 | 27,590.82 |
| 380 | 1.3.9.16 | Curado de concreto | 1d | 2026-08-24 | 2026-08-25 | 379 | 2026-08-24 | 2026-08-25 | 1d | 13d | 0d | Corsac - Curado de concreto | 2,488.67 | 2,488.67 |
| 381 | 1.3.9.17 | Cimbra losa de azotea | 5d | 2026-08-06 | 2026-08-12 | 361, 362, 363 | 2026-08-06 | 2026-08-12 | 5d | 21d | 8d | Corsac - Cimbra losa de azotea | 24,031.53 | 24,031.53 |
| 382 | 1.3.9.18 | Ramaleo de poliducto para inst. electrica en azotea | 2d | 2026-08-20 | 2026-08-22 | 377 | 2026-08-20 | 2026-08-22 | 2d | 13d | 0d | Corsac - Ramaleo de poliducto para instalacion electrica en azotea | 2,196.7 | 2,196.7 |

| ID | WBS | Task | Duration | Start | Finish | Predecessors | Baseline start | Baseline finish | Baseline duration | Total slack | Free slack | Resources | Cost | Baseline cost |
| --- | --- | --- | --- | --- | --- | --- | --- | --- | --- | --- | --- | --- | --- | --- |
| 383 | 1.3.10 | **PRETIL Y ACABADOS DE AZOTEA** | 19d | 2026-08-25 | 2026-09-18 |  | 2026-08-25 | 2026-09-18 | 19d | 13d |  |  | 90,820.99 | 90,820.99 |
| 384 | 1.3.10.1 | Castillo K1 | 5d | 2026-08-27 | 2026-09-02 | 386SS+2d | 2026-08-27 | 2026-09-02 | 5d | 13d | 0d | Corsac - Castillo K1 | 4,464.6 | 4,464.6 |
| 385 | 1.3.10.2 | Dala de cerramiento en pretil | 4d | 2026-09-01 | 2026-09-04 | 384FS-2d, 386FS-2d | 2026-09-01 | 2026-09-04 | 4d | 13d | 0d | Corsac - Dala de cerramiento en pretil | 14,239.78 | 14,239.78 |
| 386 | 1.3.10.3 | Muro de ladrillo 7x14x28 | 5d | 2026-08-25 | 2026-08-31 | 380 | 2026-08-25 | 2026-08-31 | 5d | 13d | 0d | Corsac - Muro de ladrillo 7x14x28 | 20,649.03 | 20,649.03 |
| 387 | 1.3.10.4 | Chaflán en azotea | 4d | 2026-09-03 | 2026-09-08 | 384, 386 | 2026-09-03 | 2026-09-08 | 4d | 13d | 0d | Corsac - Chaflán en azotea | 4,296.96 | 4,296.96 |
| 388 | 1.3.10.5 | Diamante de entortado | 4d | 2026-09-03 | 2026-09-08 | 384, 386 | 2026-09-03 | 2026-09-08 | 4d | 13d | 0d | Corsac - Diamante de entortado | 2,318.32 | 2,318.32 |
| 389 | 1.3.10.6 | Aplanado exterior Mortermax fino | 5d | 2026-09-05 | 2026-09-11 | 385, 387FS-2d, 388FS-2d | 2026-09-05 | 2026-09-11 | 5d | 13d | 0d | Corsac - Aplanado exterior Mortermax fino | 5,749.92 | 5,749.92 |
| 390 | 1.3.10.7 | Entortado de Losa | 4d | 2026-09-12 | 2026-09-18 | 391 | 2026-09-12 | 2026-09-18 | 4d | 13d | 0d | Corsac - Entortado en Losa | 36,613.71 | 36,613.71 |
| 391 | 1.3.10.8 | Curado de concreto | 1d | 2026-09-11 | 2026-09-12 | 387, 389 | 2026-09-11 | 2026-09-12 | 1d | 13d | 0d | Corsac - Curado de concreto | 2,488.67 | 2,488.67 |
| 392 | 1.3.11 | **PRIMERA LIMPIEZA DE OBRA** | 4d | 2026-08-25 | 2026-08-29 |  | 2026-08-25 | 2026-08-29 | 4d | 70d |  |  | 7,350.66 | 7,350.66 |
| 393 | 1.3.11.1 | Primera limpieza de obra | 2d | 2026-08-25 | 2026-08-27 | 380 | 2026-08-25 | 2026-08-27 | 2d | 70d | 0d | Corsac - Primera limpieza de obra | 5,509.8 | 5,509.8 |
| 394 | 1.3.11.2 | Primera carga y acarreo de escombro | 2d | 2026-08-27 | 2026-08-29 | 393 | 2026-08-27 | 2026-08-29 | 2d | 70d | 1d | Corsac - Primera carga y acarreo de escombro | 1,840.86 | 1,840.86 |
| 395 | 1.3.12 | **IMPERMEABILIZACION** | 5d | 2026-09-18 | 2026-09-25 |  | 2026-09-18 | 2026-09-25 | 5d | 13d |  |  | 25,050.72 | 25,050.72 |
| 396 | 1.3.12.1 | Impermeabilización de pretil Kover 5 años | 4d | 2026-09-18 | 2026-09-24 | 390 | 2026-09-18 | 2026-09-24 | 4d | 14d | 1d | Corsac - Impermeabilización de pretil Kover 5 años | 3,716.95 | 3,716.95 |
| 397 | 1.3.12.2 | Impermeabilización de losa Kover 5 años | 5d | 2026-09-18 | 2026-09-25 | 390 | 2026-09-18 | 2026-09-25 | 5d | 13d | 0d | Corsac - Impermeabilización de losa Kover 5 años | 21,333.77 | 21,333.77 |
| 398 | 1.3.13 | **ALBAÑILERIA** | 62d | 2026-09-01 | 2026-11-19 |  | 2026-09-01 | 2026-11-19 | 62d | 32d |  |  | 188,894.05 | 188,894.05 |
| 399 | 1.3.13.1 | Lavadero de granito | 4d | 2026-10-15 | 2026-10-20 | 435SS+8d | 2026-10-15 | 2026-10-20 | 4d | 69d |  | Corsac - Lavadero de granito | 2,170.59 | 2,170.59 |
| 400 | 1.3.13.2 | Ranurado y resane general inst. en muros | 3d | 2026-09-23 | 2026-09-26 | 397FS-2d | 2026-09-23 | 2026-09-26 | 3d | 15d | 1d | Corsac - Ranurado y resane general inst. en muros |  |  |
| 401 | 1.3.13.3 | Ranurado y resane eléctrico 1/2 a 3/4 | 3d | 2026-09-23 | 2026-09-26 | 397FS-2d | 2026-09-23 | 2026-09-26 | 3d | 15d | 1d | Corsac - Ranurado y resane eléctrico 1/2" a 3/4" | 9,159.15 | 9,159.15 |
| 402 | 1.3.13.4 | Ranurado y resane hidráulico 1/2 a 1 | 2d | 2026-09-25 | 2026-09-28 | 397 | 2026-09-25 | 2026-09-28 | 2d | 14d | 0d | Corsac - Ranurado y resane hidráulico 1/2" a 1" | 6,332.5 | 6,332.5 |
| 403 | 1.3.13.5 | Resane sanitario tubería 2 | 2d | 2026-09-25 | 2026-09-28 | 397 | 2026-09-25 | 2026-09-28 | 2d | 14d | 0d | Corsac - Resane sanitario tubería 2" | 1,656.86 | 1,656.86 |
| 404 | 1.3.13.6 | Resane sanitario tubería 4 | 2d | 2026-09-25 | 2026-09-28 | 397 | 2026-09-25 | 2026-09-28 | 2d | 14d | 0d | Corsac - Resane sanitario tubería 4" | 261.53 | 261.53 |
| 405 | 1.3.13.7 | Resane minisplit tubería 3 | 2d | 2026-09-25 | 2026-09-28 | 397 | 2026-09-25 | 2026-09-28 | 2d | 14d | 0d | Corsac - Resane minisplit tubería 3" | 1,615.32 | 1,615.32 |
| 406 | 1.3.13.8 | Ramaleo hidráulico exterior CPVC 1 1/4 | 3d | 2026-09-25 | 2026-09-29 | 396, 397 | 2026-09-25 | 2026-09-29 | 3d | 13d | 0d | Corsac - Ramal hidráulico exterior CPVC 1 1/4" | 3,892.35 | 3,892.35 |
| 407 | 1.3.13.9 | Ramaleo hidráulico exterior CPVC 1 | 2d | 2026-09-25 | 2026-09-28 | 406SS | 2026-09-25 | 2026-09-28 | 2d | 13d | 0d | Corsac - Ramal hidráulico exterior CPVC 1" | 103.26 | 103.26 |
| 408 | 1.3.13.10 | Ramaleo hidráulico exterior CPVC 3/4 | 2d | 2026-09-28 | 2026-09-30 | 407 | 2026-09-28 | 2026-09-30 | 2d | 13d | 0d | Corsac - Ramal hidráulico exterior CPVC 3/4" | 2,300.16 | 2,300.16 |
| 409 | 1.3.13.11 | Ramaleo hidráulico exterior CPVC 1/2 | 2d | 2026-09-28 | 2026-09-30 | 407 | 2026-09-28 | 2026-09-30 | 2d | 13d | 0d | Corsac - Ramal hidráulico exterior CPVC 1/2" | 697.01 | 697.01 |
| 410 | 1.3.13.12 | Prueba hidráulica | 1d | 2026-09-30 | 2026-10-01 | 402, 406, 407, 408, 409 | 2026-09-30 | 2026-10-01 | 1d | 13d | 0d | Corsac - Prueba hidrostática ramal hidráulico | 574.99 | 574.99 |
| 411 | 1.3.13.13 | Ramaleo sanitario exterior PVC 4 | 4d | 2026-09-25 | 2026-09-30 | 396, 397 | 2026-09-25 | 2026-09-30 | 4d | 13d | 0d | Corsac - Ramal sanitario exterior PVC 4" | 4,001.07 | 4,001.07 |
| 412 | 1.3.13.14 | Ramaleo sanitario exterior PVC 2 | 3d | 2026-09-26 | 2026-09-30 | 411SS+1d | 2026-09-26 | 2026-09-30 | 3d | 13d | 0d | Corsac - Ramal sanitario exterior PVC 2" | 582.17 | 582.17 |
| 413 | 1.3.13.15 | Prueba sanitaria | 1d | 2026-09-30 | 2026-10-01 | 403, 404, 405, 411, 412 | 2026-09-30 | 2026-10-01 | 1d | 13d | 0d | Corsac - Prueba instalación sanitaria | 574.99 | 574.99 |
| 414 | 1.3.13.16 | Centro de carga muros PB | 4d | 2026-09-29 | 2026-10-03 | 396FS+3d, 397FS+3d | 2026-09-29 | 2026-10-03 | 4d | 15d | 2d | Corsac - Centro de carga eléctrico en muros PB | 5,038.08 | 5,038.08 |
| 415 | 1.3.13.17 | Firme de concreto 8 cm | 4d | 2026-10-01 | 2026-10-06 | 410, 413, 417 | 2026-10-01 | 2026-10-06 | 4d | 63d | 0d | Corsac - Firme de concreto 8 cm f’c=200 | 19,232.1 | 19,232.1 |
| 416 | 1.3.13.18 | Curado de concreto | 1d | 2026-10-06 | 2026-10-07 | 415 | 2026-10-06 | 2026-10-07 | 1d | 63d | 17d | Corsac - Curado con membrana Sika | 961.86 | 961.86 |
| 417 | 1.3.13.19 | Cisterna 2800 L con instalación | 18d | 2026-09-01 | 2026-09-24 | 386, 393, 394 | 2026-09-01 | 2026-09-24 | 18d | 69d | 0d | Corsac - Nicho para cisterna 2.72x2.72x1.47 m | 34,476.09 | 34,476.09 |
| 418 | 1.3.13.20 | Banqueta y huellas de concreto | 8d | 2026-10-08 | 2026-10-19 | 410, 413, 460, 528FS-2d, 537, 529 | 2026-10-08 | 2026-10-19 | 8d | 46d | 0d | Corsac - Banqueta y huellas de concreto 10 cm | 7,984.25 | 7,984.25 |
| 419 | 1.3.13.21 | Curado de concreto | 1d | 2026-10-19 | 2026-10-20 | 418 | 2026-10-19 | 2026-10-20 | 1d | 46d | 0d | Corsac - Curado de concreto | 399.32 | 399.32 |
| 420 | 1.3.13.22 | Número oficial | 1d | 2026-11-18 | 2026-11-19 | 428, 429 | 2026-11-18 | 2026-11-19 | 1d | 46d |  | Corsac - Número oficial | 742.91 | 742.91 |
| 421 | 1.3.13.23 | Detallado de rodapié exterior | 4d | 2026-10-03 | 2026-10-08 | 426 | 2026-10-03 | 2026-10-08 | 4d | 78d |  | Corsac - Detalle rodapié exterior acabado fino | 9,692.98 | 9,692.98 |
| 422 | 1.3.13.24 | Detalle de losas y volados acabado fino | 4d | 2026-09-25 | 2026-09-30 | 396, 397 | 2026-09-25 | 2026-09-30 | 4d | 17d | 4d | Corsac - Detalle de losas y volados acabado fino | 29,626.57 | 29,626.57 |
| 423 | 1.3.13.25 | Detalle fino en muros interiores | 5d | 2026-09-28 | 2026-10-03 | 400, 401, 402, 403, 404, 405 | 2026-09-28 | 2026-10-03 | 5d | 14d | 1d | Corsac - Detalle fino en muros interiores | 33,171.08 | 33,171.08 |
| 424 | 1.3.13.26 | Jardín interior bajo escalera con pozo de absorción | 12d | 2026-09-25 | 2026-10-09 | 403FS-2d, 404FS-2d, 405FS-2d | 2026-09-25 | 2026-10-09 | 12d | 17d | 0d | Corsac - Jardín interior bajo escalera con pozo de absorción | 13,646.86 | 13,646.86 |

| ID | WBS | Task | Duration | Start | Finish | Predecessors | Baseline start | Baseline finish | Baseline duration | Total slack | Free slack | Resources | Cost | Baseline cost |
| --- | --- | --- | --- | --- | --- | --- | --- | --- | --- | --- | --- | --- | --- | --- |
| 425 | 1.3.14 | **ACABADOS EN FACHADA A** | 47d | 2026-09-18 | 2026-11-18 |  | 2026-09-18 | 2026-11-18 | 47d | 46d |  |  | 166,532.97 | 166,532.97 |
| 426 | 1.3.14.1 | Aplanado grueso fachada | 12d | 2026-09-18 | 2026-10-03 | 390 | 2026-09-18 | 2026-10-03 | 12d | 52d | 0d | Corsac - Aplanado grueso fachada | 64,808.09 | 64,808.09 |
| 427 | 1.3.14.2 | Aplanado fino estuco fachada | 10d | 2026-09-28 | 2026-10-09 | 426SS+7d | 2026-09-28 | 2026-10-09 | 10d | 52d | 0d | Corsac - Aplanado fino estuco fachada | 38,790.66 | 38,790.66 |
| 428 | 1.3.14.3 | Pintura acrílica 1-0102P | 8d | 2026-11-04 | 2026-11-13 | 416FS+5d, 419FS+12d, 430, 433 | 2026-11-04 | 2026-11-13 | 8d | 48d | 2d | Corsac - Pintura acrílica 1-0102P | 22,861.3 | 22,861.3 |
| 429 | 1.3.14.4 | Pintura acrílica 1-1404D | 10d | 2026-11-04 | 2026-11-18 | 416FS+5d, 419FS+12d, 430, 433 | 2026-11-04 | 2026-11-18 | 10d | 46d | 0d | Corsac - Pintura acrílica 1-1404D | 3,311.24 | 3,311.24 |
| 430 | 1.3.14.5 | Cantera 40x60cm | 14d | 2026-10-09 | 2026-10-27 | 426, 427 | 2026-10-09 | 2026-10-27 | 14d | 52d | 6d | Corsac - Cantera 40x60cm | 17,500.99 | 17,500.99 |
| 431 | 1.3.14.6 | Lambrin de permabase 1 cara | 3d | 2026-10-03 | 2026-10-07 | 426 | 2026-10-03 | 2026-10-07 | 3d | 59d | 0d | Corsac - Lambrin de permabase 1 cara | 12,951.73 | 12,951.73 |
| 432 | 1.3.14.7 | Enchapado de Permabase | 4d | 2026-10-07 | 2026-10-13 | 431 | 2026-10-07 | 2026-10-13 | 4d | 59d | 0d | Corsac - Enchapado de Permabase | 3,589.26 | 3,589.26 |
| 433 | 1.3.14.8 | Cubierta de Permabase | 5d | 2026-10-13 | 2026-10-19 | 432 | 2026-10-13 | 2026-10-19 | 5d | 59d | 13d | Corsac - Cubierta de Permabase | 2,719.7 | 2,719.7 |
| 434 | 1.3.15 | **APLANADOS Y PINTURA** | 63d | 2026-09-25 | 2026-12-14 |  | 2026-09-25 | 2026-12-14 | 63d | 15d |  |  | 211,896.68 | 211,896.68 |
| 435 | 1.3.15.1 | Yeso pulido en muros | 14d | 2026-10-05 | 2026-10-22 | 400, 401, 414FS-1d, 422, 423, 424FS-8d, 440FS-4d, 506FS-2d, 509, 510, 511, 512, 513FS-1d, 514FS-1d, 515FS-1d, 516FS-1d, 517FS-2d, 518FS-2d, 519FS-3d, 522FS-1d, 523FS-5d, 524FS-5d, 525FS-6d, 526FS-2d, 527FS-7d, 436 | 2026-10-05 | 2026-10-22 | 14d | 13d | 0d | Corsac - Yeso pulido en muros | 101,452.75 | 101,452.75 |
| 436 | 1.3.15.2 | Aplanado en muros enjarre grueso | 5d | 2026-09-25 | 2026-10-01 | 396, 397 | 2026-09-25 | 2026-10-01 | 5d | 16d | 3d | Corsac - Aplanado en muros enjarre grueso | 5,107.77 | 5,107.77 |
| 437 | 1.3.15.3 | Pintura vinílica OR-W13 SHOELACE | 13d | 2026-11-27 | 2026-12-14 | 444FS-2d, 445FS-2d, 458FS-2d, 465, 466, 467, 468, 469, 470, 476, 477, 478, 479, 540, 541, 543, 544, 473, 474, 471, 472, 480 | 2026-11-27 | 2026-12-14 | 13d | 13d | 0d | Corsac - Pintura vinílica OR-W13 SHOELACE | 36,924.78 | 36,924.78 |
| 438 | 1.3.15.4 | Pintura vinílica PPUI5-13 Creamy M. | 10d | 2026-11-21 | 2026-12-03 | 444, 445, 458, 488, 489, 484, 482 | 2026-11-21 | 2026-12-03 | 10d | 21d | 8d | Corsac - Pintura vinílica PPUI5-13 Creamy M. | 6,597.05 | 6,597.05 |
| 439 | 1.3.15.5 | Pintura vinílica MD-06 Nano White | 8d | 2026-11-21 | 2026-12-01 | 444, 445, 458, 488, 489, 484, 482 | 2026-11-21 | 2026-12-01 | 8d | 23d | 10d | Corsac - Pintura vinílica MD-06 Nano White | 15,889.99 | 15,889.99 |
| 440 | 1.3.15.6 | Yeso pulido en plafones | 10d | 2026-09-25 | 2026-10-07 | 396, 397 | 2026-09-25 | 2026-10-07 | 10d | 15d | 2d | Corsac - Yeso pulido en plafones | 35,433.1 | 35,433.1 |
| 441 | 1.3.15.7 | Perfilado de puertas y ventanas | 4d | 2026-10-09 | 2026-10-15 | 435SS+4d | 2026-10-09 | 2026-10-15 | 4d | 73d |  | Corsac - Perfilado de puertas y ventanas | 10,491.24 | 10,491.24 |
| 442 | 1.3.16 | **PISOS Y AZULEJOS** | 24d | 2026-10-16 | 2026-11-17 |  | 2026-10-16 | 2026-11-17 | 24d | 13d |  |  | 128,336.19 | 128,336.19 |
| 443 | 1.3.16.1 | **AREA SOCIAL** | 15d | 2026-10-20 | 2026-11-07 |  | 2026-10-20 | 2026-11-07 | 15d | 13d |  |  | 79,508.29 | 79,508.29 |
| 444 | 1.3.16.1.1 | Piso Adhara 44X89 | 14d | 2026-10-20 | 2026-11-06 | 435FS-2d, 531, 530, 447FS-5d | 2026-10-20 | 2026-11-06 | 14d | 13d | 0d | Corsac - Piso Adhara 44X89 | 66,315.99 | 66,315.99 |
| 445 | 1.3.16.1.2 | Zoclo Adhara 44X89 | 5d | 2026-11-02 | 2026-11-07 | 444FS-4d | 2026-11-02 | 2026-11-07 | 5d | 30d | 10d | Corsac - Zoclo Adhara 44X89 | 13,192.3 | 13,192.3 |
| 446 | 1.3.16.2 | **RECAMARAS** | 8d | 2026-10-16 | 2026-10-26 |  | 2026-10-16 | 2026-10-26 | 8d | 13d |  |  | 11,266.24 | 11,266.24 |
| 447 | 1.3.16.2.1 | Acabado aparente de pisos - pulido | 8d | 2026-10-16 | 2026-10-26 | 435FS-5d | 2026-10-16 | 2026-10-26 | 8d | 13d | 0d | Corsac - Acabado aparente de pisos - pulido | 11,266.24 | 11,266.24 |
| 448 | 1.3.16.3 | **BAÑOS** | 17d | 2026-10-17 | 2026-11-07 |  | 2026-10-17 | 2026-11-07 | 17d | 24d |  |  | 34,400.62 | 34,400.62 |
| 449 | 1.3.16.3.1 | Azulejo Mod. Ornamenta 60x30 | 5d | 2026-10-27 | 2026-11-02 | 450FS-1d, 520, 521, 531 | 2026-10-27 | 2026-11-02 | 5d | 24d | 0d | Corsac - Azulejo Mod. Ornamenta 60x30 | 15,685.85 | 15,685.85 |
| 450 | 1.3.16.3.2 | Impermeabilización en regadera | 2d | 2026-10-26 | 2026-10-27 | 435, 454 | 2026-10-26 | 2026-10-27 | 2d | 24d | 0d | Corsac - Impermeabilización en regadera | 844.6 | 844.6 |
| 451 | 1.3.16.3.3 | Piso Mod. Valparaiso 20x20 | 4d | 2026-11-02 | 2026-11-06 | 449 | 2026-11-02 | 2026-11-06 | 4d | 24d | 0d | Corsac - Piso Mod. Valparaiso 20x20 | 2,869.85 | 2,869.85 |
| 452 | 1.3.16.3.4 | Zoclo Adhara 44X89 | 2d | 2026-11-05 | 2026-11-07 | 451FS-1d | 2026-11-05 | 2026-11-07 | 2d | 54d |  | Corsac - Zoclo Adhara 44X89 | 3,126.61 | 3,126.61 |
| 453 | 1.3.16.3.5 | Piso Adhara 44X89 | 3d | 2026-11-02 | 2026-11-05 | 449 | 2026-11-02 | 2026-11-05 | 3d | 56d |  | Corsac - Piso Adhara 44X89 | 6,617.83 | 6,617.83 |
| 454 | 1.3.16.3.6 | Fabricacion de nicho decorativo en baños | 6d | 2026-10-17 | 2026-10-24 | 435FS-4d | 2026-10-17 | 2026-10-24 | 6d | 24d | 0d | Corsac - Fabricacion de nicho decorativo en baños | 2,474.74 | 2,474.74 |
| 455 | 1.3.16.3.7 | Sardinel en regadera | 4d | 2026-11-02 | 2026-11-06 | 449 | 2026-11-02 | 2026-11-06 | 4d | 55d |  | Corsac - Sardinel en regadera | 2,781.14 | 2,781.14 |

| ID | WBS | Task | Duration | Start | Finish | Predecessors | Baseline start | Baseline finish | Baseline duration | Total slack | Free slack | Resources | Cost | Baseline cost |
| --- | --- | --- | --- | --- | --- | --- | --- | --- | --- | --- | --- | --- | --- | --- |
| 456 | 1.3.16.4 | **ESCALERA** | 9d | 2026-11-04 | 2026-11-17 |  | 2026-11-04 | 2026-11-17 | 9d | 13d |  |  | 3,161.04 | 3,161.04 |
| 457 | 1.3.16.4.1 | Piso Adhara 44X89 | 7d | 2026-11-04 | 2026-11-12 | 323, 435, 444FS-2d | 2026-11-04 | 2026-11-12 | 7d | 13d | 0d | Corsac - Piso Adhara 44X89 | 3,161.04 | 3,161.04 |
| 458 | 1.3.16.4.2 | Zoclo Adhara 44X89 | 4d | 2026-11-10 | 2026-11-17 | 457FS-2d | 2026-11-10 | 2026-11-17 | 4d | 13d | 0d | Corsac - Zoclo Adhara 44X89 |  |  |
| 459 | 1.3.17 | **EXTERIOR** | 3d | 2026-10-01 | 2026-10-05 |  | 2026-10-01 | 2026-10-05 | 3d | 18d |  |  | 883.4 | 883.4 |
| 460 | 1.3.17.1 | Rastrilleo, afine y nivelado de tierra | 3d | 2026-10-01 | 2026-10-05 | 410, 413 | 2026-10-01 | 2026-10-05 | 3d | 18d | 0d | Corsac - Rastrilleo, afine y nivelado de tierra | 883.4 | 883.4 |
| 461 | 1.3.18 | **SEGUNDA LIMPIEZA DE OBRA** | 4d | 2026-11-17 | 2026-11-21 |  | 2026-11-17 | 2026-11-21 | 4d | 37d |  |  | 7,349.8 | 7,349.8 |
| 462 | 1.3.18.1 | Segunda limpieza de obra | 2d | 2026-11-17 | 2026-11-19 | 457, 458 | 2026-11-17 | 2026-11-19 | 2d | 37d | 0d | Corsac - Segunda limpieza de obra | 5,509.8 | 5,509.8 |
| 463 | 1.3.18.2 | Segunda carga y acarreo de escombro | 2d | 2026-11-19 | 2026-11-21 | 462 | 2026-11-19 | 2026-11-21 | 2d | 37d | 24d | Corsac - Segunda carga y acarreo de escombro | 1,840 | 1,840 |
| 464 | 1.3.19 | **CANCELERIA PUERTAS Y VENTANAS DE ALUMINIO** | 17d | 2026-11-04 | 2026-11-26 |  | 2026-11-04 | 2026-11-26 | 17d | 14d |  |  | 154,174.9 | 154,174.9 |
| 465 | 1.3.19.1 | Fijo medidas 0.30x4.90m | 7d | 2026-11-06 | 2026-11-17 | 435, 444 | 2026-11-06 | 2026-11-17 | 7d | 22d | 9d | Corsac - Fijo medidas 0.30x4.90m | 21,475.95 | 21,475.95 |
| 466 | 1.3.19.2 | Ventana Corrediza 1.80x1.60m | 4d | 2026-11-04 | 2026-11-09 | 435FS+10d | 2026-11-04 | 2026-11-09 | 4d | 27d | 14d | Corsac - Ventana Corrediza 1.80x1.60m | 13,840.06 | 13,840.06 |
| 467 | 1.3.19.3 | Ventana Corrediza 0.60x0.40m | 4d | 2026-11-06 | 2026-11-11 | 435FS+12d | 2026-11-06 | 2026-11-11 | 4d | 25d | 12d | Corsac - Ventana Corrediza 0.60x0.40m | 1,145.38 | 1,145.38 |
| 468 | 1.3.19.4 | Ventana Corrediza 1.54x0.50m | 4d | 2026-11-06 | 2026-11-11 | 435FS+12d | 2026-11-06 | 2026-11-11 | 4d | 25d | 12d | Corsac - Ventana Corrediza 1.54x0.50m | 3,817.95 | 3,817.95 |
| 469 | 1.3.19.5 | Fijo medidas 1.40x2.50m | 4d | 2026-11-10 | 2026-11-17 | 435FS+10d, 444FS+3d | 2026-11-10 | 2026-11-17 | 4d | 16d | 0d | Corsac - Fijo medidas 1.40x2.50m | 16,703.52 | 16,703.52 |
| 470 | 1.3.19.6 | Ventana Corrediza 1.80x1.50m | 4d | 2026-11-12 | 2026-11-19 | 435FS+7d, 444FS+2d, 457 | 2026-11-12 | 2026-11-19 | 4d | 14d | 0d | Corsac - Ventana Corrediza 1.80x1.50m | 12,885.57 | 12,885.57 |
| 471 | 1.3.19.7 | Ventana Corrediza 1.40x1.60m | 4d | 2026-11-12 | 2026-11-19 | 435, 444, 457 | 2026-11-12 | 2026-11-19 | 4d | 14d | 0d | Corsac - Ventana Corrediza 1.40x1.60m | 32,070.75 | 32,070.75 |
| 472 | 1.3.19.8 | Ventana Corrediza 0.95x0.40m | 4d | 2026-11-12 | 2026-11-19 | 435, 444, 457 | 2026-11-12 | 2026-11-19 | 4d | 14d | 0d | Corsac - Ventana Corrediza 0.95x0.40m | 7,254.1 | 7,254.1 |
| 473 | 1.3.19.9 | Puerta corrediza 3.85x2.10m | 6d | 2026-11-17 | 2026-11-24 | 469 | 2026-11-17 | 2026-11-24 | 6d | 16d | 3d | Corsac - Puerta corrediza 3.85x2.10m | 38,656.71 | 38,656.71 |
| 474 | 1.3.19.10 | Barandal de Cristal Templado | 6d | 2026-11-19 | 2026-11-26 | 470, 471, 472 | 2026-11-19 | 2026-11-26 | 6d | 14d | 1d | Corsac - Barandal de Cristal Templado | 6,324.91 | 6,324.91 |
| 475 | 1.3.20 | **CARPINTERIA, PUERTAS EXTERIORES E INTERIORES** | 9d | 2026-11-17 | 2026-11-27 |  | 2026-11-17 | 2026-11-27 | 9d | 13d |  |  | 49,448.68 | 49,448.68 |
| 476 | 1.3.20.1 | Puerta P-01 de seguridad | 5d | 2026-11-17 | 2026-11-23 | 458 | 2026-11-17 | 2026-11-23 | 5d | 17d | 4d | Corsac - Puerta P-01 de seguridad | 15,449.35 | 15,449.35 |
| 477 | 1.3.20.2 | Puerta P-01 interior | 8d | 2026-11-17 | 2026-11-26 | 458 | 2026-11-17 | 2026-11-26 | 8d | 14d | 1d | Corsac - Puerta P-01 interior | 3,869.74 | 3,869.74 |
| 478 | 1.3.20.3 | Puerta P-02 interior | 8d | 2026-11-17 | 2026-11-26 | 458 | 2026-11-17 | 2026-11-26 | 8d | 14d | 1d | Corsac - Puerta P-02 interior | 14,719.8 | 14,719.8 |
| 479 | 1.3.20.4 | Puerta P-03 interior | 4d | 2026-11-23 | 2026-11-27 | 458FS+5d | 2026-11-23 | 2026-11-27 | 4d | 13d | 0d | Corsac - Puerta P-03 interior | 7,359.9 | 7,359.9 |
| 480 | 1.3.20.5 | Puerta P-04 interior | 4d | 2026-11-23 | 2026-11-27 | 458FS+5d | 2026-11-23 | 2026-11-27 | 4d | 13d | 0d | Corsac - Puerta P-04 interior | 8,049.89 | 8,049.89 |

| ID | WBS | Task | Duration | Start | Finish | Predecessors | Baseline start | Baseline finish | Baseline duration | Total slack | Free slack | Resources | Cost | Baseline cost |
| --- | --- | --- | --- | --- | --- | --- | --- | --- | --- | --- | --- | --- | --- | --- |
| 481 | 1.3.21 | **VOLADOS, BARANDAL Y ESCALERA** | 33d | 2026-10-09 | 2026-11-21 |  | 2026-10-09 | 2026-11-21 | 33d | 21d |  |  | 108,723.59 | 108,723.59 |
| 482 | 1.3.21.1 | Barandal de Herreria en escalera | 4d | 2026-10-28 | 2026-11-02 | 483FS-4d | 2026-10-28 | 2026-11-02 | 4d | 36d | 15d | Corsac - Barandal de Herreria en escalera | 30,552.76 | 30,552.76 |
| 483 | 1.3.21.2 | Escalera de herreria | 18d | 2026-10-09 | 2026-11-02 | 424 | 2026-10-09 | 2026-11-02 | 18d | 21d | 0d | Corsac - Escalera de herreria | 38,702.99 | 38,702.99 |
| 484 | 1.3.21.3 | Techumbre en acceso Principal | 14d | 2026-10-27 | 2026-11-12 | 483FS-5d | 2026-10-27 | 2026-11-12 | 14d | 27d | 6d | Corsac - Techumbre en acceso Principal | 18,629.74 | 18,629.74 |
| 485 | 1.3.21.4 | Techumbre en 1.80x0.50m | 7d | 2026-10-27 | 2026-11-04 | 483FS-5d | 2026-10-27 | 2026-11-04 | 7d | 21d | 0d | Corsac - Techumbre en 1.80x0.50m | 9,290.03 | 9,290.03 |
| 486 | 1.3.21.5 | Techumbre en 1.40x0.50m | 7d | 2026-11-04 | 2026-11-12 | 485 | 2026-11-04 | 2026-11-12 | 7d | 21d | 0d | Corsac - Techumbre en 1.40x0.50m | 6,899.9 | 6,899.9 |
| 487 | 1.3.21.6 | Imper con manto prefabricado | 5d | 2026-11-07 | 2026-11-13 | 485, 486FS-4d | 2026-11-07 | 2026-11-13 | 5d | 21d | 0d | Corsac - Imper con manto prefabricado | 748.28 | 748.28 |
| 488 | 1.3.21.7 | Plafon hoja tablaroca std | 5d | 2026-11-13 | 2026-11-21 | 487 | 2026-11-13 | 2026-11-21 | 5d | 21d | 0d | Corsac - Plafon hoja tablaroca std | 1,519.88 | 1,519.88 |
| 489 | 1.3.21.8 | Acabado Woodstock en parte inf. Cubierta | 5d | 2026-11-13 | 2026-11-21 | 487 | 2026-11-13 | 2026-11-21 | 5d | 21d | 0d | Corsac - Acabado Woodstock en parte inf. Cubierta | 2,380.01 | 2,380.01 |
| 490 | 1.3.22 | **INSTALACION ELECTRICA** | 16d | 2026-10-17 | 2026-11-06 |  | 2026-10-17 | 2026-11-06 | 16d | 42d |  |  | 104,124.45 | 104,124.45 |
| 491 | 1.3.22.1 | Alimentación eléctrica base a centro de carga | 5d | 2026-10-22 | 2026-10-28 | 414, 435 | 2026-10-22 | 2026-10-28 | 5d | 46d | 0d | Corsac - Instalación eléctrica base a centro de carga | 12,127.73 | 12,127.73 |
| 492 | 1.3.22.2 | Interruptor termomagnético 1x20 A | 1d | 2026-10-29 | 2026-10-29 | 491 | 2026-10-29 | 2026-10-29 | 1d | 46d | 4d | Corsac - Interruptor termomagnético 1x20 | 3,363.66 | 3,363.66 |
| 493 | 1.3.22.3 | Interruptor termomagnético 2x20 A | 1d | 2026-10-29 | 2026-10-29 | 491 | 2026-10-29 | 2026-10-29 | 1d | 46d | 4d | Corsac - Interruptor termomagnético 2x20 | 1,950.38 | 1,950.38 |
| 494 | 1.3.22.4 | Salida para apagador 3 vías | 4d | 2026-10-17 | 2026-10-22 | 396, 435FS-4d | 2026-10-17 | 2026-10-22 | 4d | 42d | 0d | Corsac - Salida apagador 3 vías | 6,835.52 | 6,835.52 |
| 495 | 1.3.22.5 | Salida para apagador doble | 3d | 2026-10-22 | 2026-10-26 | 494 | 2026-10-22 | 2026-10-26 | 3d | 44d | 0d | Corsac - Salida apagador doble | 4,973.84 | 4,973.84 |
| 496 | 1.3.22.6 | Salida para apagador sencillo | 3d | 2026-10-22 | 2026-10-26 | 494 | 2026-10-22 | 2026-10-26 | 3d | 44d | 0d | Corsac - Salida apagador sencillo | 7,460.76 | 7,460.76 |
| 497 | 1.3.22.7 | Salida de alumbrado en losa | 5d | 2026-10-22 | 2026-10-28 | 494 | 2026-10-22 | 2026-10-28 | 5d | 42d | 0d | Corsac - Salida alumbrado en losa | 27,397.71 | 27,397.71 |
| 498 | 1.3.22.8 | Salida para contacto exterior doble | 2d | 2026-10-22 | 2026-10-24 | 494 | 2026-10-22 | 2026-10-24 | 2d | 45d | 3d | Corsac - Salida contacto exterior doble | 3,461.84 | 3,461.84 |
| 499 | 1.3.22.9 | Salida para contacto 220 V | 3d | 2026-10-26 | 2026-10-28 | 494FS+2d | 2026-10-26 | 2026-10-28 | 3d | 42d | 0d | Corsac - Salida contacto 220V exterior | 3,911.4 | 3,911.4 |
| 500 | 1.3.22.10 | Salida para contacto doble | 5d | 2026-10-26 | 2026-10-30 | 494FS+2d | 2026-10-26 | 2026-10-30 | 5d | 45d | 3d | Corsac - Salida contacto doble | 20,762.55 | 20,762.55 |
| 501 | 1.3.22.11 | Salida para contacto doble área húmeda | 2d | 2026-10-29 | 2026-10-30 | 498, 499 | 2026-10-29 | 2026-10-30 | 2d | 45d | 3d | Corsac - Salida contacto área húmeda | 2,863.8 | 2,863.8 |
| 502 | 1.3.22.12 | Salida TV / telefonía / intercom | 4d | 2026-10-29 | 2026-11-03 | 498, 499 | 2026-10-29 | 2026-11-03 | 4d | 43d | 1d | Corsac - Salida TV / telefonía / intercom | 3,432.1 | 3,432.1 |
| 503 | 1.3.22.13 | Extractor 4 baño | 5d | 2026-10-29 | 2026-11-04 | 498, 499 | 2026-10-29 | 2026-11-04 | 5d | 42d | 0d | Corsac - Extractor 4” baño | 1,908.96 | 1,908.96 |
| 504 | 1.3.22.14 | Prueba eléctrica | 2d | 2026-11-04 | 2026-11-06 | 491, 492, 493, 494, 495, 496, 497, 498, 499, 500, 501, 502, 503, 557, 558, 564, 559, 560, 562, 563, 566, 568 | 2026-11-04 | 2026-11-06 | 2d | 42d | 29d | Corsac - Prueba eléctrica | 3,674.2 | 3,674.2 |

| ID | WBS | Task | Duration | Start | Finish | Predecessors | Baseline start | Baseline finish | Baseline duration | Total slack | Free slack | Resources | Cost | Baseline cost |
| --- | --- | --- | --- | --- | --- | --- | --- | --- | --- | --- | --- | --- | --- | --- |
| 505 | 1.3.23 | **INSTALACIÓN HIDRO-SANITARIA** | 11d | 2026-10-01 | 2026-10-15 |  | 2026-10-01 | 2026-10-15 | 11d | 13d |  |  | 60,690.93 | 60,690.93 |
| 506 | 1.3.23.1 | Tubería condensados PVC 1 | 5d | 2026-10-01 | 2026-10-07 | 410 | 2026-10-01 | 2026-10-07 | 5d | 13d | 0d | Corsac - Tubería condensados PVC 1" | 5,970.02 | 5,970.02 |
| 507 | 1.3.23.2 | Tubería sanitaria PVC 4 | 5d | 2026-10-01 | 2026-10-07 | 413 | 2026-10-01 | 2026-10-07 | 5d | 21d | 0d | Corsac - Tubería sanitaria PVC 4" | 3,607.47 | 3,607.47 |
| 508 | 1.3.23.3 | Coladera H-444 | 1d | 2026-10-07 | 2026-10-08 | 507 | 2026-10-07 | 2026-10-08 | 1d | 21d | 4d | Corsac - Coladera H-444 | 7,359.88 | 7,359.88 |
| 509 | 1.3.23.4 | Caja PVC para lavadora | 3d | 2026-10-01 | 2026-10-05 | 410 | 2026-10-01 | 2026-10-05 | 3d | 13d | 0d | Corsac - Caja PVC lavadora | 1,322.48 | 1,322.48 |
| 510 | 1.3.23.5 | Salida para secadora PVC 4 | 3d | 2026-10-01 | 2026-10-05 | 413 | 2026-10-01 | 2026-10-05 | 3d | 13d | 0d | Corsac - Salida secadora PVC 4" | 786.65 | 786.65 |
| 511 | 1.3.23.6 | Salida hidráulica para boiler | 2d | 2026-10-01 | 2026-10-03 | 410 | 2026-10-01 | 2026-10-03 | 2d | 14d | 1d | Corsac - Salida hidráulica boiler | 1,545.82 | 1,545.82 |
| 512 | 1.3.23.7 | Salida hidráulica para llave de jardín | 3d | 2026-10-01 | 2026-10-05 | 410 | 2026-10-01 | 2026-10-05 | 3d | 13d | 0d | Corsac - Salida llave de jardín | 431.48 | 431.48 |
| 513 | 1.3.23.8 | Salida hidráulica para lavabo | 4d | 2026-10-01 | 2026-10-06 | 410 | 2026-10-01 | 2026-10-06 | 4d | 13d | 0d | Corsac - Salida hidráulica lavabo | 4,637.46 | 4,637.46 |
| 514 | 1.3.23.9 | Salida hidráulica para purificación | 4d | 2026-10-01 | 2026-10-06 | 410 | 2026-10-01 | 2026-10-06 | 4d | 13d | 0d | Corsac - Salida hidráulica purificador |  |  |
| 515 | 1.3.23.10 | Salida sanitaria para lavabo | 2d | 2026-10-03 | 2026-10-06 | 410FS+2d | 2026-10-03 | 2026-10-06 | 2d | 13d | 0d | Corsac - Salida sanitaria lavabo | 1,865.46 | 1,865.46 |
| 516 | 1.3.23.11 | Salida hidráulica para lavadero | 2d | 2026-10-03 | 2026-10-06 | 410FS+2d | 2026-10-03 | 2026-10-06 | 2d | 13d | 0d | Corsac - Salida hidráulica lavadero | 711.4 | 711.4 |
| 517 | 1.3.23.12 | Salida sanitaria para lavadero | 2d | 2026-10-05 | 2026-10-07 | 410FS+3d | 2026-10-05 | 2026-10-07 | 2d | 13d | 0d | Corsac - Salida sanitaria lavadero | 564.32 | 564.32 |
| 518 | 1.3.23.13 | Salida hidráulica para lavadora | 2d | 2026-10-05 | 2026-10-07 | 410FS+3d | 2026-10-05 | 2026-10-07 | 2d | 13d | 0d | Corsac - Salida hidráulica lavadora | 1,422.8 | 1,422.8 |
| 519 | 1.3.23.14 | Salida sanitaria para lavadora | 2d | 2026-10-06 | 2026-10-08 | 413FS+4d | 2026-10-06 | 2026-10-08 | 2d | 13d | 0d | Corsac - Salida sanitaria lavadora 2" | 564.32 | 564.32 |
| 520 | 1.3.23.15 | Salida hidráulica para regadera | 5d | 2026-10-06 | 2026-10-13 | 410FS+4d | 2026-10-06 | 2026-10-13 | 5d | 18d | 0d | Corsac - Salida hidráulica regadera | 2,845.6 | 2,845.6 |
| 521 | 1.3.23.16 | Salida sanitaria para regadera | 4d | 2026-10-06 | 2026-10-12 | 413FS+4d | 2026-10-06 | 2026-10-12 | 4d | 19d | 2d | Corsac - Salida sanitaria regadera 2" | 1,185 | 1,185 |
| 522 | 1.3.23.17 | Salida hidráulica para WC | 2d | 2026-10-03 | 2026-10-06 | 413FS+2d | 2026-10-03 | 2026-10-06 | 2d | 13d | 0d | Corsac - Salida hidráulica WC | 1,765.02 | 1,765.02 |
| 523 | 1.3.23.18 | Salida sanitaria para WC | 4d | 2026-10-06 | 2026-10-12 | 413FS+4d | 2026-10-06 | 2026-10-12 | 4d | 13d | 0d | Corsac - Salida sanitaria WC 4" | 2,271.96 | 2,271.96 |
| 524 | 1.3.23.19 | Salida hidráulica para zinc | 4d | 2026-10-06 | 2026-10-12 | 413FS+4d | 2026-10-06 | 2026-10-12 | 4d | 13d | 0d | Corsac - Salida hidráulica zinc | 1,176.68 | 1,176.68 |
| 525 | 1.3.23.20 | Salida sanitaria para zinc | 3d | 2026-10-08 | 2026-10-13 | 413FS+6d | 2026-10-08 | 2026-10-13 | 3d | 13d | 0d | Corsac - Salida sanitaria zinc | 592.5 | 592.5 |
| 526 | 1.3.23.21 | Tubo para ventila de baño 2 | 5d | 2026-10-01 | 2026-10-07 | 506SS | 2026-10-01 | 2026-10-07 | 5d | 13d | 0d | Corsac - Ventila baño PVC 2" | 4,417.83 | 4,417.83 |
| 527 | 1.3.23.22 | Tubo para minisplit PVC 3 | 5d | 2026-10-07 | 2026-10-14 | 526 | 2026-10-07 | 2026-10-14 | 5d | 13d | 0d | Corsac - Paso minisplit PVC 3" | 2,656.08 | 2,656.08 |
| 528 | 1.3.23.23 | Cuadro de medición | 5d | 2026-10-05 | 2026-10-12 | 460 | 2026-10-05 | 2026-10-12 | 5d | 18d | 0d | Corsac - Cuadro de medición columpio | 5,226.34 | 5,226.34 |
| 529 | 1.3.23.24 | Pozo de absorción 0.50x0.50x0.50 | 3d | 2026-10-05 | 2026-10-08 | 460 | 2026-10-05 | 2026-10-08 | 3d | 21d | 0d | Corsac - Pozo de absorción 0.50x0.50x0.50 | 1,306.58 | 1,306.58 |
| 530 | 1.3.23.25 | Prueba sanitaria final | 1d | 2026-10-14 | 2026-10-15 | 506, 507, 508, 510, 515, 517, 519, 521, 523, 526, 527 | 2026-10-14 | 2026-10-15 | 1d | 17d | 4d | Corsac - Prueba sanitaria final | 287.5 | 287.5 |
| 531 | 1.3.23.26 | Prueba hidrostática final | 1d | 2026-10-13 | 2026-10-14 | 511, 512, 513, 514, 516, 518, 520, 522, 524, 528, 529, 534, 535, 533, 532 | 2026-10-13 | 2026-10-14 | 1d | 18d | 5d | Corsac - Prueba hidrostática final | 287.5 | 287.5 |
| 532 | 1.3.23.27 | Salida válvula control 19 mm | 1d | 2026-10-12 | 2026-10-13 | 528 | 2026-10-12 | 2026-10-13 | 1d | 18d | 0d | Corsac - Salida válvula control 19 mm | 2,157.4 | 2,157.4 |
| 533 | 1.3.23.28 | Salida válvula control 13 mm | 1d | 2026-10-12 | 2026-10-13 | 528 | 2026-10-12 | 2026-10-13 | 1d | 18d | 0d | Corsac - Salida válvula control 13 mm | 2,318.73 | 2,318.73 |
| 534 | 1.3.23.29 | Salida hidráulica para tanque hidroneumático | 3d | 2026-10-05 | 2026-10-08 | 460 | 2026-10-05 | 2026-10-08 | 3d | 21d | 3d | Corsac - Salida tanque hidroneumático 1" | 663.84 | 663.84 |
| 535 | 1.3.23.30 | Salida hidráulica para Active Driver | 3d | 2026-10-05 | 2026-10-08 | 460 | 2026-10-05 | 2026-10-08 | 3d | 21d | 3d | Corsac - Salida Active Driver 1 1/4" | 742.81 | 742.81 |

| ID | WBS | Task | Duration | Start | Finish | Predecessors | Baseline start | Baseline finish | Baseline duration | Total slack | Free slack | Resources | Cost | Baseline cost |
| --- | --- | --- | --- | --- | --- | --- | --- | --- | --- | --- | --- | --- | --- | --- |
| 536 | 1.3.24 | **INSTALACION DE GAS** | 8d | 2026-09-29 | 2026-10-08 |  | 2026-09-29 | 2026-10-08 | 8d | 46d |  |  | 12,289.42 | 12,289.42 |
| 537 | 1.3.24.1 | Ramaleo para gas 1/2 | 5d | 2026-10-02 | 2026-10-08 | 460FS-2d, 538 | 2026-10-02 | 2026-10-08 | 5d | 46d | 0d | Corsac - Ramaleo para gas 1/2" | 11,607.8 | 11,607.8 |
| 538 | 1.3.24.2 | Excavación a mano material tipo B | 3d | 2026-09-29 | 2026-10-02 | 460FF-2d | 2026-09-29 | 2026-10-02 | 3d | 46d | 0d | Corsac - Excavación a mano material tipo B | 681.62 | 681.62 |
| 539 | 1.3.25 | **MUEBLES SANITARIOS** | 29d | 2026-11-06 | 2026-12-14 |  | 2026-11-06 | 2026-12-14 | 29d | 25d |  |  | 47,416.79 | 47,416.79 |
| 540 | 1.3.25.1 | WC completo Austral | 2d | 2026-11-06 | 2026-11-09 | 444, 451, 530, 531 | 2026-11-06 | 2026-11-09 | 2d | 27d | 14d | Corsac - WC completo Austral | 13,692.87 | 13,692.87 |
| 541 | 1.3.25.2 | Lavabo Senna con pedestal | 4d | 2026-11-06 | 2026-11-11 | 444, 449, 451, 530, 531 | 2026-11-06 | 2026-11-11 | 4d | 25d | 12d | Corsac - Lavabo Senna con pedestal | 1,447.83 | 1,447.83 |
| 542 | 1.3.25.3 | Tarja / lavabo combo Guinea 80x45 | 2d | 2026-11-06 | 2026-11-09 | 288, 444, 449, 451, 531 | 2026-11-06 | 2026-11-09 | 2d | 53d |  | Corsac - Tarja / lavabo combo Guinea 80x45 | 7,359.9 | 7,359.9 |
| 543 | 1.3.25.4 | Regadera con monomando | 3d | 2026-11-09 | 2026-11-12 | 444, 449FS+2d, 451FS+2d, 530, 531 | 2026-11-09 | 2026-11-12 | 3d | 24d | 11d | Corsac - Regadera con monomando | 5,979.92 | 5,979.92 |
| 544 | 1.3.25.5 | Coladera inserto cerámico | 2d | 2026-11-10 | 2026-11-12 | 449, 451FS+3d, 531 | 2026-11-10 | 2026-11-12 | 2d | 24d | 11d | Corsac - Coladera inserto cerámico | 3,255.54 | 3,255.54 |
| 545 | 1.3.25.6 | Toallero sencillo | 1d | 2026-12-12 | 2026-12-14 | 437FS-1d | 2026-12-12 | 2026-12-14 | 1d | 13d | 0d | Corsac - Toallero sencillo | 4,242.66 | 4,242.66 |
| 546 | 1.3.25.7 | Toallero barra | 1d | 2026-12-12 | 2026-12-14 | 437FS-1d | 2026-12-12 | 2026-12-14 | 1d | 13d | 0d | Corsac - Toallero barra | 5,242.86 | 5,242.86 |
| 547 | 1.3.25.8 | Portapapel | 1d | 2026-12-12 | 2026-12-14 | 437FS-1d | 2026-12-12 | 2026-12-14 | 1d | 13d | 0d | Corsac - Portapapel | 4,950.69 | 4,950.69 |
| 548 | 1.3.25.9 | Gancho baño | 1d | 2026-12-12 | 2026-12-14 | 437FS-1d | 2026-12-12 | 2026-12-14 | 1d | 13d | 0d | Corsac - Gancho baño | 1,244.52 | 1,244.52 |
| 549 | 1.3.26 | **EQUIPAMIENTO** | 6d | 2026-09-23 | 2026-09-30 |  | 2026-09-23 | 2026-09-30 | 6d | 72d |  |  | 34,791.15 | 34,791.15 |
| 550 | 1.3.26.1 | Electronivel Rotoplas 5 m | 2d | 2026-09-24 | 2026-09-26 | 555 | 2026-09-24 | 2026-09-26 | 2d | 75d | 62d | Corsac - Electronivel Rotoplas | 1,197.02 | 1,197.02 |
| 551 | 1.3.26.2 | Manómetro | 1d | 2026-09-24 | 2026-09-25 | 555 | 2026-09-24 | 2026-09-25 | 1d | 76d | 63d | Corsac - Manómetro | 1,437.48 | 1,437.48 |
| 552 | 1.3.26.3 | Interruptor de presión 30-50 PSI | 1d | 2026-09-24 | 2026-09-25 | 555 | 2026-09-24 | 2026-09-25 | 1d | 76d | 63d | Corsac - Interruptor de presión 30-50 PSI | 431.24 | 431.24 |
| 553 | 1.3.26.4 | Tanque hidroneumático FPS-24LX | 3d | 2026-09-24 | 2026-09-28 | 555 | 2026-09-24 | 2026-09-28 | 3d | 72d | 0d | Corsac - Tanque hidroneumático FPS-24LX | 7,647.39 | 7,647.39 |
| 554 | 1.3.26.5 | Bomba sumergible Dominator 1.2 HP | 2d | 2026-09-28 | 2026-09-30 | 553 | 2026-09-28 | 2026-09-30 | 2d | 72d | 59d | Corsac - Bomba sumergible 1.2 HP | 10,349.86 | 10,349.86 |
| 555 | 1.3.26.6 | Cisterna prefabricada 2800 L | 1d | 2026-09-23 | 2026-09-24 | 417FF | 2026-09-23 | 2026-09-24 | 1d | 72d | 0d | Corsac - Cisterna prefabricada 2800 L | 13,728.16 | 13,728.16 |
| 556 | 1.3.27 | **LUMINARIAS** | 5d | 2026-10-29 | 2026-11-04 |  | 2026-10-29 | 2026-11-04 | 5d | 42d |  |  | 45,313.31 | 45,313.31 |
| 557 | 1.3.27.1 | Roseta cerámica | 3d | 2026-10-29 | 2026-11-02 | 497 | 2026-10-29 | 2026-11-02 | 3d | 44d | 2d | Corsac - Roseta cerámica | 1,472.5 | 1,472.5 |
| 558 | 1.3.27.2 | Luminaria lagartijera LED | 3d | 2026-10-29 | 2026-11-02 | 497 | 2026-10-29 | 2026-11-02 | 3d | 44d | 2d | Corsac - Luminaria lagartijera LED | 3,219.96 | 3,219.96 |
| 559 | 1.3.27.3 | Spot 6W Tecnolite | 3d | 2026-10-29 | 2026-11-02 | 497 | 2026-10-29 | 2026-11-02 | 3d | 44d | 2d | Corsac - Spot 6W Tecnolite | 9,168.78 | 9,168.78 |
| 560 | 1.3.27.4 | Spot 7W Tecnolite | 3d | 2026-10-29 | 2026-11-02 | 497 | 2026-10-29 | 2026-11-02 | 3d | 44d | 2d | Corsac - Spot 7W Tecnolite | 3,104.94 | 3,104.94 |
| 561 | 1.3.27.5 | Arbotante exterior | 2d | 2026-10-29 | 2026-10-30 | 497 | 2026-10-29 | 2026-10-30 | 2d | 42d | 0d | Corsac - Arbotante exterior | 19,319.76 | 19,319.76 |
| 562 | 1.3.27.6 | Estaca LED exterior | 3d | 2026-10-31 | 2026-11-04 | 561 | 2026-10-31 | 2026-11-04 | 3d | 42d | 0d | Corsac - Estaca LED exterior | 7,129.92 | 7,129.92 |
| 563 | 1.3.27.7 | Tira LED | 3d | 2026-10-31 | 2026-11-04 | 561 | 2026-10-31 | 2026-11-04 | 3d | 42d | 0d | Corsac - Tira LED |  |  |
| 564 | 1.3.27.8 | Spot exterior 50W | 2d | 2026-10-29 | 2026-10-30 | 497 | 2026-10-29 | 2026-10-30 | 2d | 45d | 3d | Corsac - Spot exterior 50W | 1,897.45 | 1,897.45 |

| ID | WBS | Task | Type | Duration | Start | Finish | Predecessors | Complete | Remaining | Baseline start | Baseline finish | Baseline duration | Total slack | Free slack | Resources | Cost | Baseline cost | Actual cost |
| --- | --- | --- | --- | --- | --- | --- | --- | --- | --- | --- | --- | --- | --- | --- | --- | --- | --- | --- |
| 565 | 1.3.28 | **TIMBRE** |  | 2d | 2026-10-30 | 2026-11-02 |  |  |  | 2026-10-30 | 2026-11-02 | 2d | 44d |  |  | 861.34 | 861.34 |  |
| 566 | 1.3.28.1 | Timbre inalámbrico con bocina |  | 2d | 2026-10-30 | 2026-11-02 | 495FS+3d, 496FS+3d |  |  | 2026-10-30 | 2026-11-02 | 2d | 44d | 2d | Corsac - Timbre inalámbrico con bocina | 861.34 | 861.34 |  |
| 567 | 1.3.29 | **OBRA EXTERIOR - BARDA** |  | 18d | 2026-10-05 | 2026-10-27 |  |  |  | 2026-10-05 | 2026-10-27 | 18d | 50d |  |  | 24,252.36 | 24,252.36 |  |
| 568 | 1.3.29.1 | Murete convencional |  | 5d | 2026-10-12 | 2026-10-17 | 460FS+5d |  |  | 2026-10-12 | 2026-10-17 | 5d | 56d | 14d | Corsac - Murete convencional | 9,859.86 | 9,859.86 |  |
| 569 | 1.3.29.2 | Barda de block aparente |  | 18d | 2026-10-05 | 2026-10-27 | 460 |  |  | 2026-10-05 | 2026-10-27 | 18d | 50d | 37d | Corsac - Barda de block | 14,392.5 | 14,392.5 |  |
| 570 | 1.3.30 | **TERCER LIMPIEZA DE OBRA** |  | 13d | 2026-12-14 | 2027-01-04 |  |  |  | 2026-12-14 | 2027-01-04 | 13d | 13d |  |  | 21,640 | 21,640 |  |
| 571 | 1.3.30.1 | Limpieza fina para entrega |  | 6d | 2026-12-14 | 2026-12-21 | 437, 438, 439, 470, 479, 480, 504, 530, 531, 545, 546, 547, 548, 550, 551, 552, 553, 554, 569 |  |  | 2026-12-14 | 2026-12-21 | 6d | 13d | 0d | Corsac - Limpieza fina de casa | 14,290.2 | 14,290.2 |  |
| 572 | 1.3.30.2 | Tercera limpieza de obra |  | 4d | 2026-12-22 | 2026-12-29 | 571, 463 |  |  | 2026-12-22 | 2026-12-29 | 4d | 13d | 0d | Corsac - Limpieza general exterior | 5,509.8 | 5,509.8 |  |
| 573 | 1.3.30.3 | Tercera carga y acarreo de escombro |  | 3d | 2026-12-29 | 2027-01-04 | 572 |  |  | 2026-12-29 | 2027-01-04 | 3d | 13d | 0d | Corsac - Carga y acarreo final de escombro | 1,840 | 1,840 |  |
| 574 | 1.4 | **LOTE 03 M-661 CORSAC-A** |  | 178d | 2026-05-20 A | 2027-01-04 |  |  | 177.89d | 2026-05-20 | 2027-01-04 | 178d | 13d |  |  | 9,070.2 | 9,070.2 | 2,834.44 |
| 575 | 1.4.1 | **HITOS IMPORTANTES DEL LOTE** |  | 178d | 2026-05-20 A | 2027-01-04 |  |  | 178d | 2026-05-20 | 2027-01-04 | 178d | 13d |  |  |  |  |  |
| 576 | 1.4.1.1 | Inicio del LOTE 03 M-661 CORSAC-A | milestone | 0d | 2026-05-20 A | 2026-05-20 A | 7 | 100% |  | 2026-05-20 | 2026-05-20 |  |  |  |  |  |  |  |
| 577 | 1.4.1.2 | Colado de Losa de Cimentación | milestone | 0d | 2026-06-10 | 2026-06-10 | 608 |  |  | 2026-06-10 | 2026-06-10 |  | 174d |  |  |  |  |  |
| 578 | 1.4.1.3 | Colado de Losa de Entrepiso | milestone | 0d | 2026-07-17 | 2026-07-17 | 644 |  |  | 2026-07-17 | 2026-07-17 |  | 144d |  |  |  |  |  |
| 579 | 1.4.1.4 | Colado de Losa de Azotea | milestone | 0d | 2026-08-24 | 2026-08-24 | 684 |  |  | 2026-08-24 | 2026-08-24 |  | 114d |  |  |  |  |  |
| 580 | 1.4.1.5 | Entrega de vivienda | milestone | 0d | 2027-01-04 | 2027-01-04 | 876, 877, 878 |  |  | 2027-01-04 | 2027-01-04 |  | 13d |  |  |  |  |  |
| 581 | 1.4.2 | **TRABAJOS PRELIMINARES** |  | 2d | 2026-05-20 A | 2026-05-22 |  | 31% | 1.38d | 2026-05-20 | 2026-05-22 | 2d | 13d |  |  | 9,070.2 | 9,070.2 | 2,834.44 |
| 582 | 1.4.2.1 | Trazo y nivelación |  | 2d | 2026-05-20 A | 2026-05-22 | 576 | 31% | 1.38d | 2026-05-20 | 2026-05-22 | 2d | 13d | 0d | Corsac - Trazo y nivelación | 9,070.2 | 9,070.2 | 2,834.44 |
| 583 | 1.4.3 | **EXCAVACIONES** |  | 3d | 2026-05-22 | 2026-05-26 |  |  |  | 2026-05-22 | 2026-05-26 | 3d | 13d |  |  |  |  |  |
| 584 | 1.4.3.1 | Excavación a mano material tipo B |  | 3d | 2026-05-22 | 2026-05-26 | 582 |  |  | 2026-05-22 | 2026-05-26 | 3d | 13d | 0d |  |  |  |  |
| 585 | 1.4.3.2 | Acarreo en carretilla 20 m |  | 2d | 2026-05-23 | 2026-05-26 | 584SS+1d |  |  | 2026-05-23 | 2026-05-26 | 2d | 13d | 0d |  |  |  |  |
| 586 | 1.4.4 | **CIMENTACION** |  | 13d | 2026-05-26 | 2026-06-11 |  |  |  | 2026-05-26 | 2026-06-11 | 13d | 13d |  |  |  |  |  |
| 587 | 1.4.4.1 | Cimbra perimetral losa de cimentación |  | 3d | 2026-05-26 | 2026-05-29 | 584, 585 |  |  | 2026-05-26 | 2026-05-29 | 3d | 13d | 0d |  |  |  |  |
| 588 | 1.4.4.2 | Sistema antitermitas PVC |  | 3d | 2026-05-26 | 2026-05-29 | 584, 585 |  |  | 2026-05-26 | 2026-05-29 | 3d | 14d | 0d |  |  |  |  |
| 589 | 1.4.4.3 | Hule negro en cimentación |  | 1d | 2026-05-29 | 2026-06-01 | 588 |  |  | 2026-05-29 | 2026-06-01 | 1d | 14d | 0d |  |  |  |  |
| 590 | 1.4.4.4 | Ramaleo poliducto eléctrico cimentación |  | 2d | 2026-06-01 | 2026-06-03 | 589 |  |  | 2026-06-01 | 2026-06-03 | 2d | 17d | 0d |  |  |  |  |
| 591 | 1.4.4.5 | Ramaleo eléctrico base-medición a centro de carga |  | 1d | 2026-06-01 | 2026-06-02 | 589 |  |  | 2026-06-01 | 2026-06-02 | 1d | 18d | 1d |  |  |  |  |
| 592 | 1.4.4.6 | Ramaleo eléctrico exterior |  | 1d | 2026-06-03 | 2026-06-04 | 590, 591 |  |  | 2026-06-03 | 2026-06-04 | 1d | 17d | 4d |  |  |  |  |
| 593 | 1.4.4.7 | Ramaleo para cable poliducto 3/4 |  | 1d | 2026-06-03 | 2026-06-04 | 590, 591 |  |  | 2026-06-03 | 2026-06-04 | 1d | 17d | 4d |  |  |  |  |
| 594 | 1.4.4.8 | Ramaleo para TV poliducto 3/4 |  | 1d | 2026-06-03 | 2026-06-04 | 590, 591 |  |  | 2026-06-03 | 2026-06-04 | 1d | 17d | 4d |  |  |  |  |
| 595 | 1.4.4.9 | Ramaleo hidráulico CPVC 1-1/4" cimentación |  | 1d | 2026-06-01 | 2026-06-02 | 589 |  |  | 2026-06-01 | 2026-06-02 | 1d | 14d | 0d |  |  |  |  |
| 596 | 1.4.4.10 | Ramaleo hidráulico CPVC 1 cimentación |  | 1d | 2026-06-01 | 2026-06-02 | 589, 595SS |  |  | 2026-06-01 | 2026-06-02 | 1d | 14d | 0d |  |  |  |  |
| 597 | 1.4.4.11 | Ramaleo hidráulico CPVC 3/4 cimentación |  | 2d | 2026-06-02 | 2026-06-04 | 596 |  |  | 2026-06-02 | 2026-06-04 | 2d | 14d | 0d |  |  |  |  |
| 598 | 1.4.4.12 | Ramaleo hidráulico CPVC 1/2 cimentación |  | 2d | 2026-06-04 | 2026-06-06 | 597 |  |  | 2026-06-04 | 2026-06-06 | 2d | 14d | 0d |  |  |  |  |
| 599 | 1.4.4.13 | Prueba hidráulica |  | 1d | 2026-06-06 | 2026-06-08 | 595, 596, 597, 598 |  |  | 2026-06-06 | 2026-06-08 | 1d | 14d | 1d |  |  |  |  |
| 600 | 1.4.4.14 | Ramaleo sanitario PVC 4 cimentación |  | 2d | 2026-06-02 | 2026-06-04 | 589FS+1d |  |  | 2026-06-02 | 2026-06-04 | 2d | 15d | 0d |  |  |  |  |
| 601 | 1.4.4.15 | Ramaleo sanitario PVC 2 cimentación |  | 1d | 2026-06-04 | 2026-06-05 | 600 |  |  | 2026-06-04 | 2026-06-05 | 1d | 15d | 0d |  |  |  |  |
| 602 | 1.4.4.16 | Prueba sanitaria |  | 1d | 2026-06-05 | 2026-06-06 | 600, 601 |  |  | 2026-06-05 | 2026-06-06 | 1d | 15d | 2d |  |  |  |  |
| 603 | 1.4.4.17 | Acero contratrabe CT-1 |  | 4d | 2026-05-29 | 2026-06-04 | 587 |  |  | 2026-05-29 | 2026-06-04 | 4d | 13d | 0d |  |  |  |  |
| 604 | 1.4.4.18 | Acero contratrabe CT-2 |  | 4d | 2026-05-29 | 2026-06-04 | 587 |  |  | 2026-05-29 | 2026-06-04 | 4d | 13d | 0d |  |  |  |  |
| 605 | 1.4.4.19 | Malla electrosoldada 6-6/8-8 |  | 2d | 2026-06-06 | 2026-06-09 | 603, 604, 606, 607 |  |  | 2026-06-06 | 2026-06-09 | 2d | 13d | 0d |  |  |  |  |
| 606 | 1.4.4.20 | Bastón de refuerzo LS |  | 2d | 2026-06-04 | 2026-06-06 | 603, 604 |  |  | 2026-06-04 | 2026-06-06 | 2d | 13d | 0d |  |  |  |  |
| 607 | 1.4.4.21 | Bastón de refuerzo LI |  | 2d | 2026-06-04 | 2026-06-06 | 603, 604 |  |  | 2026-06-04 | 2026-06-06 | 2d | 13d | 0d |  |  |  |  |
| 608 | 1.4.4.22 | Colado losa de cimentación f’c=200 |  | 1d | 2026-06-09 | 2026-06-10 | 587, 589, 592, 593, 594, 599, 602, 603, 604, 605, 606, 607, 610, 611 |  |  | 2026-06-09 | 2026-06-10 | 1d | 13d | 0d |  |  |  |  |
| 609 | 1.4.4.23 | Curado de concreto |  | 1d | 2026-06-10 | 2026-06-11 | 608 |  |  | 2026-06-10 | 2026-06-11 | 1d | 13d | 0d |  |  |  |  |
| 610 | 1.4.4.24 | Acero zapata ZT-1 |  | 4d | 2026-06-04 | 2026-06-09 | 603, 604 |  |  | 2026-06-04 | 2026-06-09 | 4d | 13d | 0d |  |  |  |  |
| 611 | 1.4.4.25 | Acero zapata ZT-2 |  | 4d | 2026-06-04 | 2026-06-09 | 603, 604 |  |  | 2026-06-04 | 2026-06-09 | 4d | 13d | 0d |  |  |  |  |

| ID | WBS | Task | Duration | Start | Finish | Predecessors | Baseline start | Baseline finish | Baseline duration | Total slack | Free slack |
| --- | --- | --- | --- | --- | --- | --- | --- | --- | --- | --- | --- |
| 612 | 1.4.5 | **MUROS, PLANTA BAJA. CASTILLOS Y CERRAMIENTOS** | 20d | 2026-06-05 | 2026-06-30 |  | 2026-06-05 | 2026-06-30 | 20d | 18d |  |
| 613 | 1.4.5.1 | Anclaje de castillos y Columnas PB | 5d | 2026-06-05 | 2026-06-11 | 603FS+1d, 604FS+1d | 2026-06-05 | 2026-06-11 | 5d | 161d | 0d |
| 614 | 1.4.5.2 | Castillo K1 | 4d | 2026-06-11 | 2026-06-16 | 609, 613 | 2026-06-11 | 2026-06-16 | 4d | 161d | 0d |
| 615 | 1.4.5.3 | Castillo K3 | 3d | 2026-06-13 | 2026-06-17 | 614FS-2d | 2026-06-13 | 2026-06-17 | 3d | 161d | 0d |
| 616 | 1.4.5.4 | Castillo K4 | 3d | 2026-06-13 | 2026-06-17 | 614FS-2d | 2026-06-13 | 2026-06-17 | 3d | 161d | 0d |
| 617 | 1.4.5.5 | Castillo K5 | 3d | 2026-06-16 | 2026-06-19 | 615FS-1d, 616FS-1d | 2026-06-16 | 2026-06-19 | 3d | 161d | 0d |
| 618 | 1.4.5.6 | Refuerzo de muro K6 | 3d | 2026-06-17 | 2026-06-22 | 617FS-2d | 2026-06-17 | 2026-06-22 | 3d | 161d | 0d |
| 619 | 1.4.5.7 | Dala de cerramiento CR-1 | 4d | 2026-06-17 | 2026-06-23 | 614, 615 | 2026-06-17 | 2026-06-23 | 4d | 164d |  |
| 620 | 1.4.5.8 | Dala de cerramiento CR-2 | 3d | 2026-06-17 | 2026-06-22 | 614, 615 | 2026-06-17 | 2026-06-22 | 3d | 165d |  |
| 621 | 1.4.5.9 | Cadena block dala | 4d | 2026-06-22 | 2026-06-26 | 618 | 2026-06-22 | 2026-06-26 | 4d | 161d |  |
| 622 | 1.4.5.10 | Muro de ladrillo aparente | 15d | 2026-06-11 | 2026-06-30 | 609 | 2026-06-11 | 2026-06-30 | 15d | 13d | 0d |
| 623 | 1.4.5.11 | Muro de block planta baja | 13d | 2026-06-13 | 2026-06-30 | 609FS+2d | 2026-06-13 | 2026-06-30 | 13d | 13d | 0d |
| 624 | 1.4.5.12 | Ramaleo electrico en Muros Planta Baja | 4d | 2026-06-17 | 2026-06-23 | 622SS+5d | 2026-06-17 | 2026-06-23 | 4d | 16d | 0d |
| 625 | 1.4.5.13 | Ramaleo para cable poliducto 3/4 | 2d | 2026-06-23 | 2026-06-25 | 624 | 2026-06-23 | 2026-06-25 | 2d | 16d | 0d |
| 626 | 1.4.5.14 | Ramaleo para TV poliducto 3/4 | 3d | 2026-06-25 | 2026-06-29 | 625 | 2026-06-25 | 2026-06-29 | 3d | 16d | 2d |
| 627 | 1.4.6 | **ESCALERA** | 10d | 2026-07-17 | 2026-07-30 |  | 2026-07-17 | 2026-07-30 | 10d | 90d |  |
| 628 | 1.4.6.1 | Escalera de concreto armado | 10d | 2026-07-17 | 2026-07-30 | 644 | 2026-07-17 | 2026-07-30 | 10d | 90d | 77d |
| 629 | 1.4.7 | **LOSA DE ENTREPISO (viegueta y caseton)** | 17d | 2026-06-27 | 2026-07-18 |  | 2026-06-27 | 2026-07-18 | 17d | 16d |  |
| 630 | 1.4.7.1 | Dala de coronamiento 10cm | 3d | 2026-07-07 | 2026-07-09 | 646FS-1d, 632, 633, 634, 635, 636, 637 | 2026-07-07 | 2026-07-09 | 3d | 16d | 3d |
| 631 | 1.4.7.2 | Dala de coronamiento 12cm | 3d | 2026-07-08 | 2026-07-10 | 646, 632, 633, 634, 635, 636, 637 | 2026-07-08 | 2026-07-10 | 3d | 15d | 2d |
| 632 | 1.4.7.3 | Trabe TR-1 | 3d | 2026-06-27 | 2026-07-01 | 622FS-2d, 623FS-2d | 2026-06-27 | 2026-07-01 | 3d | 17d | 4d |
| 633 | 1.4.7.4 | Trabe TR-2 | 4d | 2026-06-29 | 2026-07-03 | 622FS-1d, 623FS-1d | 2026-06-29 | 2026-07-03 | 4d | 15d | 2d |
| 634 | 1.4.7.5 | Nervadura NR-1 | 4d | 2026-06-30 | 2026-07-04 | 622, 623 | 2026-06-30 | 2026-07-04 | 4d | 14d | 1d |
| 635 | 1.4.7.6 | Nervadura NR-2 | 4d | 2026-07-01 | 2026-07-06 | 622FS+1d, 623FS+1d | 2026-07-01 | 2026-07-06 | 4d | 13d | 0d |
| 636 | 1.4.7.7 | Nervadura NR-3 | 4d | 2026-07-01 | 2026-07-06 | 622FS+1d, 623FS+1d | 2026-07-01 | 2026-07-06 | 4d | 13d | 0d |
| 637 | 1.4.7.8 | Nervadura NR-4 | 4d | 2026-07-01 | 2026-07-06 | 622FS+1d, 623FS+1d | 2026-07-01 | 2026-07-06 | 4d | 13d | 0d |
| 638 | 1.4.7.9 | Acero de refuerzo en nervios #3 | 2d | 2026-07-07 | 2026-07-08 | 632, 633, 634, 635, 636, 637 | 2026-07-07 | 2026-07-08 | 2d | 13d | 0d |
| 639 | 1.4.7.10 | Acero de refuerzo long. #3 | 3d | 2026-07-08 | 2026-07-10 | 632, 633, 634, 635, 636, 637, 646 | 2026-07-08 | 2026-07-10 | 3d | 14d | 0d |
| 640 | 1.4.7.11 | Acero de refuerzo long. #4 | 3d | 2026-07-08 | 2026-07-10 | 639SS | 2026-07-08 | 2026-07-10 | 3d | 14d | 0d |
| 641 | 1.4.7.12 | Malla 66-10/10 losa de compresión | 2d | 2026-07-14 | 2026-07-16 | 630, 631, 638, 651, 654, 643 | 2026-07-14 | 2026-07-16 | 2d | 13d | 0d |
| 642 | 1.4.7.13 | Acero de Losa Maciza | 3d | 2026-07-07 | 2026-07-09 | 634, 635, 636, 637 | 2026-07-07 | 2026-07-09 | 3d | 18d | 5d |
| 643 | 1.4.7.14 | Caseton de 60x60x20cm | 2d | 2026-07-07 | 2026-07-08 | 634, 635, 636, 637 | 2026-07-07 | 2026-07-08 | 2d | 17d | 4d |
| 644 | 1.4.7.15 | Concreto losa de entrepiso f’c=200 | 1d | 2026-07-16 | 2026-07-17 | 639, 640, 641, 642, 651, 654, 647, 656 | 2026-07-16 | 2026-07-17 | 1d | 13d | 0d |
| 645 | 1.4.7.16 | Curado de concreto | 1d | 2026-07-17 | 2026-07-18 | 644 | 2026-07-17 | 2026-07-18 | 1d | 13d | 0d |
| 646 | 1.4.7.17 | Cimbra losa de azotea | 5d | 2026-07-01 | 2026-07-07 | 622FS+1d, 623FS+1d, 626 | 2026-07-01 | 2026-07-07 | 5d | 14d | 0d |
| 647 | 1.4.7.18 | Cimbra exterior corta losa | 3d | 2026-07-10 | 2026-07-14 | 639FS-1d, 640FS-1d | 2026-07-10 | 2026-07-14 | 3d | 15d | 2d |
| 648 | 1.4.7.19 | Ramaleo poliducto eléctrico entrepiso | 2d | 2026-07-09 | 2026-07-10 | 638 | 2026-07-09 | 2026-07-10 | 2d | 149d |  |
| 649 | 1.4.7.20 | Ramaleo hidráulico CPVC 3/4" | 2d | 2026-07-10 | 2026-07-13 | 638FS+1d | 2026-07-10 | 2026-07-13 | 2d | 13d | 0d |
| 650 | 1.4.7.21 | Ramaleo hidráulico CPVC 1/2" | 1d | 2026-07-13 | 2026-07-14 | 649 | 2026-07-13 | 2026-07-14 | 1d | 13d | 0d |
| 651 | 1.4.7.22 | Prueba hidráulica | 1d | 2026-07-13 | 2026-07-14 | 649, 650FS-1d | 2026-07-13 | 2026-07-14 | 1d | 13d | 0d |
| 652 | 1.4.7.23 | Ramaleo sanitario PVC 4" | 2d | 2026-07-10 | 2026-07-13 | 638FS+1d | 2026-07-10 | 2026-07-13 | 2d | 13d | 0d |
| 653 | 1.4.7.24 | Ramaleo sanitario PVC 2" | 1d | 2026-07-13 | 2026-07-14 | 652 | 2026-07-13 | 2026-07-14 | 1d | 13d | 0d |
| 654 | 1.4.7.25 | Prueba sanitaria | 1d | 2026-07-13 | 2026-07-14 | 652, 653FS-1d | 2026-07-13 | 2026-07-14 | 1d | 13d | 0d |

| ID | WBS | Task | Duration | Start | Finish | Predecessors | Baseline start | Baseline finish | Baseline duration | Total slack | Free slack |
| --- | --- | --- | --- | --- | --- | --- | --- | --- | --- | --- | --- |
| 655 | 1.4.8 | **MUROS EN PLANTA ALTA, CASTILLOS Y CERRM.** | 22d | 2026-07-10 | 2026-08-06 |  | 2026-07-10 | 2026-08-06 | 22d | 14d |  |
| 656 | 1.4.8.1 | Anclaje de castillos y Columnas PA | 4d | 2026-07-10 | 2026-07-15 | 639FS-1d, 640FS-1d | 2026-07-10 | 2026-07-15 | 4d | 14d | 1d |
| 657 | 1.4.8.2 | Castillo K1 | 4d | 2026-07-18 | 2026-07-23 | 645 | 2026-07-18 | 2026-07-23 | 4d | 17d | 0d |
| 658 | 1.4.8.3 | Castillo K2 | 4d | 2026-07-20 | 2026-07-24 | 645FS+1d | 2026-07-20 | 2026-07-24 | 4d | 16d | 0d |
| 659 | 1.4.8.4 | Castillo K4 | 3d | 2026-07-23 | 2026-07-28 | 657 | 2026-07-23 | 2026-07-28 | 3d | 17d | 1d |
| 660 | 1.4.8.5 | Castillo K5 | 3d | 2026-07-23 | 2026-07-28 | 657 | 2026-07-23 | 2026-07-28 | 3d | 17d | 1d |
| 661 | 1.4.8.6 | Castillo K6 | 3d | 2026-07-23 | 2026-07-28 | 657 | 2026-07-23 | 2026-07-28 | 3d | 17d | 1d |
| 662 | 1.4.8.7 | Refuerzo de muro | 3d | 2026-07-24 | 2026-07-29 | 657, 658 | 2026-07-24 | 2026-07-29 | 3d | 16d | 0d |
| 663 | 1.4.8.8 | Dala de cerramiento CR-1 | 4d | 2026-07-29 | 2026-08-03 | 659, 660, 661, 662 | 2026-07-29 | 2026-08-03 | 4d | 16d | 0d |
| 664 | 1.4.8.9 | Dala de cerramiento CR-2 | 4d | 2026-07-29 | 2026-08-03 | 659, 660, 661, 662 | 2026-07-29 | 2026-08-03 | 4d | 16d | 0d |
| 665 | 1.4.8.10 | Cadena block dala | 3d | 2026-08-03 | 2026-08-06 | 662, 663, 664 | 2026-08-03 | 2026-08-06 | 3d | 16d | 0d |
| 666 | 1.4.8.11 | Muro de ladrillo aparente | 15d | 2026-07-18 | 2026-08-06 | 645 | 2026-07-18 | 2026-08-06 | 15d | 13d | 0d |
| 667 | 1.4.8.12 | Muro de block planta alta | 14d | 2026-07-20 | 2026-08-06 | 645FS+1d | 2026-07-20 | 2026-08-06 | 14d | 13d | 0d |
| 668 | 1.4.8.13 | Ramaleo electrico en Muros Planta Alta | 4d | 2026-07-29 | 2026-08-03 | 666SS+8d | 2026-07-29 | 2026-08-03 | 4d | 24d | 3d |
| 669 | 1.4.9 | **LOSA AZOTEA** | 15d | 2026-08-06 | 2026-08-25 |  | 2026-08-06 | 2026-08-25 | 15d | 13d |  |
| 670 | 1.4.9.1 | Cortalosa CL-1 | 2d | 2026-08-20 | 2026-08-22 | 682 | 2026-08-20 | 2026-08-22 | 2d | 13d | 0d |
| 671 | 1.4.9.2 | Cortalosa CL-2 | 2d | 2026-08-20 | 2026-08-22 | 682 | 2026-08-20 | 2026-08-22 | 2d | 13d | 0d |
| 672 | 1.4.9.3 | Vigueta pretensada V11-30 125 | 5d | 2026-08-06 | 2026-08-12 | 665, 666, 667 | 2026-08-06 | 2026-08-12 | 5d | 16d | 3d |
| 673 | 1.4.9.4 | Vigueta pretensada V11-30 185 | 5d | 2026-08-06 | 2026-08-12 | 666, 667 | 2026-08-06 | 2026-08-12 | 5d | 16d | 3d |
| 674 | 1.4.9.5 | Vigueta pretensada V11-30 190 | 5d | 2026-08-06 | 2026-08-12 | 666, 667 | 2026-08-06 | 2026-08-12 | 5d | 16d | 3d |
| 675 | 1.4.9.6 | Vigueta pretensada V11-30 205 | 5d | 2026-08-08 | 2026-08-14 | 666FS+2d, 667FS+2d | 2026-08-08 | 2026-08-14 | 5d | 14d | 1d |
| 676 | 1.4.9.7 | Vigueta pretensada V11-30 215 | 5d | 2026-08-08 | 2026-08-14 | 666FS+2d, 667FS+2d | 2026-08-08 | 2026-08-14 | 5d | 14d | 1d |
| 677 | 1.4.9.8 | Vigueta pretensada V11-30 260 | 5d | 2026-08-10 | 2026-08-17 | 666FS+3d, 667FS+3d | 2026-08-10 | 2026-08-17 | 5d | 13d | 0d |
| 678 | 1.4.9.9 | Vigueta pretensada V11-30 285 | 5d | 2026-08-10 | 2026-08-17 | 666FS+3d, 667FS+3d | 2026-08-10 | 2026-08-17 | 5d | 13d | 0d |
| 679 | 1.4.9.10 | Vigueta pretensada V11-40 330 | 5d | 2026-08-10 | 2026-08-17 | 666FS+3d, 667 | 2026-08-10 | 2026-08-17 | 5d | 13d | 0d |
| 680 | 1.4.9.11 | Vigueta pretensada V11-40 335 | 5d | 2026-08-10 | 2026-08-17 | 666FS+3d, 667 | 2026-08-10 | 2026-08-17 | 5d | 13d | 0d |
| 681 | 1.4.9.12 | Vigueta pretensada V11-40 505 | 5d | 2026-08-10 | 2026-08-17 | 666FS+3d, 667 | 2026-08-10 | 2026-08-17 | 5d | 13d | 0d |
| 682 | 1.4.9.13 | Bovedilla poliestireno azotea | 3d | 2026-08-17 | 2026-08-20 | 672, 673, 674, 675, 676, 677, 678, 679, 680, 681 | 2026-08-17 | 2026-08-20 | 3d | 13d | 0d |
| 683 | 1.4.9.14 | Malla 66-10/10 losa de compresión | 2d | 2026-08-20 | 2026-08-22 | 682 | 2026-08-20 | 2026-08-22 | 2d | 13d | 0d |
| 684 | 1.4.9.15 | Concreto losa de azotea f’c=200 | 1d | 2026-08-22 | 2026-08-24 | 670, 671, 682, 683, 687, 686 | 2026-08-22 | 2026-08-24 | 1d | 13d | 0d |
| 685 | 1.4.9.16 | Curado de concreto | 1d | 2026-08-24 | 2026-08-25 | 684 | 2026-08-24 | 2026-08-25 | 1d | 13d | 0d |
| 686 | 1.4.9.17 | Cimbra losa de azotea | 5d | 2026-08-06 | 2026-08-12 | 666, 667, 668 | 2026-08-06 | 2026-08-12 | 5d | 21d | 8d |
| 687 | 1.4.9.18 | Ramaleo de poliducto para inst. electrica en azotea | 2d | 2026-08-20 | 2026-08-22 | 682 | 2026-08-20 | 2026-08-22 | 2d | 13d | 0d |

| ID | WBS | Task | Duration | Start | Finish | Predecessors | Baseline start | Baseline finish | Baseline duration | Total slack | Free slack |
| --- | --- | --- | --- | --- | --- | --- | --- | --- | --- | --- | --- |
| 688 | 1.4.10 | **PRETIL Y ACABADOS DE AZOTEA** | 19d | 2026-08-25 | 2026-09-18 |  | 2026-08-25 | 2026-09-18 | 19d | 13d |  |
| 689 | 1.4.10.1 | Castillo K1 | 5d | 2026-08-27 | 2026-09-02 | 691SS+2d | 2026-08-27 | 2026-09-02 | 5d | 13d | 0d |
| 690 | 1.4.10.2 | Dala de cerramiento en pretil | 4d | 2026-09-01 | 2026-09-04 | 689FS-2d, 691FS-2d | 2026-09-01 | 2026-09-04 | 4d | 13d | 0d |
| 691 | 1.4.10.3 | Muro de block 12x15x40 | 5d | 2026-08-25 | 2026-08-31 | 685 | 2026-08-25 | 2026-08-31 | 5d | 13d | 0d |
| 692 | 1.4.10.4 | Chaflán en azotea | 4d | 2026-09-03 | 2026-09-08 | 689, 691 | 2026-09-03 | 2026-09-08 | 4d | 13d | 0d |
| 693 | 1.4.10.5 | Diamante de entortado | 4d | 2026-09-03 | 2026-09-08 | 689, 691 | 2026-09-03 | 2026-09-08 | 4d | 13d | 0d |
| 694 | 1.4.10.6 | Aplanado exterior Mortermax fino | 5d | 2026-09-05 | 2026-09-11 | 690, 692FS-2d, 693FS-2d | 2026-09-05 | 2026-09-11 | 5d | 13d | 0d |
| 695 | 1.4.10.7 | Entortado de Losa | 4d | 2026-09-12 | 2026-09-18 | 696 | 2026-09-12 | 2026-09-18 | 4d | 13d | 0d |
| 696 | 1.4.10.8 | Curado de concreto | 1d | 2026-09-11 | 2026-09-12 | 692, 694 | 2026-09-11 | 2026-09-12 | 1d | 13d | 0d |
| 697 | 1.4.11 | **PRIMERA LIMPIEZA DE OBRA** | 4d | 2026-08-25 | 2026-08-29 |  | 2026-08-25 | 2026-08-29 | 4d | 70d |  |
| 698 | 1.4.11.1 | Primera limpieza de obra | 2d | 2026-08-25 | 2026-08-27 | 685 | 2026-08-25 | 2026-08-27 | 2d | 70d | 0d |
| 699 | 1.4.11.2 | Primera carga y acarreo de escombro | 2d | 2026-08-27 | 2026-08-29 | 698 | 2026-08-27 | 2026-08-29 | 2d | 70d | 1d |
| 700 | 1.4.12 | **IMPERMEABILIZACION** | 5d | 2026-09-18 | 2026-09-25 |  | 2026-09-18 | 2026-09-25 | 5d | 13d |  |
| 701 | 1.4.12.1 | Impermeabilización de pretil Kover 5 años | 4d | 2026-09-18 | 2026-09-24 | 695 | 2026-09-18 | 2026-09-24 | 4d | 14d | 1d |
| 702 | 1.4.12.2 | Impermeabilización de losa Kover 5 años | 5d | 2026-09-18 | 2026-09-25 | 695 | 2026-09-18 | 2026-09-25 | 5d | 13d | 0d |
| 703 | 1.4.13 | **ALBAÑILERIA** | 62d | 2026-09-01 | 2026-11-19 |  | 2026-09-01 | 2026-11-19 | 62d | 32d |  |
| 704 | 1.4.13.1 | Lavadero de granito | 4d | 2026-10-15 | 2026-10-20 | 740SS+8d | 2026-10-15 | 2026-10-20 | 4d | 69d |  |
| 705 | 1.4.13.2 | Ranurado y resane general inst. en muros | 3d | 2026-09-23 | 2026-09-26 | 702FS-2d | 2026-09-23 | 2026-09-26 | 3d | 15d | 1d |
| 706 | 1.4.13.3 | Ranurado y resane eléctrico 1/2 a 3/4 | 3d | 2026-09-23 | 2026-09-26 | 702FS-2d | 2026-09-23 | 2026-09-26 | 3d | 15d | 1d |
| 707 | 1.4.13.4 | Ranurado y resane hidráulico 1/2 a 1 | 2d | 2026-09-25 | 2026-09-28 | 702 | 2026-09-25 | 2026-09-28 | 2d | 14d | 0d |
| 708 | 1.4.13.5 | Resane sanitario tubería 2 | 2d | 2026-09-25 | 2026-09-28 | 702 | 2026-09-25 | 2026-09-28 | 2d | 14d | 0d |
| 709 | 1.4.13.6 | Resane sanitario tubería 4 | 2d | 2026-09-25 | 2026-09-28 | 702 | 2026-09-25 | 2026-09-28 | 2d | 14d | 0d |
| 710 | 1.4.13.7 | Resane minisplit tubería 3 | 2d | 2026-09-25 | 2026-09-28 | 702 | 2026-09-25 | 2026-09-28 | 2d | 14d | 0d |
| 711 | 1.4.13.8 | Ramaleo hidráulico exterior CPVC 1 1/4 | 3d | 2026-09-25 | 2026-09-29 | 701, 702 | 2026-09-25 | 2026-09-29 | 3d | 13d | 0d |
| 712 | 1.4.13.9 | Ramaleo hidráulico exterior CPVC 1 | 2d | 2026-09-25 | 2026-09-28 | 711SS | 2026-09-25 | 2026-09-28 | 2d | 13d | 0d |
| 713 | 1.4.13.10 | Ramaleo hidráulico exterior CPVC 3/4 | 2d | 2026-09-28 | 2026-09-30 | 712 | 2026-09-28 | 2026-09-30 | 2d | 13d | 0d |
| 714 | 1.4.13.11 | Ramaleo hidráulico exterior CPVC 1/2 | 2d | 2026-09-28 | 2026-09-30 | 712 | 2026-09-28 | 2026-09-30 | 2d | 13d | 0d |
| 715 | 1.4.13.12 | Prueba hidráulica | 1d | 2026-09-30 | 2026-10-01 | 707, 711, 712, 713, 714 | 2026-09-30 | 2026-10-01 | 1d | 13d | 0d |
| 716 | 1.4.13.13 | Ramaleo sanitario exterior PVC 4 | 4d | 2026-09-25 | 2026-09-30 | 701, 702 | 2026-09-25 | 2026-09-30 | 4d | 13d | 0d |
| 717 | 1.4.13.14 | Ramaleo sanitario exterior PVC 2 | 3d | 2026-09-26 | 2026-09-30 | 716SS+1d | 2026-09-26 | 2026-09-30 | 3d | 13d | 0d |
| 718 | 1.4.13.15 | Prueba sanitaria | 1d | 2026-09-30 | 2026-10-01 | 708, 709, 710, 716, 717 | 2026-09-30 | 2026-10-01 | 1d | 13d | 0d |
| 719 | 1.4.13.16 | Centro de carga muros PB | 4d | 2026-09-29 | 2026-10-03 | 701FS+3d, 702FS+3d | 2026-09-29 | 2026-10-03 | 4d | 15d | 2d |
| 720 | 1.4.13.17 | Firme de concreto 8 cm | 4d | 2026-10-01 | 2026-10-06 | 715, 718, 722 | 2026-10-01 | 2026-10-06 | 4d | 63d | 0d |
| 721 | 1.4.13.18 | Curado de concreto | 1d | 2026-10-06 | 2026-10-07 | 720 | 2026-10-06 | 2026-10-07 | 1d | 63d | 17d |
| 722 | 1.4.13.19 | Cisterna 2800 L con instalación | 18d | 2026-09-01 | 2026-09-24 | 691, 698, 699 | 2026-09-01 | 2026-09-24 | 18d | 69d | 0d |
| 723 | 1.4.13.20 | Banqueta y huellas de concreto | 8d | 2026-10-08 | 2026-10-19 | 715, 718, 765, 833FS-2d, 842, 834 | 2026-10-08 | 2026-10-19 | 8d | 46d | 0d |
| 724 | 1.4.13.21 | Curado de concreto | 1d | 2026-10-19 | 2026-10-20 | 723 | 2026-10-19 | 2026-10-20 | 1d | 46d | 0d |
| 725 | 1.4.13.22 | Número oficial | 1d | 2026-11-18 | 2026-11-19 | 733, 734 | 2026-11-18 | 2026-11-19 | 1d | 46d |  |
| 726 | 1.4.13.23 | Detallado de rodapié exterior | 4d | 2026-10-03 | 2026-10-08 | 731 | 2026-10-03 | 2026-10-08 | 4d | 78d |  |
| 727 | 1.4.13.24 | Detalle de losas y volados acabado fino | 4d | 2026-09-25 | 2026-09-30 | 701, 702 | 2026-09-25 | 2026-09-30 | 4d | 17d | 4d |
| 728 | 1.4.13.25 | Detalle fino en muros interiores | 5d | 2026-09-28 | 2026-10-03 | 705, 706, 707, 708, 709, 710 | 2026-09-28 | 2026-10-03 | 5d | 14d | 1d |
| 729 | 1.4.13.26 | Jardín interior bajo escalera con pozo de absorción | 12d | 2026-09-25 | 2026-10-09 | 708FS-2d, 709FS-2d, 710FS-2d | 2026-09-25 | 2026-10-09 | 12d | 17d | 0d |

| ID | WBS | Task | Duration | Start | Finish | Predecessors | Baseline start | Baseline finish | Baseline duration | Total slack | Free slack |
| --- | --- | --- | --- | --- | --- | --- | --- | --- | --- | --- | --- |
| 730 | 1.4.14 | **ACABADOS EN FACHADA A** | 47d | 2026-09-18 | 2026-11-18 |  | 2026-09-18 | 2026-11-18 | 47d | 46d |  |
| 731 | 1.4.14.1 | Aplanado grueso fachada | 12d | 2026-09-18 | 2026-10-03 | 695 | 2026-09-18 | 2026-10-03 | 12d | 52d | 0d |
| 732 | 1.4.14.2 | Aplanado fino estuco fachada | 10d | 2026-09-28 | 2026-10-09 | 731SS+7d | 2026-09-28 | 2026-10-09 | 10d | 52d | 0d |
| 733 | 1.4.14.3 | Pintura acrílica 1-0102P | 8d | 2026-11-04 | 2026-11-13 | 721FS+5d, 724FS+12d, 735, 738 | 2026-11-04 | 2026-11-13 | 8d | 48d | 2d |
| 734 | 1.4.14.4 | Pintura acrílica 1-1404D | 10d | 2026-11-04 | 2026-11-18 | 721FS+5d, 724FS+12d, 735, 738 | 2026-11-04 | 2026-11-18 | 10d | 46d | 0d |
| 735 | 1.4.14.5 | Cantera 40x60cm | 14d | 2026-10-09 | 2026-10-27 | 731, 732 | 2026-10-09 | 2026-10-27 | 14d | 52d | 6d |
| 736 | 1.4.14.6 | Lambrin de permabase 1 cara | 3d | 2026-10-03 | 2026-10-07 | 731 | 2026-10-03 | 2026-10-07 | 3d | 59d | 0d |
| 737 | 1.4.14.7 | Enchapado de Permabase | 4d | 2026-10-07 | 2026-10-13 | 736 | 2026-10-07 | 2026-10-13 | 4d | 59d | 0d |
| 738 | 1.4.14.8 | Cubierta de Permabase | 5d | 2026-10-13 | 2026-10-19 | 737 | 2026-10-13 | 2026-10-19 | 5d | 59d | 13d |
| 739 | 1.4.15 | **APLANADOS Y PINTURA** | 63d | 2026-09-25 | 2026-12-14 |  | 2026-09-25 | 2026-12-14 | 63d | 15d |  |
| 740 | 1.4.15.1 | Yeso pulido en muros | 14d | 2026-10-05 | 2026-10-22 | 705, 706, 719FS-1d, 727, 728, 729FS-8d, 745FS-4d, 811FS-2d, 814, 815, 816, 817, 818FS-1d, 819FS-1d, 820FS-1d, 821FS-1d, 822FS-2d, 823FS-2d, 824FS-3d, 827FS-1d, 828FS-5d, 829FS-5d, 830FS-6d, 831FS-2d, 832FS-7d, 741 | 2026-10-05 | 2026-10-22 | 14d | 13d | 0d |
| 741 | 1.4.15.2 | Aplanado en muros enjarre grueso | 5d | 2026-09-25 | 2026-10-01 | 701, 702 | 2026-09-25 | 2026-10-01 | 5d | 16d | 3d |
| 742 | 1.4.15.3 | Pintura vinílica OR-W13 SHOELACE | 13d | 2026-11-27 | 2026-12-14 | 749FS-2d, 750FS-2d, 763FS-2d, 770, 771, 772, 773, 774, 775, 781, 782, 783, 784, 845, 846, 848, 849, 778, 779, 776, 777, 785 | 2026-11-27 | 2026-12-14 | 13d | 13d | 0d |
| 743 | 1.4.15.4 | Pintura vinílica PPUI5-13 Creamy M. | 10d | 2026-11-21 | 2026-12-03 | 749, 750, 763, 793, 794, 789, 787 | 2026-11-21 | 2026-12-03 | 10d | 21d | 8d |
| 744 | 1.4.15.5 | Pintura vinílica MD-06 Nano White | 8d | 2026-11-21 | 2026-12-01 | 749, 750, 763, 793, 794, 789, 787 | 2026-11-21 | 2026-12-01 | 8d | 23d | 10d |
| 745 | 1.4.15.6 | Yeso pulido en plafones | 10d | 2026-09-25 | 2026-10-07 | 701, 702 | 2026-09-25 | 2026-10-07 | 10d | 15d | 2d |
| 746 | 1.4.15.7 | Perfilado de puertas y ventanas | 4d | 2026-10-09 | 2026-10-15 | 740SS+4d | 2026-10-09 | 2026-10-15 | 4d | 73d |  |
| 747 | 1.4.16 | **PISOS Y AZULEJOS** | 24d | 2026-10-16 | 2026-11-17 |  | 2026-10-16 | 2026-11-17 | 24d | 13d |  |
| 748 | 1.4.16.1 | **AREA SOCIAL** | 15d | 2026-10-20 | 2026-11-07 |  | 2026-10-20 | 2026-11-07 | 15d | 13d |  |
| 749 | 1.4.16.1.1 | Piso Adhara 44X89 | 14d | 2026-10-20 | 2026-11-06 | 740FS-2d, 836, 835, 752FS-5d | 2026-10-20 | 2026-11-06 | 14d | 13d | 0d |
| 750 | 1.4.16.1.2 | Zoclo Adhara 44X89 | 5d | 2026-11-02 | 2026-11-07 | 749FS-4d | 2026-11-02 | 2026-11-07 | 5d | 30d | 10d |
| 751 | 1.4.16.2 | **RECAMARAS** | 8d | 2026-10-16 | 2026-10-26 |  | 2026-10-16 | 2026-10-26 | 8d | 13d |  |
| 752 | 1.4.16.2.1 | Acabado aparente de pisos - pulido | 8d | 2026-10-16 | 2026-10-26 | 740FS-5d | 2026-10-16 | 2026-10-26 | 8d | 13d | 0d |
| 753 | 1.4.16.3 | **BAÑOS** | 17d | 2026-10-17 | 2026-11-07 |  | 2026-10-17 | 2026-11-07 | 17d | 24d |  |
| 754 | 1.4.16.3.1 | Azulejo Mod. Ornamenta 60x30 | 5d | 2026-10-27 | 2026-11-02 | 755FS-1d, 825, 826, 836 | 2026-10-27 | 2026-11-02 | 5d | 24d | 0d |
| 755 | 1.4.16.3.2 | Impermeabilización en regadera | 2d | 2026-10-26 | 2026-10-27 | 740, 759 | 2026-10-26 | 2026-10-27 | 2d | 24d | 0d |
| 756 | 1.4.16.3.3 | Piso Mod. Valparaiso 20x20 | 4d | 2026-11-02 | 2026-11-06 | 754 | 2026-11-02 | 2026-11-06 | 4d | 24d | 0d |
| 757 | 1.4.16.3.4 | Zoclo Adhara 44X89 | 2d | 2026-11-05 | 2026-11-07 | 756FS-1d | 2026-11-05 | 2026-11-07 | 2d | 54d |  |
| 758 | 1.4.16.3.5 | Piso Adhara 44X89 | 3d | 2026-11-02 | 2026-11-05 | 754 | 2026-11-02 | 2026-11-05 | 3d | 56d |  |
| 759 | 1.4.16.3.6 | Fabricacion de nicho decorativo en baños | 6d | 2026-10-17 | 2026-10-24 | 740FS-4d | 2026-10-17 | 2026-10-24 | 6d | 24d | 0d |
| 760 | 1.4.16.3.7 | Sardinel en regadera | 4d | 2026-11-02 | 2026-11-06 | 754 | 2026-11-02 | 2026-11-06 | 4d | 55d |  |

| ID | WBS | Task | Duration | Start | Finish | Predecessors | Baseline start | Baseline finish | Baseline duration | Total slack | Free slack |
| --- | --- | --- | --- | --- | --- | --- | --- | --- | --- | --- | --- |
| 761 | 1.4.16.4 | **ESCALERA** | 9d | 2026-11-04 | 2026-11-17 |  | 2026-11-04 | 2026-11-17 | 9d | 13d |  |
| 762 | 1.4.16.4.1 | Piso Adhara 44X89 | 7d | 2026-11-04 | 2026-11-12 | 628, 740, 749FS-2d | 2026-11-04 | 2026-11-12 | 7d | 13d | 0d |
| 763 | 1.4.16.4.2 | Zoclo Adhara 44X89 | 4d | 2026-11-10 | 2026-11-17 | 762FS-2d | 2026-11-10 | 2026-11-17 | 4d | 13d | 0d |
| 764 | 1.4.17 | **EXTERIOR** | 3d | 2026-10-01 | 2026-10-05 |  | 2026-10-01 | 2026-10-05 | 3d | 18d |  |
| 765 | 1.4.17.1 | Rastrilleo, afine y nivelado de tierra | 3d | 2026-10-01 | 2026-10-05 | 715, 718 | 2026-10-01 | 2026-10-05 | 3d | 18d | 0d |
| 766 | 1.4.18 | **SEGUNDA LIMPIEZA DE OBRA** | 4d | 2026-11-17 | 2026-11-21 |  | 2026-11-17 | 2026-11-21 | 4d | 37d |  |
| 767 | 1.4.18.1 | Segunda limpieza de obra | 2d | 2026-11-17 | 2026-11-19 | 762, 763 | 2026-11-17 | 2026-11-19 | 2d | 37d | 0d |
| 768 | 1.4.18.2 | Segunda carga y acarreo de escombro | 2d | 2026-11-19 | 2026-11-21 | 767 | 2026-11-19 | 2026-11-21 | 2d | 37d | 24d |
| 769 | 1.4.19 | **CANCELERIA PUERTAS Y VENTANAS DE ALUMINIO** | 17d | 2026-11-04 | 2026-11-26 |  | 2026-11-04 | 2026-11-26 | 17d | 14d |  |
| 770 | 1.4.19.1 | Fijo medidas 0.30x4.90m | 7d | 2026-11-06 | 2026-11-17 | 740, 749 | 2026-11-06 | 2026-11-17 | 7d | 22d | 9d |
| 771 | 1.4.19.2 | Ventana Corrediza 1.80x1.60m | 4d | 2026-11-04 | 2026-11-09 | 740FS+10d | 2026-11-04 | 2026-11-09 | 4d | 27d | 14d |
| 772 | 1.4.19.3 | Ventana Corrediza 0.60x0.40m | 4d | 2026-11-06 | 2026-11-11 | 740FS+12d | 2026-11-06 | 2026-11-11 | 4d | 25d | 12d |
| 773 | 1.4.19.4 | Ventana Corrediza 1.54x0.50m | 4d | 2026-11-06 | 2026-11-11 | 740FS+12d | 2026-11-06 | 2026-11-11 | 4d | 25d | 12d |
| 774 | 1.4.19.5 | Fijo medidas 1.40x2.50m | 4d | 2026-11-10 | 2026-11-17 | 740FS+10d, 749FS+3d | 2026-11-10 | 2026-11-17 | 4d | 16d | 0d |
| 775 | 1.4.19.6 | Ventana Corrediza 1.80x1.50m | 4d | 2026-11-12 | 2026-11-19 | 740FS+7d, 749FS+2d, 762 | 2026-11-12 | 2026-11-19 | 4d | 14d | 0d |
| 776 | 1.4.19.7 | Ventana Corrediza 1.40x1.60m | 4d | 2026-11-12 | 2026-11-19 | 740, 749, 762 | 2026-11-12 | 2026-11-19 | 4d | 14d | 0d |
| 777 | 1.4.19.8 | Ventana Corrediza 0.95x0.40m | 4d | 2026-11-12 | 2026-11-19 | 740, 749, 762 | 2026-11-12 | 2026-11-19 | 4d | 14d | 0d |
| 778 | 1.4.19.9 | Puerta corrediza 3.85x2.10m | 6d | 2026-11-17 | 2026-11-24 | 774 | 2026-11-17 | 2026-11-24 | 6d | 16d | 3d |
| 779 | 1.4.19.10 | Barandal de Cristal Templado | 6d | 2026-11-19 | 2026-11-26 | 775, 776, 777 | 2026-11-19 | 2026-11-26 | 6d | 14d | 1d |
| 780 | 1.4.20 | **CARPINTERIA, PUERTAS EXTERIORES E INTERIORES** | 9d | 2026-11-17 | 2026-11-27 |  | 2026-11-17 | 2026-11-27 | 9d | 13d |  |
| 781 | 1.4.20.1 | Puerta P-01 de seguridad | 5d | 2026-11-17 | 2026-11-23 | 763 | 2026-11-17 | 2026-11-23 | 5d | 17d | 4d |
| 782 | 1.4.20.2 | Puerta P-01 interior | 8d | 2026-11-17 | 2026-11-26 | 763 | 2026-11-17 | 2026-11-26 | 8d | 14d | 1d |
| 783 | 1.4.20.3 | Puerta P-02 interior | 8d | 2026-11-17 | 2026-11-26 | 763 | 2026-11-17 | 2026-11-26 | 8d | 14d | 1d |
| 784 | 1.4.20.4 | Puerta P-03 interior | 4d | 2026-11-23 | 2026-11-27 | 763FS+5d | 2026-11-23 | 2026-11-27 | 4d | 13d | 0d |
| 785 | 1.4.20.5 | Puerta P-04 interior | 4d | 2026-11-23 | 2026-11-27 | 763FS+5d | 2026-11-23 | 2026-11-27 | 4d | 13d | 0d |

| ID | WBS | Task | Duration | Start | Finish | Predecessors | Baseline start | Baseline finish | Baseline duration | Total slack | Free slack |
| --- | --- | --- | --- | --- | --- | --- | --- | --- | --- | --- | --- |
| 786 | 1.4.21 | **VOLADOS, BARANDAL Y ESCALERA** | 33d | 2026-10-09 | 2026-11-21 |  | 2026-10-09 | 2026-11-21 | 33d | 21d |  |
| 787 | 1.4.21.1 | Barandal de Herreria en escalera | 4d | 2026-10-28 | 2026-11-02 | 788FS-4d | 2026-10-28 | 2026-11-02 | 4d | 36d | 15d |
| 788 | 1.4.21.2 | Escalera de herreria | 18d | 2026-10-09 | 2026-11-02 | 729 | 2026-10-09 | 2026-11-02 | 18d | 21d | 0d |
| 789 | 1.4.21.3 | Techumbre en acceso Principal | 14d | 2026-10-27 | 2026-11-12 | 788FS-5d | 2026-10-27 | 2026-11-12 | 14d | 27d | 6d |
| 790 | 1.4.21.4 | Techumbre en 1.80x0.50m | 7d | 2026-10-27 | 2026-11-04 | 788FS-5d | 2026-10-27 | 2026-11-04 | 7d | 21d | 0d |
| 791 | 1.4.21.5 | Techumbre en 1.40x0.50m | 7d | 2026-11-04 | 2026-11-12 | 790 | 2026-11-04 | 2026-11-12 | 7d | 21d | 0d |
| 792 | 1.4.21.6 | Imper con manto prefabricado | 5d | 2026-11-07 | 2026-11-13 | 790, 791FS-4d | 2026-11-07 | 2026-11-13 | 5d | 21d | 0d |
| 793 | 1.4.21.7 | Plafon hoja tablaroca std | 5d | 2026-11-13 | 2026-11-21 | 792 | 2026-11-13 | 2026-11-21 | 5d | 21d | 0d |
| 794 | 1.4.21.8 | Acabado Woodstock en parte inf. Cubierta | 5d | 2026-11-13 | 2026-11-21 | 792 | 2026-11-13 | 2026-11-21 | 5d | 21d | 0d |
| 795 | 1.4.22 | **INSTALACION ELECTRICA** | 16d | 2026-10-17 | 2026-11-06 |  | 2026-10-17 | 2026-11-06 | 16d | 42d |  |
| 796 | 1.4.22.1 | Alimentación eléctrica base a centro de carga | 5d | 2026-10-22 | 2026-10-28 | 719, 740 | 2026-10-22 | 2026-10-28 | 5d | 46d | 0d |
| 797 | 1.4.22.2 | Interruptor termomagnético 1x20 A | 1d | 2026-10-29 | 2026-10-29 | 796 | 2026-10-29 | 2026-10-29 | 1d | 46d | 4d |
| 798 | 1.4.22.3 | Interruptor termomagnético 2x20 A | 1d | 2026-10-29 | 2026-10-29 | 796 | 2026-10-29 | 2026-10-29 | 1d | 46d | 4d |
| 799 | 1.4.22.4 | Salida para apagador 3 vías | 4d | 2026-10-17 | 2026-10-22 | 701, 740FS-4d | 2026-10-17 | 2026-10-22 | 4d | 42d | 0d |
| 800 | 1.4.22.5 | Salida para apagador doble | 3d | 2026-10-22 | 2026-10-26 | 799 | 2026-10-22 | 2026-10-26 | 3d | 44d | 0d |
| 801 | 1.4.22.6 | Salida para apagador sencillo | 3d | 2026-10-22 | 2026-10-26 | 799 | 2026-10-22 | 2026-10-26 | 3d | 44d | 0d |
| 802 | 1.4.22.7 | Salida de alumbrado en losa | 5d | 2026-10-22 | 2026-10-28 | 799 | 2026-10-22 | 2026-10-28 | 5d | 42d | 0d |
| 803 | 1.4.22.8 | Salida para contacto exterior doble | 2d | 2026-10-22 | 2026-10-24 | 799 | 2026-10-22 | 2026-10-24 | 2d | 45d | 3d |
| 804 | 1.4.22.9 | Salida para contacto 220 V | 3d | 2026-10-26 | 2026-10-28 | 799FS+2d | 2026-10-26 | 2026-10-28 | 3d | 42d | 0d |
| 805 | 1.4.22.10 | Salida para contacto doble | 5d | 2026-10-26 | 2026-10-30 | 799FS+2d | 2026-10-26 | 2026-10-30 | 5d | 45d | 3d |
| 806 | 1.4.22.11 | Salida para contacto doble área húmeda | 2d | 2026-10-29 | 2026-10-30 | 803, 804 | 2026-10-29 | 2026-10-30 | 2d | 45d | 3d |
| 807 | 1.4.22.12 | Salida TV / telefonía / intercom | 4d | 2026-10-29 | 2026-11-03 | 803, 804 | 2026-10-29 | 2026-11-03 | 4d | 43d | 1d |
| 808 | 1.4.22.13 | Extractor 4 baño | 5d | 2026-10-29 | 2026-11-04 | 803, 804 | 2026-10-29 | 2026-11-04 | 5d | 42d | 0d |
| 809 | 1.4.22.14 | Prueba eléctrica | 2d | 2026-11-04 | 2026-11-06 | 796, 797, 798, 799, 800, 801, 802, 803, 804, 805, 806, 807, 808, 862, 863, 869, 864, 865, 867, 868, 871, 873 | 2026-11-04 | 2026-11-06 | 2d | 42d | 29d |

| ID | WBS | Task | Duration | Start | Finish | Predecessors | Baseline start | Baseline finish | Baseline duration | Total slack | Free slack |
| --- | --- | --- | --- | --- | --- | --- | --- | --- | --- | --- | --- |
| 810 | 1.4.23 | **INSTALACIÓN HIDRO-SANITARIA** | 11d | 2026-10-01 | 2026-10-15 |  | 2026-10-01 | 2026-10-15 | 11d | 13d |  |
| 811 | 1.4.23.1 | Tubería condensados PVC 1 | 5d | 2026-10-01 | 2026-10-07 | 715 | 2026-10-01 | 2026-10-07 | 5d | 13d | 0d |
| 812 | 1.4.23.2 | Tubería sanitaria PVC 4 | 5d | 2026-10-01 | 2026-10-07 | 718 | 2026-10-01 | 2026-10-07 | 5d | 21d | 0d |
| 813 | 1.4.23.3 | Coladera H-444 | 1d | 2026-10-07 | 2026-10-08 | 812 | 2026-10-07 | 2026-10-08 | 1d | 21d | 4d |
| 814 | 1.4.23.4 | Caja PVC para lavadora | 3d | 2026-10-01 | 2026-10-05 | 715 | 2026-10-01 | 2026-10-05 | 3d | 13d | 0d |
| 815 | 1.4.23.5 | Salida para secadora PVC 4 | 3d | 2026-10-01 | 2026-10-05 | 718 | 2026-10-01 | 2026-10-05 | 3d | 13d | 0d |
| 816 | 1.4.23.6 | Salida hidráulica para boiler | 2d | 2026-10-01 | 2026-10-03 | 715 | 2026-10-01 | 2026-10-03 | 2d | 14d | 1d |
| 817 | 1.4.23.7 | Salida hidráulica para llave de jardín | 3d | 2026-10-01 | 2026-10-05 | 715 | 2026-10-01 | 2026-10-05 | 3d | 13d | 0d |
| 818 | 1.4.23.8 | Salida hidráulica para lavabo | 4d | 2026-10-01 | 2026-10-06 | 715 | 2026-10-01 | 2026-10-06 | 4d | 13d | 0d |
| 819 | 1.4.23.9 | Salida hidráulica para purificación | 4d | 2026-10-01 | 2026-10-06 | 715 | 2026-10-01 | 2026-10-06 | 4d | 13d | 0d |
| 820 | 1.4.23.10 | Salida sanitaria para lavabo | 2d | 2026-10-03 | 2026-10-06 | 715FS+2d | 2026-10-03 | 2026-10-06 | 2d | 13d | 0d |
| 821 | 1.4.23.11 | Salida hidráulica para lavadero | 2d | 2026-10-03 | 2026-10-06 | 715FS+2d | 2026-10-03 | 2026-10-06 | 2d | 13d | 0d |
| 822 | 1.4.23.12 | Salida sanitaria para lavadero | 2d | 2026-10-05 | 2026-10-07 | 715FS+3d | 2026-10-05 | 2026-10-07 | 2d | 13d | 0d |
| 823 | 1.4.23.13 | Salida hidráulica para lavadora | 2d | 2026-10-05 | 2026-10-07 | 715FS+3d | 2026-10-05 | 2026-10-07 | 2d | 13d | 0d |
| 824 | 1.4.23.14 | Salida sanitaria para lavadora | 2d | 2026-10-06 | 2026-10-08 | 718FS+4d | 2026-10-06 | 2026-10-08 | 2d | 13d | 0d |
| 825 | 1.4.23.15 | Salida hidráulica para regadera | 5d | 2026-10-06 | 2026-10-13 | 715FS+4d | 2026-10-06 | 2026-10-13 | 5d | 18d | 0d |
| 826 | 1.4.23.16 | Salida sanitaria para regadera | 4d | 2026-10-06 | 2026-10-12 | 718FS+4d | 2026-10-06 | 2026-10-12 | 4d | 19d | 2d |
| 827 | 1.4.23.17 | Salida hidráulica para WC | 2d | 2026-10-03 | 2026-10-06 | 718FS+2d | 2026-10-03 | 2026-10-06 | 2d | 13d | 0d |
| 828 | 1.4.23.18 | Salida sanitaria para WC | 4d | 2026-10-06 | 2026-10-12 | 718FS+4d | 2026-10-06 | 2026-10-12 | 4d | 13d | 0d |
| 829 | 1.4.23.19 | Salida hidráulica para zinc | 4d | 2026-10-06 | 2026-10-12 | 718FS+4d | 2026-10-06 | 2026-10-12 | 4d | 13d | 0d |
| 830 | 1.4.23.20 | Salida sanitaria para zinc | 3d | 2026-10-08 | 2026-10-13 | 718FS+6d | 2026-10-08 | 2026-10-13 | 3d | 13d | 0d |
| 831 | 1.4.23.21 | Tubo para ventila de baño 2 | 5d | 2026-10-01 | 2026-10-07 | 811SS | 2026-10-01 | 2026-10-07 | 5d | 13d | 0d |
| 832 | 1.4.23.22 | Tubo para minisplit PVC 3 | 5d | 2026-10-07 | 2026-10-14 | 831 | 2026-10-07 | 2026-10-14 | 5d | 13d | 0d |
| 833 | 1.4.23.23 | Cuadro de medición | 5d | 2026-10-05 | 2026-10-12 | 765 | 2026-10-05 | 2026-10-12 | 5d | 18d | 0d |
| 834 | 1.4.23.24 | Pozo de absorción 0.50x0.50x0.50 | 3d | 2026-10-05 | 2026-10-08 | 765 | 2026-10-05 | 2026-10-08 | 3d | 21d | 0d |
| 835 | 1.4.23.25 | Prueba sanitaria final | 1d | 2026-10-14 | 2026-10-15 | 811, 812, 813, 815, 820, 822, 824, 826, 828, 831, 832 | 2026-10-14 | 2026-10-15 | 1d | 17d | 4d |
| 836 | 1.4.23.26 | Prueba hidrostática final | 1d | 2026-10-13 | 2026-10-14 | 816, 817, 818, 819, 821, 823, 825, 827, 829, 833, 834, 839, 840, 838, 837 | 2026-10-13 | 2026-10-14 | 1d | 18d | 5d |
| 837 | 1.4.23.27 | Salida válvula control 19 mm | 1d | 2026-10-12 | 2026-10-13 | 833 | 2026-10-12 | 2026-10-13 | 1d | 18d | 0d |
| 838 | 1.4.23.28 | Salida válvula control 13 mm | 1d | 2026-10-12 | 2026-10-13 | 833 | 2026-10-12 | 2026-10-13 | 1d | 18d | 0d |
| 839 | 1.4.23.29 | Salida hidráulica para tanque hidroneumático | 3d | 2026-10-05 | 2026-10-08 | 765 | 2026-10-05 | 2026-10-08 | 3d | 21d | 3d |
| 840 | 1.4.23.30 | Salida hidráulica para Active Driver | 3d | 2026-10-05 | 2026-10-08 | 765 | 2026-10-05 | 2026-10-08 | 3d | 21d | 3d |

| ID | WBS | Task | Duration | Start | Finish | Predecessors | Baseline start | Baseline finish | Baseline duration | Total slack | Free slack |
| --- | --- | --- | --- | --- | --- | --- | --- | --- | --- | --- | --- |
| 841 | 1.4.24 | **INSTALACION DE GAS** | 8d | 2026-09-29 | 2026-10-08 |  | 2026-09-29 | 2026-10-08 | 8d | 46d |  |
| 842 | 1.4.24.1 | Ramaleo para gas 1/2 | 5d | 2026-10-02 | 2026-10-08 | 765FS-2d, 843 | 2026-10-02 | 2026-10-08 | 5d | 46d | 0d |
| 843 | 1.4.24.2 | Excavación a mano material tipo B | 3d | 2026-09-29 | 2026-10-02 | 765FF-2d | 2026-09-29 | 2026-10-02 | 3d | 46d | 0d |
| 844 | 1.4.25 | **MUEBLES SANITARIOS** | 29d | 2026-11-06 | 2026-12-14 |  | 2026-11-06 | 2026-12-14 | 29d | 25d |  |
| 845 | 1.4.25.1 | WC completo Austral | 2d | 2026-11-06 | 2026-11-09 | 749, 756, 835, 836 | 2026-11-06 | 2026-11-09 | 2d | 27d | 14d |
| 846 | 1.4.25.2 | Lavabo Senna con pedestal | 4d | 2026-11-06 | 2026-11-11 | 749, 754, 756, 835, 836 | 2026-11-06 | 2026-11-11 | 4d | 25d | 12d |
| 847 | 1.4.25.3 | Tarja / lavabo combo Guinea 80x45 | 2d | 2026-11-06 | 2026-11-09 | 593, 749, 754, 756, 836 | 2026-11-06 | 2026-11-09 | 2d | 53d |  |
| 848 | 1.4.25.4 | Regadera con monomando | 3d | 2026-11-09 | 2026-11-12 | 749, 754FS+2d, 756FS+2d, 835, 836 | 2026-11-09 | 2026-11-12 | 3d | 24d | 11d |
| 849 | 1.4.25.5 | Coladera inserto cerámico | 2d | 2026-11-10 | 2026-11-12 | 754, 756FS+3d, 836 | 2026-11-10 | 2026-11-12 | 2d | 24d | 11d |
| 850 | 1.4.25.6 | Toallero sencillo | 1d | 2026-12-12 | 2026-12-14 | 742FS-1d | 2026-12-12 | 2026-12-14 | 1d | 13d | 0d |
| 851 | 1.4.25.7 | Toallero barra | 1d | 2026-12-12 | 2026-12-14 | 742FS-1d | 2026-12-12 | 2026-12-14 | 1d | 13d | 0d |
| 852 | 1.4.25.8 | Portapapel | 1d | 2026-12-12 | 2026-12-14 | 742FS-1d | 2026-12-12 | 2026-12-14 | 1d | 13d | 0d |
| 853 | 1.4.25.9 | Gancho baño | 1d | 2026-12-12 | 2026-12-14 | 742FS-1d | 2026-12-12 | 2026-12-14 | 1d | 13d | 0d |
| 854 | 1.4.26 | **EQUIPAMIENTO** | 6d | 2026-09-23 | 2026-09-30 |  | 2026-09-23 | 2026-09-30 | 6d | 72d |  |
| 855 | 1.4.26.1 | Electronivel Rotoplas 5 m | 2d | 2026-09-24 | 2026-09-26 | 860 | 2026-09-24 | 2026-09-26 | 2d | 75d | 62d |
| 856 | 1.4.26.2 | Manómetro | 1d | 2026-09-24 | 2026-09-25 | 860 | 2026-09-24 | 2026-09-25 | 1d | 76d | 63d |
| 857 | 1.4.26.3 | Interruptor de presión 30-50 PSI | 1d | 2026-09-24 | 2026-09-25 | 860 | 2026-09-24 | 2026-09-25 | 1d | 76d | 63d |
| 858 | 1.4.26.4 | Tanque hidroneumático FPS-24LX | 3d | 2026-09-24 | 2026-09-28 | 860 | 2026-09-24 | 2026-09-28 | 3d | 72d | 0d |
| 859 | 1.4.26.5 | Bomba sumergible Dominator 1.2 HP | 2d | 2026-09-28 | 2026-09-30 | 858 | 2026-09-28 | 2026-09-30 | 2d | 72d | 59d |
| 860 | 1.4.26.6 | Cisterna prefabricada 2800 L | 1d | 2026-09-23 | 2026-09-24 | 722FF | 2026-09-23 | 2026-09-24 | 1d | 72d | 0d |
| 861 | 1.4.27 | **LUMINARIAS** | 5d | 2026-10-29 | 2026-11-04 |  | 2026-10-29 | 2026-11-04 | 5d | 42d |  |
| 862 | 1.4.27.1 | Roseta cerámica | 3d | 2026-10-29 | 2026-11-02 | 802 | 2026-10-29 | 2026-11-02 | 3d | 44d | 2d |
| 863 | 1.4.27.2 | Luminaria lagartijera LED | 3d | 2026-10-29 | 2026-11-02 | 802 | 2026-10-29 | 2026-11-02 | 3d | 44d | 2d |
| 864 | 1.4.27.3 | Spot 6W Tecnolite | 3d | 2026-10-29 | 2026-11-02 | 802 | 2026-10-29 | 2026-11-02 | 3d | 44d | 2d |
| 865 | 1.4.27.4 | Spot 7W Tecnolite | 3d | 2026-10-29 | 2026-11-02 | 802 | 2026-10-29 | 2026-11-02 | 3d | 44d | 2d |
| 866 | 1.4.27.5 | Arbotante exterior | 2d | 2026-10-29 | 2026-10-30 | 802 | 2026-10-29 | 2026-10-30 | 2d | 42d | 0d |
| 867 | 1.4.27.6 | Estaca LED exterior | 3d | 2026-10-31 | 2026-11-04 | 866 | 2026-10-31 | 2026-11-04 | 3d | 42d | 0d |
| 868 | 1.4.27.7 | Tira LED | 3d | 2026-10-31 | 2026-11-04 | 866 | 2026-10-31 | 2026-11-04 | 3d | 42d | 0d |
| 869 | 1.4.27.8 | Spot exterior 50W | 2d | 2026-10-29 | 2026-10-30 | 802 | 2026-10-29 | 2026-10-30 | 2d | 45d | 3d |

| ID | WBS | Task | Type | Duration | Start | Finish | Predecessors | Baseline start | Baseline finish | Baseline duration | Total slack | Free slack | Resources | Cost | Baseline cost |
| --- | --- | --- | --- | --- | --- | --- | --- | --- | --- | --- | --- | --- | --- | --- | --- |
| 870 | 1.4.28 | **TIMBRE** |  | 2d | 2026-10-30 | 2026-11-02 |  | 2026-10-30 | 2026-11-02 | 2d | 44d |  |  |  |  |
| 871 | 1.4.28.1 | Timbre inalámbrico con bocina |  | 2d | 2026-10-30 | 2026-11-02 | 800FS+3d, 801FS+3d | 2026-10-30 | 2026-11-02 | 2d | 44d | 2d |  |  |  |
| 872 | 1.4.29 | **OBRA EXTERIOR - BARDA** |  | 18d | 2026-10-05 | 2026-10-27 |  | 2026-10-05 | 2026-10-27 | 18d | 50d |  |  |  |  |
| 873 | 1.4.29.1 | Murete convencional |  | 5d | 2026-10-12 | 2026-10-17 | 765FS+5d | 2026-10-12 | 2026-10-17 | 5d | 56d | 14d |  |  |  |
| 874 | 1.4.29.2 | Barda de block aparente |  | 18d | 2026-10-05 | 2026-10-27 | 765 | 2026-10-05 | 2026-10-27 | 18d | 50d | 37d |  |  |  |
| 875 | 1.4.30 | **TERCER LIMPIEZA DE OBRA** |  | 13d | 2026-12-14 | 2027-01-04 |  | 2026-12-14 | 2027-01-04 | 13d | 13d |  |  |  |  |
| 876 | 1.4.30.1 | Limpieza fina para entrega |  | 6d | 2026-12-14 | 2026-12-21 | 742, 743, 744, 775, 784, 785, 809, 835, 836, 850, 851, 852, 853, 855, 856, 857, 858, 859, 874 | 2026-12-14 | 2026-12-21 | 6d | 13d | 0d |  |  |  |
| 877 | 1.4.30.2 | Tercera limpieza de obra |  | 4d | 2026-12-22 | 2026-12-29 | 768, 876 | 2026-12-22 | 2026-12-29 | 4d | 13d | 0d |  |  |  |
| 878 | 1.4.30.3 | Tercera carga y acarreo de escombro |  | 3d | 2026-12-29 | 2027-01-04 | 877 | 2026-12-29 | 2027-01-04 | 3d | 13d | 0d |  |  |  |
| 879 | 1.5 | **LOTE 20 M-663 ARTICO-A** |  | 181d | 2026-05-29 | 2027-01-18 |  | 2026-05-29 | 2027-01-18 | 181d | 2d |  |  | 9,070.2 | 9,070.2 |
| 880 | 1.5.1 | **HITOS IMPORTANTES DEL LOTE** |  | 181d | 2026-05-29 | 2027-01-18 |  | 2026-05-29 | 2027-01-18 | 181d | 2d |  |  |  |  |
| 881 | 1.5.1.1 | Inicio del LOTE 20 M-663 ARTICO-A | milestone | 0d | 2026-05-29 | 2026-05-29 | 6FS+11d | 2026-05-29 | 2026-05-29 |  | 2d | 0d |  |  |  |
| 882 | 1.5.1.2 | Colado de Losa de Cimentación | milestone | 0d | 2026-06-19 | 2026-06-19 | 913 | 2026-06-19 | 2026-06-19 |  | 166d |  |  |  |  |
| 883 | 1.5.1.3 | Colado de Losa de Entrepiso | milestone | 0d | 2026-07-28 | 2026-07-28 | 949 | 2026-07-28 | 2026-07-28 |  | 136d |  |  |  |  |
| 884 | 1.5.1.4 | Colado de Losa de Azotea | milestone | 0d | 2026-09-02 | 2026-09-02 | 989 | 2026-09-02 | 2026-09-02 |  | 106d |  |  |  |  |
| 885 | 1.5.1.5 | Entrega de vivienda | milestone | 0d | 2027-01-18 | 2027-01-18 | 1181, 1182, 1183 | 2027-01-18 | 2027-01-18 |  | 2d |  |  |  |  |
| 886 | 1.5.2 | **TRABAJOS PRELIMINARES** |  | 2d | 2026-05-29 | 2026-06-02 |  | 2026-05-29 | 2026-06-02 | 2d | 2d |  |  | 9,070.2 | 9,070.2 |
| 887 | 1.5.2.1 | Trazo y nivelación |  | 2d | 2026-05-29 | 2026-06-02 | 881 | 2026-05-29 | 2026-06-02 | 2d | 2d | 0d | Corsac - Trazo y nivelación | 9,070.2 | 9,070.2 |
| 888 | 1.5.3 | **EXCAVACIONES** |  | 3d | 2026-06-02 | 2026-06-05 |  | 2026-06-02 | 2026-06-05 | 3d | 2d |  |  |  |  |
| 889 | 1.5.3.1 | Excavación a mano material tipo B |  | 3d | 2026-06-02 | 2026-06-05 | 887 | 2026-06-02 | 2026-06-05 | 3d | 2d | 0d |  |  |  |
| 890 | 1.5.3.2 | Acarreo en carretilla 20 m |  | 2d | 2026-06-03 | 2026-06-05 | 889SS+1d | 2026-06-03 | 2026-06-05 | 2d | 2d | 0d |  |  |  |
| 891 | 1.5.4 | **CIMENTACION** |  | 13d | 2026-06-05 | 2026-06-22 |  | 2026-06-05 | 2026-06-22 | 13d | 2d |  |  |  |  |
| 892 | 1.5.4.1 | Cimbra perimetral losa de cimentación |  | 3d | 2026-06-05 | 2026-06-09 | 889, 890 | 2026-06-05 | 2026-06-09 | 3d | 2d | 0d |  |  |  |
| 893 | 1.5.4.2 | Sistema antitermitas PVC |  | 3d | 2026-06-05 | 2026-06-09 | 889, 890 | 2026-06-05 | 2026-06-09 | 3d | 3d | 0d |  |  |  |
| 894 | 1.5.4.3 | Hule negro en cimentación |  | 1d | 2026-06-09 | 2026-06-10 | 893 | 2026-06-09 | 2026-06-10 | 1d | 3d | 0d |  |  |  |
| 895 | 1.5.4.4 | Ramaleo poliducto eléctrico cimentación |  | 2d | 2026-06-10 | 2026-06-12 | 894 | 2026-06-10 | 2026-06-12 | 2d | 6d | 0d |  |  |  |
| 896 | 1.5.4.5 | Ramaleo eléctrico base-medición a centro de carga |  | 1d | 2026-06-10 | 2026-06-11 | 894 | 2026-06-10 | 2026-06-11 | 1d | 7d | 1d |  |  |  |
| 897 | 1.5.4.6 | Ramaleo eléctrico exterior |  | 1d | 2026-06-12 | 2026-06-13 | 895, 896 | 2026-06-12 | 2026-06-13 | 1d | 6d | 4d |  |  |  |
| 898 | 1.5.4.7 | Ramaleo para cable poliducto 3/4 |  | 1d | 2026-06-12 | 2026-06-13 | 895, 896 | 2026-06-12 | 2026-06-13 | 1d | 6d | 4d |  |  |  |
| 899 | 1.5.4.8 | Ramaleo para TV poliducto 3/4 |  | 1d | 2026-06-12 | 2026-06-13 | 895, 896 | 2026-06-12 | 2026-06-13 | 1d | 6d | 4d |  |  |  |
| 900 | 1.5.4.9 | Ramaleo hidráulico CPVC 1-1/4" cimentación |  | 1d | 2026-06-10 | 2026-06-11 | 894 | 2026-06-10 | 2026-06-11 | 1d | 3d | 0d |  |  |  |
| 901 | 1.5.4.10 | Ramaleo hidráulico CPVC 1 cimentación |  | 1d | 2026-06-10 | 2026-06-11 | 894, 900SS | 2026-06-10 | 2026-06-11 | 1d | 3d | 0d |  |  |  |
| 902 | 1.5.4.11 | Ramaleo hidráulico CPVC 3/4 cimentación |  | 2d | 2026-06-11 | 2026-06-13 | 901 | 2026-06-11 | 2026-06-13 | 2d | 3d | 0d |  |  |  |
| 903 | 1.5.4.12 | Ramaleo hidráulico CPVC 1/2 cimentación |  | 2d | 2026-06-13 | 2026-06-16 | 902 | 2026-06-13 | 2026-06-16 | 2d | 3d | 0d |  |  |  |
| 904 | 1.5.4.13 | Prueba hidráulica |  | 1d | 2026-06-16 | 2026-06-17 | 900, 901, 902, 903 | 2026-06-16 | 2026-06-17 | 1d | 3d | 1d |  |  |  |
| 905 | 1.5.4.14 | Ramaleo sanitario PVC 4 cimentación |  | 2d | 2026-06-11 | 2026-06-13 | 894FS+1d | 2026-06-11 | 2026-06-13 | 2d | 4d | 0d |  |  |  |
| 906 | 1.5.4.15 | Ramaleo sanitario PVC 2 cimentación |  | 1d | 2026-06-13 | 2026-06-15 | 905 | 2026-06-13 | 2026-06-15 | 1d | 4d | 0d |  |  |  |
| 907 | 1.5.4.16 | Prueba sanitaria |  | 1d | 2026-06-15 | 2026-06-16 | 905, 906 | 2026-06-15 | 2026-06-16 | 1d | 4d | 2d |  |  |  |
| 908 | 1.5.4.17 | Acero contratrabe CT-1 |  | 4d | 2026-06-09 | 2026-06-13 | 892 | 2026-06-09 | 2026-06-13 | 4d | 2d | 0d |  |  |  |
| 909 | 1.5.4.18 | Acero contratrabe CT-2 |  | 4d | 2026-06-09 | 2026-06-13 | 892 | 2026-06-09 | 2026-06-13 | 4d | 2d | 0d |  |  |  |
| 910 | 1.5.4.19 | Malla electrosoldada 6-6/8-8 |  | 2d | 2026-06-16 | 2026-06-18 | 908, 909, 911, 912 | 2026-06-16 | 2026-06-18 | 2d | 2d | 0d |  |  |  |
| 911 | 1.5.4.20 | Bastón de refuerzo LS |  | 2d | 2026-06-13 | 2026-06-16 | 908, 909 | 2026-06-13 | 2026-06-16 | 2d | 2d | 0d |  |  |  |
| 912 | 1.5.4.21 | Bastón de refuerzo LI |  | 2d | 2026-06-13 | 2026-06-16 | 908, 909 | 2026-06-13 | 2026-06-16 | 2d | 2d | 0d |  |  |  |
| 913 | 1.5.4.22 | Colado losa de cimentación f’c=200 |  | 1d | 2026-06-18 | 2026-06-19 | 892, 894, 897, 898, 899, 904, 907, 908, 909, 910, 911, 912, 915, 916 | 2026-06-18 | 2026-06-19 | 1d | 2d | 0d |  |  |  |
| 914 | 1.5.4.23 | Curado de concreto |  | 1d | 2026-06-19 | 2026-06-22 | 913 | 2026-06-19 | 2026-06-22 | 1d | 2d | 0d |  |  |  |
| 915 | 1.5.4.24 | Acero zapata ZT-1 |  | 4d | 2026-06-13 | 2026-06-18 | 908, 909 | 2026-06-13 | 2026-06-18 | 4d | 2d | 0d |  |  |  |
| 916 | 1.5.4.25 | Acero zapata ZT-2 |  | 4d | 2026-06-13 | 2026-06-18 | 908, 909 | 2026-06-13 | 2026-06-18 | 4d | 2d | 0d |  |  |  |

| ID | WBS | Task | Duration | Start | Finish | Predecessors | Baseline start | Baseline finish | Baseline duration | Total slack | Free slack |
| --- | --- | --- | --- | --- | --- | --- | --- | --- | --- | --- | --- |
| 917 | 1.5.5 | **MUROS, PLANTA BAJA. CASTILLOS Y CERRAMIENTOS** | 20d | 2026-06-15 | 2026-07-09 |  | 2026-06-15 | 2026-07-09 | 20d | 7d |  |
| 918 | 1.5.5.1 | Anclaje de castillos y Columnas PB | 5d | 2026-06-15 | 2026-06-22 | 908FS+1d, 909FS+1d | 2026-06-15 | 2026-06-22 | 5d | 153d | 0d |
| 919 | 1.5.5.2 | Castillo K1 | 4d | 2026-06-22 | 2026-06-26 | 914, 918 | 2026-06-22 | 2026-06-26 | 4d | 153d | 0d |
| 920 | 1.5.5.3 | Castillo K3 | 3d | 2026-06-24 | 2026-06-27 | 919FS-2d | 2026-06-24 | 2026-06-27 | 3d | 153d | 0d |
| 921 | 1.5.5.4 | Castillo K4 | 3d | 2026-06-24 | 2026-06-27 | 919FS-2d | 2026-06-24 | 2026-06-27 | 3d | 153d | 0d |
| 922 | 1.5.5.5 | Castillo K5 | 3d | 2026-06-26 | 2026-06-30 | 920FS-1d, 921FS-1d | 2026-06-26 | 2026-06-30 | 3d | 153d | 0d |
| 923 | 1.5.5.6 | Refuerzo de muro K6 | 3d | 2026-06-27 | 2026-07-01 | 922FS-2d | 2026-06-27 | 2026-07-01 | 3d | 153d | 0d |
| 924 | 1.5.5.7 | Dala de cerramiento CR-1 | 4d | 2026-06-27 | 2026-07-02 | 919, 920 | 2026-06-27 | 2026-07-02 | 4d | 156d |  |
| 925 | 1.5.5.8 | Dala de cerramiento CR-2 | 3d | 2026-06-27 | 2026-07-01 | 919, 920 | 2026-06-27 | 2026-07-01 | 3d | 157d |  |
| 926 | 1.5.5.9 | Cadena block dala | 4d | 2026-07-01 | 2026-07-06 | 923 | 2026-07-01 | 2026-07-06 | 4d | 153d |  |
| 927 | 1.5.5.10 | Muro de ladrillo aparente | 15d | 2026-06-22 | 2026-07-09 | 914 | 2026-06-22 | 2026-07-09 | 15d | 2d | 0d |
| 928 | 1.5.5.11 | Muro de block planta baja | 13d | 2026-06-24 | 2026-07-09 | 914FS+2d | 2026-06-24 | 2026-07-09 | 13d | 2d | 0d |
| 929 | 1.5.5.12 | Ramaleo electrico en Muros Planta Baja | 4d | 2026-06-27 | 2026-07-02 | 927SS+5d | 2026-06-27 | 2026-07-02 | 4d | 5d | 0d |
| 930 | 1.5.5.13 | Ramaleo para cable poliducto 3/4 | 2d | 2026-07-02 | 2026-07-04 | 929 | 2026-07-02 | 2026-07-04 | 2d | 5d | 0d |
| 931 | 1.5.5.14 | Ramaleo para TV poliducto 3/4 | 3d | 2026-07-06 | 2026-07-08 | 930 | 2026-07-06 | 2026-07-08 | 3d | 5d | 2d |
| 932 | 1.5.6 | **ESCALERA** | 10d | 2026-07-28 | 2026-08-08 |  | 2026-07-28 | 2026-08-08 | 10d | 79d |  |
| 933 | 1.5.6.1 | Escalera de concreto armado | 10d | 2026-07-28 | 2026-08-08 | 949 | 2026-07-28 | 2026-08-08 | 10d | 79d | 77d |
| 934 | 1.5.7 | **LOSA DE ENTREPISO (viegueta y caseton)** | 17d | 2026-07-08 | 2026-07-29 |  | 2026-07-08 | 2026-07-29 | 17d | 5d |  |
| 935 | 1.5.7.1 | Dala de coronamiento 10cm | 3d | 2026-07-16 | 2026-07-20 | 951FS-1d, 937, 938, 939, 940, 941, 942 | 2026-07-16 | 2026-07-20 | 3d | 5d | 3d |
| 936 | 1.5.7.2 | Dala de coronamiento 12cm | 3d | 2026-07-17 | 2026-07-21 | 951, 937, 938, 939, 940, 941, 942 | 2026-07-17 | 2026-07-21 | 3d | 4d | 2d |
| 937 | 1.5.7.3 | Trabe TR-1 | 3d | 2026-07-08 | 2026-07-10 | 927FS-2d, 928FS-2d | 2026-07-08 | 2026-07-10 | 3d | 6d | 4d |
| 938 | 1.5.7.4 | Trabe TR-2 | 4d | 2026-07-09 | 2026-07-14 | 927FS-1d, 928FS-1d | 2026-07-09 | 2026-07-14 | 4d | 4d | 2d |
| 939 | 1.5.7.5 | Nervadura NR-1 | 4d | 2026-07-10 | 2026-07-15 | 927, 928 | 2026-07-10 | 2026-07-15 | 4d | 3d | 1d |
| 940 | 1.5.7.6 | Nervadura NR-2 | 4d | 2026-07-11 | 2026-07-16 | 927FS+1d, 928FS+1d | 2026-07-11 | 2026-07-16 | 4d | 2d | 0d |
| 941 | 1.5.7.7 | Nervadura NR-3 | 4d | 2026-07-11 | 2026-07-16 | 927FS+1d, 928FS+1d | 2026-07-11 | 2026-07-16 | 4d | 2d | 0d |
| 942 | 1.5.7.8 | Nervadura NR-4 | 4d | 2026-07-11 | 2026-07-16 | 927FS+1d, 928FS+1d | 2026-07-11 | 2026-07-16 | 4d | 2d | 0d |
| 943 | 1.5.7.9 | Acero de refuerzo en nervios #3 | 2d | 2026-07-16 | 2026-07-18 | 937, 938, 939, 940, 941, 942 | 2026-07-16 | 2026-07-18 | 2d | 2d | 0d |
| 944 | 1.5.7.10 | Acero de refuerzo long. #3 | 3d | 2026-07-17 | 2026-07-21 | 937, 938, 939, 940, 941, 942, 951 | 2026-07-17 | 2026-07-21 | 3d | 3d | 0d |
| 945 | 1.5.7.11 | Acero de refuerzo long. #4 | 3d | 2026-07-17 | 2026-07-21 | 944SS | 2026-07-17 | 2026-07-21 | 3d | 3d | 0d |
| 946 | 1.5.7.12 | Malla 66-10/10 losa de compresión | 2d | 2026-07-23 | 2026-07-27 | 935, 936, 943, 956, 959, 948 | 2026-07-23 | 2026-07-27 | 2d | 2d | 0d |
| 947 | 1.5.7.13 | Acero de Losa Maciza | 3d | 2026-07-16 | 2026-07-20 | 939, 940, 941, 942 | 2026-07-16 | 2026-07-20 | 3d | 7d | 5d |
| 948 | 1.5.7.14 | Caseton de 60x60x20cm | 2d | 2026-07-16 | 2026-07-18 | 939, 940, 941, 942 | 2026-07-16 | 2026-07-18 | 2d | 6d | 4d |
| 949 | 1.5.7.15 | Concreto losa de entrepiso f’c=200 | 1d | 2026-07-27 | 2026-07-28 | 944, 945, 946, 947, 956, 959, 952, 961 | 2026-07-27 | 2026-07-28 | 1d | 2d | 0d |
| 950 | 1.5.7.16 | Curado de concreto | 1d | 2026-07-28 | 2026-07-29 | 949 | 2026-07-28 | 2026-07-29 | 1d | 2d | 0d |
| 951 | 1.5.7.17 | Cimbra losa de azotea | 5d | 2026-07-11 | 2026-07-17 | 927FS+1d, 928FS+1d, 931 | 2026-07-11 | 2026-07-17 | 5d | 3d | 0d |
| 952 | 1.5.7.18 | Cimbra exterior corta losa | 3d | 2026-07-20 | 2026-07-23 | 944FS-1d, 945FS-1d | 2026-07-20 | 2026-07-23 | 3d | 4d | 2d |
| 953 | 1.5.7.19 | Ramaleo poliducto eléctrico entrepiso | 2d | 2026-07-18 | 2026-07-21 | 943 | 2026-07-18 | 2026-07-21 | 2d | 141d |  |
| 954 | 1.5.7.20 | Ramaleo hidráulico CPVC 3/4" | 2d | 2026-07-20 | 2026-07-22 | 943FS+1d | 2026-07-20 | 2026-07-22 | 2d | 2d | 0d |
| 955 | 1.5.7.21 | Ramaleo hidráulico CPVC 1/2" | 1d | 2026-07-22 | 2026-07-23 | 954 | 2026-07-22 | 2026-07-23 | 1d | 2d | 0d |
| 956 | 1.5.7.22 | Prueba hidráulica | 1d | 2026-07-22 | 2026-07-23 | 954, 955FS-1d | 2026-07-22 | 2026-07-23 | 1d | 2d | 0d |
| 957 | 1.5.7.23 | Ramaleo sanitario PVC 4" | 2d | 2026-07-20 | 2026-07-22 | 943FS+1d | 2026-07-20 | 2026-07-22 | 2d | 2d | 0d |
| 958 | 1.5.7.24 | Ramaleo sanitario PVC 2" | 1d | 2026-07-22 | 2026-07-23 | 957 | 2026-07-22 | 2026-07-23 | 1d | 2d | 0d |
| 959 | 1.5.7.25 | Prueba sanitaria | 1d | 2026-07-22 | 2026-07-23 | 957, 958FS-1d | 2026-07-22 | 2026-07-23 | 1d | 2d | 0d |

| ID | WBS | Task | Duration | Start | Finish | Predecessors | Baseline start | Baseline finish | Baseline duration | Total slack | Free slack |
| --- | --- | --- | --- | --- | --- | --- | --- | --- | --- | --- | --- |
| 960 | 1.5.8 | **MUROS EN PLANTA ALTA, CASTILLOS Y CERRM.** | 22d | 2026-07-20 | 2026-08-17 |  | 2026-07-20 | 2026-08-17 | 22d | 3d |  |
| 961 | 1.5.8.1 | Anclaje de castillos y Columnas PA | 4d | 2026-07-20 | 2026-07-24 | 944FS-1d, 945FS-1d | 2026-07-20 | 2026-07-24 | 4d | 3d | 1d |
| 962 | 1.5.8.2 | Castillo K1 | 4d | 2026-07-29 | 2026-08-03 | 950 | 2026-07-29 | 2026-08-03 | 4d | 6d | 0d |
| 963 | 1.5.8.3 | Castillo K2 | 4d | 2026-07-30 | 2026-08-04 | 950FS+1d | 2026-07-30 | 2026-08-04 | 4d | 5d | 0d |
| 964 | 1.5.8.4 | Castillo K4 | 3d | 2026-08-03 | 2026-08-06 | 962 | 2026-08-03 | 2026-08-06 | 3d | 6d | 1d |
| 965 | 1.5.8.5 | Castillo K5 | 3d | 2026-08-03 | 2026-08-06 | 962 | 2026-08-03 | 2026-08-06 | 3d | 6d | 1d |
| 966 | 1.5.8.6 | Castillo K6 | 3d | 2026-08-03 | 2026-08-06 | 962 | 2026-08-03 | 2026-08-06 | 3d | 6d | 1d |
| 967 | 1.5.8.7 | Refuerzo de muro | 3d | 2026-08-04 | 2026-08-07 | 962, 963 | 2026-08-04 | 2026-08-07 | 3d | 5d | 0d |
| 968 | 1.5.8.8 | Dala de cerramiento CR-1 | 4d | 2026-08-07 | 2026-08-12 | 964, 965, 966, 967 | 2026-08-07 | 2026-08-12 | 4d | 5d | 0d |
| 969 | 1.5.8.9 | Dala de cerramiento CR-2 | 4d | 2026-08-07 | 2026-08-12 | 964, 965, 966, 967 | 2026-08-07 | 2026-08-12 | 4d | 5d | 0d |
| 970 | 1.5.8.10 | Cadena block dala | 3d | 2026-08-12 | 2026-08-17 | 967, 968, 969 | 2026-08-12 | 2026-08-17 | 3d | 5d | 0d |
| 971 | 1.5.8.11 | Muro de ladrillo aparente | 15d | 2026-07-29 | 2026-08-17 | 950 | 2026-07-29 | 2026-08-17 | 15d | 2d | 0d |
| 972 | 1.5.8.12 | Muro de block planta alta | 14d | 2026-07-30 | 2026-08-17 | 950FS+1d | 2026-07-30 | 2026-08-17 | 14d | 2d | 0d |
| 973 | 1.5.8.13 | Ramaleo electrico en Muros Planta Alta | 4d | 2026-08-07 | 2026-08-12 | 971SS+8d | 2026-08-07 | 2026-08-12 | 4d | 13d | 3d |
| 974 | 1.5.9 | **LOSA AZOTEA** | 15d | 2026-08-17 | 2026-09-03 |  | 2026-08-17 | 2026-09-03 | 15d | 2d |  |
| 975 | 1.5.9.1 | Cortalosa CL-1 | 2d | 2026-08-31 | 2026-09-01 | 987 | 2026-08-31 | 2026-09-01 | 2d | 2d | 0d |
| 976 | 1.5.9.2 | Cortalosa CL-2 | 2d | 2026-08-31 | 2026-09-01 | 987 | 2026-08-31 | 2026-09-01 | 2d | 2d | 0d |
| 977 | 1.5.9.3 | Vigueta pretensada V11-30 125 | 5d | 2026-08-17 | 2026-08-22 | 970, 971, 972 | 2026-08-17 | 2026-08-22 | 5d | 5d | 3d |
| 978 | 1.5.9.4 | Vigueta pretensada V11-30 185 | 5d | 2026-08-17 | 2026-08-22 | 971, 972 | 2026-08-17 | 2026-08-22 | 5d | 5d | 3d |
| 979 | 1.5.9.5 | Vigueta pretensada V11-30 190 | 5d | 2026-08-17 | 2026-08-22 | 971, 972 | 2026-08-17 | 2026-08-22 | 5d | 5d | 3d |
| 980 | 1.5.9.6 | Vigueta pretensada V11-30 205 | 5d | 2026-08-19 | 2026-08-25 | 971FS+2d, 972FS+2d | 2026-08-19 | 2026-08-25 | 5d | 3d | 1d |
| 981 | 1.5.9.7 | Vigueta pretensada V11-30 215 | 5d | 2026-08-19 | 2026-08-25 | 971FS+2d, 972FS+2d | 2026-08-19 | 2026-08-25 | 5d | 3d | 1d |
| 982 | 1.5.9.8 | Vigueta pretensada V11-30 260 | 5d | 2026-08-20 | 2026-08-26 | 971FS+3d, 972FS+3d | 2026-08-20 | 2026-08-26 | 5d | 2d | 0d |
| 983 | 1.5.9.9 | Vigueta pretensada V11-30 285 | 5d | 2026-08-20 | 2026-08-26 | 971FS+3d, 972FS+3d | 2026-08-20 | 2026-08-26 | 5d | 2d | 0d |
| 984 | 1.5.9.10 | Vigueta pretensada V11-40 330 | 5d | 2026-08-20 | 2026-08-26 | 971FS+3d, 972 | 2026-08-20 | 2026-08-26 | 5d | 2d | 0d |
| 985 | 1.5.9.11 | Vigueta pretensada V11-40 335 | 5d | 2026-08-20 | 2026-08-26 | 971FS+3d, 972 | 2026-08-20 | 2026-08-26 | 5d | 2d | 0d |
| 986 | 1.5.9.12 | Vigueta pretensada V11-40 505 | 5d | 2026-08-20 | 2026-08-26 | 971FS+3d, 972 | 2026-08-20 | 2026-08-26 | 5d | 2d | 0d |
| 987 | 1.5.9.13 | Bovedilla poliestireno azotea | 3d | 2026-08-26 | 2026-08-29 | 977, 978, 979, 980, 981, 982, 983, 984, 985, 986 | 2026-08-26 | 2026-08-29 | 3d | 2d | 0d |
| 988 | 1.5.9.14 | Malla 66-10/10 losa de compresión | 2d | 2026-08-31 | 2026-09-01 | 987 | 2026-08-31 | 2026-09-01 | 2d | 2d | 0d |
| 989 | 1.5.9.15 | Concreto losa de azotea f’c=200 | 1d | 2026-09-02 | 2026-09-02 | 975, 976, 987, 988, 992, 991 | 2026-09-02 | 2026-09-02 | 1d | 2d | 0d |
| 990 | 1.5.9.16 | Curado de concreto | 1d | 2026-09-03 | 2026-09-03 | 989 | 2026-09-03 | 2026-09-03 | 1d | 2d | 0d |
| 991 | 1.5.9.17 | Cimbra losa de azotea | 5d | 2026-08-17 | 2026-08-22 | 971, 972, 973 | 2026-08-17 | 2026-08-22 | 5d | 10d | 8d |
| 992 | 1.5.9.18 | Ramaleo de poliducto para inst. electrica en azotea | 2d | 2026-08-31 | 2026-09-01 | 987 | 2026-08-31 | 2026-09-01 | 2d | 2d | 0d |

| ID | WBS | Task | Duration | Start | Finish | Predecessors | Baseline start | Baseline finish | Baseline duration | Total slack | Free slack |
| --- | --- | --- | --- | --- | --- | --- | --- | --- | --- | --- | --- |
| 993 | 1.5.10 | **PRETIL Y ACABADOS DE AZOTEA** | 19d | 2026-09-04 | 2026-09-29 |  | 2026-09-04 | 2026-09-29 | 19d | 2d |  |
| 994 | 1.5.10.1 | Castillo K1 | 5d | 2026-09-07 | 2026-09-12 | 996SS+2d | 2026-09-07 | 2026-09-12 | 5d | 2d | 0d |
| 995 | 1.5.10.2 | Dala de cerramiento en pretil | 4d | 2026-09-10 | 2026-09-15 | 994FS-2d, 996FS-2d | 2026-09-10 | 2026-09-15 | 4d | 2d | 0d |
| 996 | 1.5.10.3 | Muro de block 12x15x40 | 5d | 2026-09-04 | 2026-09-10 | 990 | 2026-09-04 | 2026-09-10 | 5d | 2d | 0d |
| 997 | 1.5.10.4 | Chaflán en azotea | 4d | 2026-09-12 | 2026-09-18 | 994, 996 | 2026-09-12 | 2026-09-18 | 4d | 2d | 0d |
| 998 | 1.5.10.5 | Diamante de entortado | 4d | 2026-09-12 | 2026-09-18 | 994, 996 | 2026-09-12 | 2026-09-18 | 4d | 2d | 0d |
| 999 | 1.5.10.6 | Aplanado exterior Mortermax fino | 5d | 2026-09-15 | 2026-09-23 | 995, 997FS-2d, 998FS-2d | 2026-09-15 | 2026-09-23 | 5d | 2d | 0d |
| 1000 | 1.5.10.7 | Entortado de Losa | 4d | 2026-09-24 | 2026-09-29 | 1001 | 2026-09-24 | 2026-09-29 | 4d | 2d | 0d |
| 1001 | 1.5.10.8 | Curado de concreto | 1d | 2026-09-23 | 2026-09-24 | 997, 999 | 2026-09-23 | 2026-09-24 | 1d | 2d | 0d |
| 1002 | 1.5.11 | **PRIMERA LIMPIEZA DE OBRA** | 4d | 2026-09-04 | 2026-09-09 |  | 2026-09-04 | 2026-09-09 | 4d | 62d |  |
| 1003 | 1.5.11.1 | Primera limpieza de obra | 2d | 2026-09-04 | 2026-09-07 | 990 | 2026-09-04 | 2026-09-07 | 2d | 62d | 0d |
| 1004 | 1.5.11.2 | Primera carga y acarreo de escombro | 2d | 2026-09-07 | 2026-09-09 | 1003 | 2026-09-07 | 2026-09-09 | 2d | 62d | 1d |
| 1005 | 1.5.12 | **IMPERMEABILIZACION** | 5d | 2026-09-29 | 2026-10-05 |  | 2026-09-29 | 2026-10-05 | 5d | 2d |  |
| 1006 | 1.5.12.1 | Impermeabilización de pretil Kover 5 años | 4d | 2026-09-29 | 2026-10-03 | 1000 | 2026-09-29 | 2026-10-03 | 4d | 3d | 1d |
| 1007 | 1.5.12.2 | Impermeabilización de losa Kover 5 años | 5d | 2026-09-29 | 2026-10-05 | 1000 | 2026-09-29 | 2026-10-05 | 5d | 2d | 0d |
| 1008 | 1.5.13 | **ALBAÑILERIA** | 62d | 2026-09-10 | 2026-11-28 |  | 2026-09-10 | 2026-11-28 | 62d | 21d |  |
| 1009 | 1.5.13.1 | Lavadero de granito | 4d | 2026-10-26 | 2026-10-29 | 1045SS+8d | 2026-10-26 | 2026-10-29 | 4d | 61d |  |
| 1010 | 1.5.13.2 | Ranurado y resane general inst. en muros | 3d | 2026-10-02 | 2026-10-06 | 1007FS-2d | 2026-10-02 | 2026-10-06 | 3d | 4d | 1d |
| 1011 | 1.5.13.3 | Ranurado y resane eléctrico 1/2 a 3/4 | 3d | 2026-10-02 | 2026-10-06 | 1007FS-2d | 2026-10-02 | 2026-10-06 | 3d | 4d | 1d |
| 1012 | 1.5.13.4 | Ranurado y resane hidráulico 1/2 a 1 | 2d | 2026-10-05 | 2026-10-07 | 1007 | 2026-10-05 | 2026-10-07 | 2d | 3d | 0d |
| 1013 | 1.5.13.5 | Resane sanitario tubería 2 | 2d | 2026-10-05 | 2026-10-07 | 1007 | 2026-10-05 | 2026-10-07 | 2d | 3d | 0d |
| 1014 | 1.5.13.6 | Resane sanitario tubería 4 | 2d | 2026-10-05 | 2026-10-07 | 1007 | 2026-10-05 | 2026-10-07 | 2d | 3d | 0d |
| 1015 | 1.5.13.7 | Resane minisplit tubería 3 | 2d | 2026-10-05 | 2026-10-07 | 1007 | 2026-10-05 | 2026-10-07 | 2d | 3d | 0d |
| 1016 | 1.5.13.8 | Ramaleo hidráulico exterior CPVC 1 1/4 | 3d | 2026-10-05 | 2026-10-08 | 1006, 1007 | 2026-10-05 | 2026-10-08 | 3d | 2d | 0d |
| 1017 | 1.5.13.9 | Ramaleo hidráulico exterior CPVC 1 | 2d | 2026-10-05 | 2026-10-07 | 1016SS | 2026-10-05 | 2026-10-07 | 2d | 2d | 0d |
| 1018 | 1.5.13.10 | Ramaleo hidráulico exterior CPVC 3/4 | 2d | 2026-10-07 | 2026-10-09 | 1017 | 2026-10-07 | 2026-10-09 | 2d | 2d | 0d |
| 1019 | 1.5.13.11 | Ramaleo hidráulico exterior CPVC 1/2 | 2d | 2026-10-07 | 2026-10-09 | 1017 | 2026-10-07 | 2026-10-09 | 2d | 2d | 0d |
| 1020 | 1.5.13.12 | Prueba hidráulica | 1d | 2026-10-09 | 2026-10-12 | 1012, 1016, 1017, 1018, 1019 | 2026-10-09 | 2026-10-12 | 1d | 2d | 0d |
| 1021 | 1.5.13.13 | Ramaleo sanitario exterior PVC 4 | 4d | 2026-10-05 | 2026-10-09 | 1006, 1007 | 2026-10-05 | 2026-10-09 | 4d | 2d | 0d |
| 1022 | 1.5.13.14 | Ramaleo sanitario exterior PVC 2 | 3d | 2026-10-06 | 2026-10-09 | 1021SS+1d | 2026-10-06 | 2026-10-09 | 3d | 2d | 0d |
| 1023 | 1.5.13.15 | Prueba sanitaria | 1d | 2026-10-09 | 2026-10-12 | 1013, 1014, 1015, 1021, 1022 | 2026-10-09 | 2026-10-12 | 1d | 2d | 0d |
| 1024 | 1.5.13.16 | Centro de carga muros PB | 4d | 2026-10-08 | 2026-10-14 | 1006FS+3d, 1007FS+3d | 2026-10-08 | 2026-10-14 | 4d | 4d | 2d |
| 1025 | 1.5.13.17 | Firme de concreto 8 cm | 4d | 2026-10-12 | 2026-10-16 | 1020, 1023, 1027 | 2026-10-12 | 2026-10-16 | 4d | 55d | 0d |
| 1026 | 1.5.13.18 | Curado de concreto | 1d | 2026-10-16 | 2026-10-17 | 1025 | 2026-10-16 | 2026-10-17 | 1d | 55d | 17d |
| 1027 | 1.5.13.19 | Cisterna 2800 L con instalación | 18d | 2026-09-10 | 2026-10-03 | 996, 1003, 1004 | 2026-09-10 | 2026-10-03 | 18d | 61d | 0d |
| 1028 | 1.5.13.20 | Banqueta y huellas de concreto | 8d | 2026-10-19 | 2026-10-28 | 1020, 1023, 1070, 1138FS-2d, 1147, 1139 | 2026-10-19 | 2026-10-28 | 8d | 38d | 0d |
| 1029 | 1.5.13.21 | Curado de concreto | 1d | 2026-10-29 | 2026-10-29 | 1028 | 2026-10-29 | 2026-10-29 | 1d | 38d | 0d |
| 1030 | 1.5.13.22 | Número oficial | 1d | 2026-11-27 | 2026-11-28 | 1038, 1039 | 2026-11-27 | 2026-11-28 | 1d | 38d |  |
| 1031 | 1.5.13.23 | Detallado de rodapié exterior | 4d | 2026-10-14 | 2026-10-19 | 1036 | 2026-10-14 | 2026-10-19 | 4d | 70d |  |
| 1032 | 1.5.13.24 | Detalle de losas y volados acabado fino | 4d | 2026-10-05 | 2026-10-09 | 1006, 1007 | 2026-10-05 | 2026-10-09 | 4d | 6d | 4d |
| 1033 | 1.5.13.25 | Detalle fino en muros interiores | 5d | 2026-10-07 | 2026-10-14 | 1010, 1011, 1012, 1013, 1014, 1015 | 2026-10-07 | 2026-10-14 | 5d | 3d | 1d |
| 1034 | 1.5.13.26 | Jardín interior bajo escalera con pozo de absorción | 12d | 2026-10-05 | 2026-10-20 | 1013FS-2d, 1014FS-2d, 1015FS-2d | 2026-10-05 | 2026-10-20 | 12d | 6d | 0d |

| ID | WBS | Task | Duration | Start | Finish | Predecessors | Baseline start | Baseline finish | Baseline duration | Total slack | Free slack |
| --- | --- | --- | --- | --- | --- | --- | --- | --- | --- | --- | --- |
| 1035 | 1.5.14 | **ACABADOS EN FACHADA A** | 47d | 2026-09-29 | 2026-11-27 |  | 2026-09-29 | 2026-11-27 | 47d | 38d |  |
| 1036 | 1.5.14.1 | Aplanado grueso fachada | 12d | 2026-09-29 | 2026-10-14 | 1000 | 2026-09-29 | 2026-10-14 | 12d | 44d | 0d |
| 1037 | 1.5.14.2 | Aplanado fino estuco fachada | 10d | 2026-10-07 | 2026-10-20 | 1036SS+7d | 2026-10-07 | 2026-10-20 | 10d | 44d | 0d |
| 1038 | 1.5.14.3 | Pintura acrílica 1-0102P | 8d | 2026-11-13 | 2026-11-25 | 1026FS+5d, 1029FS+12d, 1040, 1043 | 2026-11-13 | 2026-11-25 | 8d | 40d | 2d |
| 1039 | 1.5.14.4 | Pintura acrílica 1-1404D | 10d | 2026-11-13 | 2026-11-27 | 1026FS+5d, 1029FS+12d, 1040, 1043 | 2026-11-13 | 2026-11-27 | 10d | 38d | 0d |
| 1040 | 1.5.14.5 | Cantera 40x60cm | 14d | 2026-10-20 | 2026-11-06 | 1036, 1037 | 2026-10-20 | 2026-11-06 | 14d | 44d | 6d |
| 1041 | 1.5.14.6 | Lambrin de permabase 1 cara | 3d | 2026-10-14 | 2026-10-17 | 1036 | 2026-10-14 | 2026-10-17 | 3d | 51d | 0d |
| 1042 | 1.5.14.7 | Enchapado de Permabase | 4d | 2026-10-17 | 2026-10-22 | 1041 | 2026-10-17 | 2026-10-22 | 4d | 51d | 0d |
| 1043 | 1.5.14.8 | Cubierta de Permabase | 5d | 2026-10-22 | 2026-10-28 | 1042 | 2026-10-22 | 2026-10-28 | 5d | 51d | 13d |
| 1044 | 1.5.15 | **APLANADOS Y PINTURA** | 63d | 2026-10-05 | 2026-12-23 |  | 2026-10-05 | 2026-12-23 | 63d | 4d |  |
| 1045 | 1.5.15.1 | Yeso pulido en muros | 14d | 2026-10-15 | 2026-11-02 | 1010, 1011, 1024FS-1d, 1032, 1033, 1034FS-8d, 1050FS-4d, 1116FS-2d, 1119, 1120, 1121, 1122, 1123FS-1d, 1124FS-1d, 1125FS-1d, 1126FS-1d, 1127FS-2d, 1128FS-2d, 1129FS-3d, 1132FS-1d, 1133FS-5d, 1134FS-5d, 1135FS-6d, 1136FS-2d, 1137FS-7d, 1046 | 2026-10-15 | 2026-11-02 | 14d | 2d | 0d |
| 1046 | 1.5.15.2 | Aplanado en muros enjarre grueso | 5d | 2026-10-05 | 2026-10-12 | 1006, 1007 | 2026-10-05 | 2026-10-12 | 5d | 5d | 3d |
| 1047 | 1.5.15.3 | Pintura vinílica OR-W13 SHOELACE | 13d | 2026-12-08 | 2026-12-23 | 1054FS-2d, 1055FS-2d, 1068FS-2d, 1075, 1076, 1077, 1078, 1079, 1080, 1086, 1087, 1088, 1089, 1150, 1151, 1153, 1154, 1083, 1084, 1081, 1082, 1090 | 2026-12-08 | 2026-12-23 | 13d | 2d | 0d |
| 1048 | 1.5.15.4 | Pintura vinílica PPUI5-13 Creamy M. | 10d | 2026-12-01 | 2026-12-14 | 1054, 1055, 1068, 1098, 1099, 1094, 1092 | 2026-12-01 | 2026-12-14 | 10d | 10d | 8d |
| 1049 | 1.5.15.5 | Pintura vinílica MD-06 Nano White | 8d | 2026-12-01 | 2026-12-11 | 1054, 1055, 1068, 1098, 1099, 1094, 1092 | 2026-12-01 | 2026-12-11 | 8d | 12d | 10d |
| 1050 | 1.5.15.6 | Yeso pulido en plafones | 10d | 2026-10-05 | 2026-10-17 | 1006, 1007 | 2026-10-05 | 2026-10-17 | 10d | 4d | 2d |
| 1051 | 1.5.15.7 | Perfilado de puertas y ventanas | 4d | 2026-10-20 | 2026-10-24 | 1045SS+4d | 2026-10-20 | 2026-10-24 | 4d | 65d |  |
| 1052 | 1.5.16 | **PISOS Y AZULEJOS** | 24d | 2026-10-27 | 2026-11-26 |  | 2026-10-27 | 2026-11-26 | 24d | 2d |  |
| 1053 | 1.5.16.1 | **AREA SOCIAL** | 15d | 2026-10-30 | 2026-11-19 |  | 2026-10-30 | 2026-11-19 | 15d | 2d |  |
| 1054 | 1.5.16.1.1 | Piso Adhara 44X89 | 14d | 2026-10-30 | 2026-11-18 | 1045FS-2d, 1141, 1140, 1057FS-5d | 2026-10-30 | 2026-11-18 | 14d | 2d | 0d |
| 1055 | 1.5.16.1.2 | Zoclo Adhara 44X89 | 5d | 2026-11-11 | 2026-11-19 | 1054FS-4d | 2026-11-11 | 2026-11-19 | 5d | 19d | 10d |
| 1056 | 1.5.16.2 | **RECAMARAS** | 8d | 2026-10-27 | 2026-11-05 |  | 2026-10-27 | 2026-11-05 | 8d | 2d |  |
| 1057 | 1.5.16.2.1 | Acabado aparente de pisos - pulido | 8d | 2026-10-27 | 2026-11-05 | 1045FS-5d | 2026-10-27 | 2026-11-05 | 8d | 2d | 0d |
| 1058 | 1.5.16.3 | **BAÑOS** | 17d | 2026-10-28 | 2026-11-19 |  | 2026-10-28 | 2026-11-19 | 17d | 13d |  |
| 1059 | 1.5.16.3.1 | Azulejo Mod. Ornamenta 60x30 | 5d | 2026-11-05 | 2026-11-11 | 1060FS-1d, 1130, 1131, 1141 | 2026-11-05 | 2026-11-11 | 5d | 13d | 0d |
| 1060 | 1.5.16.3.2 | Impermeabilización en regadera | 2d | 2026-11-04 | 2026-11-06 | 1045, 1064 | 2026-11-04 | 2026-11-06 | 2d | 13d | 0d |
| 1061 | 1.5.16.3.3 | Piso Mod. Valparaiso 20x20 | 4d | 2026-11-11 | 2026-11-18 | 1059 | 2026-11-11 | 2026-11-18 | 4d | 13d | 0d |
| 1062 | 1.5.16.3.4 | Zoclo Adhara 44X89 | 2d | 2026-11-17 | 2026-11-19 | 1061FS-1d | 2026-11-17 | 2026-11-19 | 2d | 46d |  |
| 1063 | 1.5.16.3.5 | Piso Adhara 44X89 | 3d | 2026-11-11 | 2026-11-17 | 1059 | 2026-11-11 | 2026-11-17 | 3d | 48d |  |
| 1064 | 1.5.16.3.6 | Fabricacion de nicho decorativo en baños | 6d | 2026-10-28 | 2026-11-04 | 1045FS-4d | 2026-10-28 | 2026-11-04 | 6d | 13d | 0d |
| 1065 | 1.5.16.3.7 | Sardinel en regadera | 4d | 2026-11-11 | 2026-11-18 | 1059 | 2026-11-11 | 2026-11-18 | 4d | 47d |  |

| ID | WBS | Task | Duration | Start | Finish | Predecessors | Baseline start | Baseline finish | Baseline duration | Total slack | Free slack |
| --- | --- | --- | --- | --- | --- | --- | --- | --- | --- | --- | --- |
| 1066 | 1.5.16.4 | **ESCALERA** | 9d | 2026-11-13 | 2026-11-26 |  | 2026-11-13 | 2026-11-26 | 9d | 2d |  |
| 1067 | 1.5.16.4.1 | Piso Adhara 44X89 | 7d | 2026-11-13 | 2026-11-24 | 933, 1045, 1054FS-2d | 2026-11-13 | 2026-11-24 | 7d | 2d | 0d |
| 1068 | 1.5.16.4.2 | Zoclo Adhara 44X89 | 4d | 2026-11-21 | 2026-11-26 | 1067FS-2d | 2026-11-21 | 2026-11-26 | 4d | 2d | 0d |
| 1069 | 1.5.17 | **EXTERIOR** | 3d | 2026-10-12 | 2026-10-15 |  | 2026-10-12 | 2026-10-15 | 3d | 7d |  |
| 1070 | 1.5.17.1 | Rastrilleo, afine y nivelado de tierra | 3d | 2026-10-12 | 2026-10-15 | 1020, 1023 | 2026-10-12 | 2026-10-15 | 3d | 7d | 0d |
| 1071 | 1.5.18 | **SEGUNDA LIMPIEZA DE OBRA** | 4d | 2026-11-26 | 2026-12-01 |  | 2026-11-26 | 2026-12-01 | 4d | 25d |  |
| 1072 | 1.5.18.1 | Segunda limpieza de obra | 2d | 2026-11-26 | 2026-11-28 | 1067, 1068 | 2026-11-26 | 2026-11-28 | 2d | 25d | 0d |
| 1073 | 1.5.18.2 | Segunda carga y acarreo de escombro | 2d | 2026-11-28 | 2026-12-01 | 1072 | 2026-11-28 | 2026-12-01 | 2d | 25d | 23d |
| 1074 | 1.5.19 | **CANCELERIA PUERTAS Y VENTANAS DE ALUMINIO** | 17d | 2026-11-13 | 2026-12-07 |  | 2026-11-13 | 2026-12-07 | 17d | 3d |  |
| 1075 | 1.5.19.1 | Fijo medidas 0.30x4.90m | 7d | 2026-11-18 | 2026-11-26 | 1045, 1054 | 2026-11-18 | 2026-11-26 | 7d | 11d | 9d |
| 1076 | 1.5.19.2 | Ventana Corrediza 1.80x1.60m | 4d | 2026-11-13 | 2026-11-20 | 1045FS+10d | 2026-11-13 | 2026-11-20 | 4d | 16d | 14d |
| 1077 | 1.5.19.3 | Ventana Corrediza 0.60x0.40m | 4d | 2026-11-18 | 2026-11-23 | 1045FS+12d | 2026-11-18 | 2026-11-23 | 4d | 14d | 12d |
| 1078 | 1.5.19.4 | Ventana Corrediza 1.54x0.50m | 4d | 2026-11-18 | 2026-11-23 | 1045FS+12d | 2026-11-18 | 2026-11-23 | 4d | 14d | 12d |
| 1079 | 1.5.19.5 | Fijo medidas 1.40x2.50m | 4d | 2026-11-21 | 2026-11-26 | 1045FS+10d, 1054FS+3d | 2026-11-21 | 2026-11-26 | 4d | 5d | 0d |
| 1080 | 1.5.19.6 | Ventana Corrediza 1.80x1.50m | 4d | 2026-11-24 | 2026-11-28 | 1045FS+7d, 1054FS+2d, 1067 | 2026-11-24 | 2026-11-28 | 4d | 3d | 0d |
| 1081 | 1.5.19.7 | Ventana Corrediza 1.40x1.60m | 4d | 2026-11-24 | 2026-11-28 | 1045, 1054, 1067 | 2026-11-24 | 2026-11-28 | 4d | 3d | 0d |
| 1082 | 1.5.19.8 | Ventana Corrediza 0.95x0.40m | 4d | 2026-11-24 | 2026-11-28 | 1045, 1054, 1067 | 2026-11-24 | 2026-11-28 | 4d | 3d | 0d |
| 1083 | 1.5.19.9 | Puerta corrediza 3.85x2.10m | 6d | 2026-11-26 | 2026-12-03 | 1079 | 2026-11-26 | 2026-12-03 | 6d | 5d | 3d |
| 1084 | 1.5.19.10 | Barandal de Cristal Templado | 6d | 2026-11-28 | 2026-12-07 | 1080, 1081, 1082 | 2026-11-28 | 2026-12-07 | 6d | 3d | 1d |
| 1085 | 1.5.20 | **CARPINTERIA, PUERTAS EXTERIORES E INTERIORES** | 9d | 2026-11-26 | 2026-12-08 |  | 2026-11-26 | 2026-12-08 | 9d | 2d |  |
| 1086 | 1.5.20.1 | Puerta P-01 de seguridad | 5d | 2026-11-26 | 2026-12-02 | 1068 | 2026-11-26 | 2026-12-02 | 5d | 6d | 4d |
| 1087 | 1.5.20.2 | Puerta P-01 interior | 8d | 2026-11-26 | 2026-12-07 | 1068 | 2026-11-26 | 2026-12-07 | 8d | 3d | 1d |
| 1088 | 1.5.20.3 | Puerta P-02 interior | 8d | 2026-11-26 | 2026-12-07 | 1068 | 2026-11-26 | 2026-12-07 | 8d | 3d | 1d |
| 1089 | 1.5.20.4 | Puerta P-03 interior | 4d | 2026-12-02 | 2026-12-08 | 1068FS+5d | 2026-12-02 | 2026-12-08 | 4d | 2d | 0d |
| 1090 | 1.5.20.5 | Puerta P-04 interior | 4d | 2026-12-02 | 2026-12-08 | 1068FS+5d | 2026-12-02 | 2026-12-08 | 4d | 2d | 0d |

| ID | WBS | Task | Duration | Start | Finish | Predecessors | Baseline start | Baseline finish | Baseline duration | Total slack | Free slack |
| --- | --- | --- | --- | --- | --- | --- | --- | --- | --- | --- | --- |
| 1091 | 1.5.21 | **VOLADOS, BARANDAL Y ESCALERA** | 33d | 2026-10-20 | 2026-12-01 |  | 2026-10-20 | 2026-12-01 | 33d | 10d |  |
| 1092 | 1.5.21.1 | Barandal de Herreria en escalera | 4d | 2026-11-06 | 2026-11-11 | 1093FS-4d | 2026-11-06 | 2026-11-11 | 4d | 25d | 15d |
| 1093 | 1.5.21.2 | Escalera de herreria | 18d | 2026-10-20 | 2026-11-11 | 1034 | 2026-10-20 | 2026-11-11 | 18d | 10d | 0d |
| 1094 | 1.5.21.3 | Techumbre en acceso Principal | 14d | 2026-11-05 | 2026-11-24 | 1093FS-5d | 2026-11-05 | 2026-11-24 | 14d | 16d | 6d |
| 1095 | 1.5.21.4 | Techumbre en 1.80x0.50m | 7d | 2026-11-05 | 2026-11-13 | 1093FS-5d | 2026-11-05 | 2026-11-13 | 7d | 10d | 0d |
| 1096 | 1.5.21.5 | Techumbre en 1.40x0.50m | 7d | 2026-11-13 | 2026-11-24 | 1095 | 2026-11-13 | 2026-11-24 | 7d | 10d | 0d |
| 1097 | 1.5.21.6 | Imper con manto prefabricado | 5d | 2026-11-19 | 2026-11-25 | 1095, 1096FS-4d | 2026-11-19 | 2026-11-25 | 5d | 10d | 0d |
| 1098 | 1.5.21.7 | Plafon hoja tablaroca std | 5d | 2026-11-25 | 2026-12-01 | 1097 | 2026-11-25 | 2026-12-01 | 5d | 10d | 0d |
| 1099 | 1.5.21.8 | Acabado Woodstock en parte inf. Cubierta | 5d | 2026-11-25 | 2026-12-01 | 1097 | 2026-11-25 | 2026-12-01 | 5d | 10d | 0d |
| 1100 | 1.5.22 | **INSTALACION ELECTRICA** | 16d | 2026-10-28 | 2026-11-18 |  | 2026-10-28 | 2026-11-18 | 16d | 31d |  |
| 1101 | 1.5.22.1 | Alimentación eléctrica base a centro de carga | 5d | 2026-11-02 | 2026-11-07 | 1024, 1045 | 2026-11-02 | 2026-11-07 | 5d | 35d | 0d |
| 1102 | 1.5.22.2 | Interruptor termomagnético 1x20 A | 1d | 2026-11-07 | 2026-11-09 | 1101 | 2026-11-07 | 2026-11-09 | 1d | 35d | 4d |
| 1103 | 1.5.22.3 | Interruptor termomagnético 2x20 A | 1d | 2026-11-07 | 2026-11-09 | 1101 | 2026-11-07 | 2026-11-09 | 1d | 35d | 4d |
| 1104 | 1.5.22.4 | Salida para apagador 3 vías | 4d | 2026-10-28 | 2026-11-02 | 1006, 1045FS-4d | 2026-10-28 | 2026-11-02 | 4d | 31d | 0d |
| 1105 | 1.5.22.5 | Salida para apagador doble | 3d | 2026-11-02 | 2026-11-05 | 1104 | 2026-11-02 | 2026-11-05 | 3d | 33d | 0d |
| 1106 | 1.5.22.6 | Salida para apagador sencillo | 3d | 2026-11-02 | 2026-11-05 | 1104 | 2026-11-02 | 2026-11-05 | 3d | 33d | 0d |
| 1107 | 1.5.22.7 | Salida de alumbrado en losa | 5d | 2026-11-02 | 2026-11-07 | 1104 | 2026-11-02 | 2026-11-07 | 5d | 31d | 0d |
| 1108 | 1.5.22.8 | Salida para contacto exterior doble | 2d | 2026-11-02 | 2026-11-04 | 1104 | 2026-11-02 | 2026-11-04 | 2d | 34d | 3d |
| 1109 | 1.5.22.9 | Salida para contacto 220 V | 3d | 2026-11-04 | 2026-11-07 | 1104FS+2d | 2026-11-04 | 2026-11-07 | 3d | 31d | 0d |
| 1110 | 1.5.22.10 | Salida para contacto doble | 5d | 2026-11-04 | 2026-11-10 | 1104FS+2d | 2026-11-04 | 2026-11-10 | 5d | 34d | 3d |
| 1111 | 1.5.22.11 | Salida para contacto doble área húmeda | 2d | 2026-11-07 | 2026-11-10 | 1108, 1109 | 2026-11-07 | 2026-11-10 | 2d | 34d | 3d |
| 1112 | 1.5.22.12 | Salida TV / telefonía / intercom | 4d | 2026-11-07 | 2026-11-12 | 1108, 1109 | 2026-11-07 | 2026-11-12 | 4d | 32d | 1d |
| 1113 | 1.5.22.13 | Extractor 4 baño | 5d | 2026-11-07 | 2026-11-13 | 1108, 1109 | 2026-11-07 | 2026-11-13 | 5d | 31d | 0d |
| 1114 | 1.5.22.14 | Prueba eléctrica | 2d | 2026-11-13 | 2026-11-18 | 1101, 1102, 1103, 1104, 1105, 1106, 1107, 1108, 1109, 1110, 1111, 1112, 1113, 1167, 1168, 1174, 1169, 1170, 1172, 1173, 1176, 1178 | 2026-11-13 | 2026-11-18 | 2d | 31d | 29d |

| ID | WBS | Task | Duration | Start | Finish | Predecessors | Baseline start | Baseline finish | Baseline duration | Total slack | Free slack |
| --- | --- | --- | --- | --- | --- | --- | --- | --- | --- | --- | --- |
| 1115 | 1.5.23 | **INSTALACIÓN HIDRO-SANITARIA** | 11d | 2026-10-12 | 2026-10-24 |  | 2026-10-12 | 2026-10-24 | 11d | 2d |  |
| 1116 | 1.5.23.1 | Tubería condensados PVC 1 | 5d | 2026-10-12 | 2026-10-17 | 1020 | 2026-10-12 | 2026-10-17 | 5d | 2d | 0d |
| 1117 | 1.5.23.2 | Tubería sanitaria PVC 4 | 5d | 2026-10-12 | 2026-10-17 | 1023 | 2026-10-12 | 2026-10-17 | 5d | 10d | 0d |
| 1118 | 1.5.23.3 | Coladera H-444 | 1d | 2026-10-17 | 2026-10-19 | 1117 | 2026-10-17 | 2026-10-19 | 1d | 10d | 4d |
| 1119 | 1.5.23.4 | Caja PVC para lavadora | 3d | 2026-10-12 | 2026-10-15 | 1020 | 2026-10-12 | 2026-10-15 | 3d | 2d | 0d |
| 1120 | 1.5.23.5 | Salida para secadora PVC 4 | 3d | 2026-10-12 | 2026-10-15 | 1023 | 2026-10-12 | 2026-10-15 | 3d | 2d | 0d |
| 1121 | 1.5.23.6 | Salida hidráulica para boiler | 2d | 2026-10-12 | 2026-10-14 | 1020 | 2026-10-12 | 2026-10-14 | 2d | 3d | 1d |
| 1122 | 1.5.23.7 | Salida hidráulica para llave de jardín | 3d | 2026-10-12 | 2026-10-15 | 1020 | 2026-10-12 | 2026-10-15 | 3d | 2d | 0d |
| 1123 | 1.5.23.8 | Salida hidráulica para lavabo | 4d | 2026-10-12 | 2026-10-16 | 1020 | 2026-10-12 | 2026-10-16 | 4d | 2d | 0d |
| 1124 | 1.5.23.9 | Salida hidráulica para purificación | 4d | 2026-10-12 | 2026-10-16 | 1020 | 2026-10-12 | 2026-10-16 | 4d | 2d | 0d |
| 1125 | 1.5.23.10 | Salida sanitaria para lavabo | 2d | 2026-10-14 | 2026-10-16 | 1020FS+2d | 2026-10-14 | 2026-10-16 | 2d | 2d | 0d |
| 1126 | 1.5.23.11 | Salida hidráulica para lavadero | 2d | 2026-10-14 | 2026-10-16 | 1020FS+2d | 2026-10-14 | 2026-10-16 | 2d | 2d | 0d |
| 1127 | 1.5.23.12 | Salida sanitaria para lavadero | 2d | 2026-10-15 | 2026-10-17 | 1020FS+3d | 2026-10-15 | 2026-10-17 | 2d | 2d | 0d |
| 1128 | 1.5.23.13 | Salida hidráulica para lavadora | 2d | 2026-10-15 | 2026-10-17 | 1020FS+3d | 2026-10-15 | 2026-10-17 | 2d | 2d | 0d |
| 1129 | 1.5.23.14 | Salida sanitaria para lavadora | 2d | 2026-10-16 | 2026-10-19 | 1023FS+4d | 2026-10-16 | 2026-10-19 | 2d | 2d | 0d |
| 1130 | 1.5.23.15 | Salida hidráulica para regadera | 5d | 2026-10-16 | 2026-10-22 | 1020FS+4d | 2026-10-16 | 2026-10-22 | 5d | 7d | 0d |
| 1131 | 1.5.23.16 | Salida sanitaria para regadera | 4d | 2026-10-16 | 2026-10-21 | 1023FS+4d | 2026-10-16 | 2026-10-21 | 4d | 8d | 2d |
| 1132 | 1.5.23.17 | Salida hidráulica para WC | 2d | 2026-10-14 | 2026-10-16 | 1023FS+2d | 2026-10-14 | 2026-10-16 | 2d | 2d | 0d |
| 1133 | 1.5.23.18 | Salida sanitaria para WC | 4d | 2026-10-16 | 2026-10-21 | 1023FS+4d | 2026-10-16 | 2026-10-21 | 4d | 2d | 0d |
| 1134 | 1.5.23.19 | Salida hidráulica para zinc | 4d | 2026-10-16 | 2026-10-21 | 1023FS+4d | 2026-10-16 | 2026-10-21 | 4d | 2d | 0d |
| 1135 | 1.5.23.20 | Salida sanitaria para zinc | 3d | 2026-10-19 | 2026-10-22 | 1023FS+6d | 2026-10-19 | 2026-10-22 | 3d | 2d | 0d |
| 1136 | 1.5.23.21 | Tubo para ventila de baño 2 | 5d | 2026-10-12 | 2026-10-17 | 1116SS | 2026-10-12 | 2026-10-17 | 5d | 2d | 0d |
| 1137 | 1.5.23.22 | Tubo para minisplit PVC 3 | 5d | 2026-10-17 | 2026-10-23 | 1136 | 2026-10-17 | 2026-10-23 | 5d | 2d | 0d |
| 1138 | 1.5.23.23 | Cuadro de medición | 5d | 2026-10-15 | 2026-10-21 | 1070 | 2026-10-15 | 2026-10-21 | 5d | 7d | 0d |
| 1139 | 1.5.23.24 | Pozo de absorción 0.50x0.50x0.50 | 3d | 2026-10-15 | 2026-10-19 | 1070 | 2026-10-15 | 2026-10-19 | 3d | 10d | 0d |
| 1140 | 1.5.23.25 | Prueba sanitaria final | 1d | 2026-10-23 | 2026-10-24 | 1116, 1117, 1118, 1120, 1125, 1127, 1129, 1131, 1133, 1136, 1137 | 2026-10-23 | 2026-10-24 | 1d | 6d | 4d |
| 1141 | 1.5.23.26 | Prueba hidrostática final | 1d | 2026-10-22 | 2026-10-23 | 1121, 1122, 1123, 1124, 1126, 1128, 1130, 1132, 1134, 1138, 1139, 1144, 1145, 1143, 1142 | 2026-10-22 | 2026-10-23 | 1d | 7d | 5d |
| 1142 | 1.5.23.27 | Salida válvula control 19 mm | 1d | 2026-10-21 | 2026-10-22 | 1138 | 2026-10-21 | 2026-10-22 | 1d | 7d | 0d |
| 1143 | 1.5.23.28 | Salida válvula control 13 mm | 1d | 2026-10-21 | 2026-10-22 | 1138 | 2026-10-21 | 2026-10-22 | 1d | 7d | 0d |
| 1144 | 1.5.23.29 | Salida hidráulica para tanque hidroneumático | 3d | 2026-10-15 | 2026-10-19 | 1070 | 2026-10-15 | 2026-10-19 | 3d | 10d | 3d |
| 1145 | 1.5.23.30 | Salida hidráulica para Active Driver | 3d | 2026-10-15 | 2026-10-19 | 1070 | 2026-10-15 | 2026-10-19 | 3d | 10d | 3d |

| ID | WBS | Task | Duration | Start | Finish | Predecessors | Baseline start | Baseline finish | Baseline duration | Total slack | Free slack |
| --- | --- | --- | --- | --- | --- | --- | --- | --- | --- | --- | --- |
| 1146 | 1.5.24 | **INSTALACION DE GAS** | 8d | 2026-10-08 | 2026-10-19 |  | 2026-10-08 | 2026-10-19 | 8d | 38d |  |
| 1147 | 1.5.24.1 | Ramaleo para gas 1/2 | 5d | 2026-10-13 | 2026-10-19 | 1070FS-2d, 1148 | 2026-10-13 | 2026-10-19 | 5d | 38d | 0d |
| 1148 | 1.5.24.2 | Excavación a mano material tipo B | 3d | 2026-10-08 | 2026-10-13 | 1070FF-2d | 2026-10-08 | 2026-10-13 | 3d | 38d | 0d |
| 1149 | 1.5.25 | **MUEBLES SANITARIOS** | 29d | 2026-11-18 | 2026-12-23 |  | 2026-11-18 | 2026-12-23 | 29d | 14d |  |
| 1150 | 1.5.25.1 | WC completo Austral | 2d | 2026-11-18 | 2026-11-20 | 1054, 1061, 1140, 1141 | 2026-11-18 | 2026-11-20 | 2d | 16d | 14d |
| 1151 | 1.5.25.2 | Lavabo Senna con pedestal | 4d | 2026-11-18 | 2026-11-23 | 1054, 1059, 1061, 1140, 1141 | 2026-11-18 | 2026-11-23 | 4d | 14d | 12d |
| 1152 | 1.5.25.3 | Tarja / lavabo combo Guinea 80x45 | 2d | 2026-11-18 | 2026-11-20 | 898, 1054, 1059, 1061, 1141 | 2026-11-18 | 2026-11-20 | 2d | 45d |  |
| 1153 | 1.5.25.4 | Regadera con monomando | 3d | 2026-11-20 | 2026-11-24 | 1054, 1059FS+2d, 1061FS+2d, 1140, 1141 | 2026-11-20 | 2026-11-24 | 3d | 13d | 11d |
| 1154 | 1.5.25.5 | Coladera inserto cerámico | 2d | 2026-11-21 | 2026-11-24 | 1059, 1061FS+3d, 1141 | 2026-11-21 | 2026-11-24 | 2d | 13d | 11d |
| 1155 | 1.5.25.6 | Toallero sencillo | 1d | 2026-12-23 | 2026-12-23 | 1047FS-1d | 2026-12-23 | 2026-12-23 | 1d | 2d | 0d |
| 1156 | 1.5.25.7 | Toallero barra | 1d | 2026-12-23 | 2026-12-23 | 1047FS-1d | 2026-12-23 | 2026-12-23 | 1d | 2d | 0d |
| 1157 | 1.5.25.8 | Portapapel | 1d | 2026-12-23 | 2026-12-23 | 1047FS-1d | 2026-12-23 | 2026-12-23 | 1d | 2d | 0d |
| 1158 | 1.5.25.9 | Gancho baño | 1d | 2026-12-23 | 2026-12-23 | 1047FS-1d | 2026-12-23 | 2026-12-23 | 1d | 2d | 0d |
| 1159 | 1.5.26 | **EQUIPAMIENTO** | 6d | 2026-10-02 | 2026-10-09 |  | 2026-10-02 | 2026-10-09 | 6d | 61d |  |
| 1160 | 1.5.26.1 | Electronivel Rotoplas 5 m | 2d | 2026-10-03 | 2026-10-06 | 1165 | 2026-10-03 | 2026-10-06 | 2d | 64d | 62d |
| 1161 | 1.5.26.2 | Manómetro | 1d | 2026-10-03 | 2026-10-05 | 1165 | 2026-10-03 | 2026-10-05 | 1d | 65d | 63d |
| 1162 | 1.5.26.3 | Interruptor de presión 30-50 PSI | 1d | 2026-10-03 | 2026-10-05 | 1165 | 2026-10-03 | 2026-10-05 | 1d | 65d | 63d |
| 1163 | 1.5.26.4 | Tanque hidroneumático FPS-24LX | 3d | 2026-10-03 | 2026-10-07 | 1165 | 2026-10-03 | 2026-10-07 | 3d | 61d | 0d |
| 1164 | 1.5.26.5 | Bomba sumergible Dominator 1.2 HP | 2d | 2026-10-07 | 2026-10-09 | 1163 | 2026-10-07 | 2026-10-09 | 2d | 61d | 59d |
| 1165 | 1.5.26.6 | Cisterna prefabricada 2800 L | 1d | 2026-10-02 | 2026-10-03 | 1027FF | 2026-10-02 | 2026-10-03 | 1d | 61d | 0d |
| 1166 | 1.5.27 | **LUMINARIAS** | 5d | 2026-11-07 | 2026-11-13 |  | 2026-11-07 | 2026-11-13 | 5d | 31d |  |
| 1167 | 1.5.27.1 | Roseta cerámica | 3d | 2026-11-07 | 2026-11-11 | 1107 | 2026-11-07 | 2026-11-11 | 3d | 33d | 2d |
| 1168 | 1.5.27.2 | Luminaria lagartijera LED | 3d | 2026-11-07 | 2026-11-11 | 1107 | 2026-11-07 | 2026-11-11 | 3d | 33d | 2d |
| 1169 | 1.5.27.3 | Spot 6W Tecnolite | 3d | 2026-11-07 | 2026-11-11 | 1107 | 2026-11-07 | 2026-11-11 | 3d | 33d | 2d |
| 1170 | 1.5.27.4 | Spot 7W Tecnolite | 3d | 2026-11-07 | 2026-11-11 | 1107 | 2026-11-07 | 2026-11-11 | 3d | 33d | 2d |
| 1171 | 1.5.27.5 | Arbotante exterior | 2d | 2026-11-07 | 2026-11-10 | 1107 | 2026-11-07 | 2026-11-10 | 2d | 31d | 0d |
| 1172 | 1.5.27.6 | Estaca LED exterior | 3d | 2026-11-10 | 2026-11-13 | 1171 | 2026-11-10 | 2026-11-13 | 3d | 31d | 0d |
| 1173 | 1.5.27.7 | Tira LED | 3d | 2026-11-10 | 2026-11-13 | 1171 | 2026-11-10 | 2026-11-13 | 3d | 31d | 0d |
| 1174 | 1.5.27.8 | Spot exterior 50W | 2d | 2026-11-07 | 2026-11-10 | 1107 | 2026-11-07 | 2026-11-10 | 2d | 34d | 3d |

| ID | WBS | Task | Type | Duration | Start | Finish | Predecessors | Baseline start | Baseline finish | Baseline duration | Total slack | Free slack | Resources | Cost | Baseline cost |
| --- | --- | --- | --- | --- | --- | --- | --- | --- | --- | --- | --- | --- | --- | --- | --- |
| 1175 | 1.5.28 | **TIMBRE** |  | 2d | 2026-11-09 | 2026-11-11 |  | 2026-11-09 | 2026-11-11 | 2d | 33d |  |  |  |  |
| 1176 | 1.5.28.1 | Timbre inalámbrico con bocina |  | 2d | 2026-11-09 | 2026-11-11 | 1105FS+3d, 1106FS+3d | 2026-11-09 | 2026-11-11 | 2d | 33d | 2d |  |  |  |
| 1177 | 1.5.29 | **OBRA EXTERIOR - BARDA** |  | 18d | 2026-10-15 | 2026-11-06 |  | 2026-10-15 | 2026-11-06 | 18d | 39d |  |  |  |  |
| 1178 | 1.5.29.1 | Murete convencional |  | 5d | 2026-10-21 | 2026-10-27 | 1070FS+5d | 2026-10-21 | 2026-10-27 | 5d | 45d | 14d |  |  |  |
| 1179 | 1.5.29.2 | Barda de block aparente |  | 18d | 2026-10-15 | 2026-11-06 | 1070 | 2026-10-15 | 2026-11-06 | 18d | 39d | 37d |  |  |  |
| 1180 | 1.5.30 | **TERCER LIMPIEZA DE OBRA** |  | 16d | 2026-12-26 | 2027-01-18 |  | 2026-12-26 | 2027-01-18 | 16d | 2d |  |  |  |  |
| 1181 | 1.5.30.1 | Limpieza fina para entrega |  | 5d | 2026-12-26 | 2027-01-04 | 1047, 1048, 1049, 1080, 1089, 1090, 1114, 1140, 1141, 1155, 1156, 1157, 1158, 1160, 1161, 1162, 1163, 1164, 1179 | 2026-12-26 | 2027-01-04 | 5d | 2d | 0d |  |  |  |
| 1182 | 1.5.30.2 | Tercera limpieza de obra |  | 5d | 2027-01-04 | 2027-01-11 | 1181, 1073 | 2027-01-04 | 2027-01-11 | 5d | 2d | 0d |  |  |  |
| 1183 | 1.5.30.3 | Tercera carga y acarreo de escombro |  | 6d | 2027-01-11 | 2027-01-18 | 1182 | 2027-01-11 | 2027-01-18 | 6d | 2d | 0d |  |  |  |
| 1184 | 1.6 | **LOTE 21 M-663 CORSAC-A** |  | 181d | 2026-05-29 | 2027-01-18 |  | 2026-05-29 | 2027-01-18 | 181d | 2d |  |  | 9,070.2 | 9,070.2 |
| 1185 | 1.6.1 | **HITOS IMPORTANTES DEL LOTE** |  | 181d | 2026-05-29 | 2027-01-18 |  | 2026-05-29 | 2027-01-18 | 181d | 2d |  |  |  |  |
| 1186 | 1.6.1.1 | Inicio del LOTE 21 M-663 CORSAC-A | milestone | 0d | 2026-05-29 | 2026-05-29 | 8FS+11d | 2026-05-29 | 2026-05-29 |  | 2d | 0d |  |  |  |
| 1187 | 1.6.1.2 | Colado de Losa de Cimentación | milestone | 0d | 2026-06-19 | 2026-06-19 | 1218 | 2026-06-19 | 2026-06-19 |  | 166d |  |  |  |  |
| 1188 | 1.6.1.3 | Colado de Losa de Entrepiso | milestone | 0d | 2026-07-28 | 2026-07-28 | 1254 | 2026-07-28 | 2026-07-28 |  | 136d |  |  |  |  |
| 1189 | 1.6.1.4 | Colado de Losa de Azotea | milestone | 0d | 2026-09-02 | 2026-09-02 | 1294 | 2026-09-02 | 2026-09-02 |  | 106d |  |  |  |  |
| 1190 | 1.6.1.5 | Entrega de vivienda | milestone | 0d | 2027-01-18 | 2027-01-18 | 1486, 1487, 1488 | 2027-01-18 | 2027-01-18 |  | 2d |  |  |  |  |
| 1191 | 1.6.2 | **TRABAJOS PRELIMINARES** |  | 2d | 2026-05-29 | 2026-06-02 |  | 2026-05-29 | 2026-06-02 | 2d | 2d |  |  | 9,070.2 | 9,070.2 |
| 1192 | 1.6.2.1 | Trazo y nivelación |  | 2d | 2026-05-29 | 2026-06-02 | 1186 | 2026-05-29 | 2026-06-02 | 2d | 2d | 0d | Corsac - Trazo y nivelación | 9,070.2 | 9,070.2 |
| 1193 | 1.6.3 | **EXCAVACIONES** |  | 3d | 2026-06-02 | 2026-06-05 |  | 2026-06-02 | 2026-06-05 | 3d | 2d |  |  |  |  |
| 1194 | 1.6.3.1 | Excavación a mano material tipo B |  | 3d | 2026-06-02 | 2026-06-05 | 1192 | 2026-06-02 | 2026-06-05 | 3d | 2d | 0d |  |  |  |
| 1195 | 1.6.3.2 | Acarreo en carretilla 20 m |  | 2d | 2026-06-03 | 2026-06-05 | 1194SS+1d | 2026-06-03 | 2026-06-05 | 2d | 2d | 0d |  |  |  |
| 1196 | 1.6.4 | **CIMENTACION** |  | 13d | 2026-06-05 | 2026-06-22 |  | 2026-06-05 | 2026-06-22 | 13d | 2d |  |  |  |  |
| 1197 | 1.6.4.1 | Cimbra perimetral losa de cimentación |  | 3d | 2026-06-05 | 2026-06-09 | 1194, 1195 | 2026-06-05 | 2026-06-09 | 3d | 2d | 0d |  |  |  |
| 1198 | 1.6.4.2 | Sistema antitermitas PVC |  | 3d | 2026-06-05 | 2026-06-09 | 1194, 1195 | 2026-06-05 | 2026-06-09 | 3d | 3d | 0d |  |  |  |
| 1199 | 1.6.4.3 | Hule negro en cimentación |  | 1d | 2026-06-09 | 2026-06-10 | 1198 | 2026-06-09 | 2026-06-10 | 1d | 3d | 0d |  |  |  |
| 1200 | 1.6.4.4 | Ramaleo poliducto eléctrico cimentación |  | 2d | 2026-06-10 | 2026-06-12 | 1199 | 2026-06-10 | 2026-06-12 | 2d | 6d | 0d |  |  |  |
| 1201 | 1.6.4.5 | Ramaleo eléctrico base-medición a centro de carga |  | 1d | 2026-06-10 | 2026-06-11 | 1199 | 2026-06-10 | 2026-06-11 | 1d | 7d | 1d |  |  |  |
| 1202 | 1.6.4.6 | Ramaleo eléctrico exterior |  | 1d | 2026-06-12 | 2026-06-13 | 1200, 1201 | 2026-06-12 | 2026-06-13 | 1d | 6d | 4d |  |  |  |
| 1203 | 1.6.4.7 | Ramaleo para cable poliducto 3/4 |  | 1d | 2026-06-12 | 2026-06-13 | 1200, 1201 | 2026-06-12 | 2026-06-13 | 1d | 6d | 4d |  |  |  |
| 1204 | 1.6.4.8 | Ramaleo para TV poliducto 3/4 |  | 1d | 2026-06-12 | 2026-06-13 | 1200, 1201 | 2026-06-12 | 2026-06-13 | 1d | 6d | 4d |  |  |  |
| 1205 | 1.6.4.9 | Ramaleo hidráulico CPVC 1-1/4" cimentación |  | 1d | 2026-06-10 | 2026-06-11 | 1199 | 2026-06-10 | 2026-06-11 | 1d | 3d | 0d |  |  |  |
| 1206 | 1.6.4.10 | Ramaleo hidráulico CPVC 1 cimentación |  | 1d | 2026-06-10 | 2026-06-11 | 1199, 1205SS | 2026-06-10 | 2026-06-11 | 1d | 3d | 0d |  |  |  |
| 1207 | 1.6.4.11 | Ramaleo hidráulico CPVC 3/4 cimentación |  | 2d | 2026-06-11 | 2026-06-13 | 1206 | 2026-06-11 | 2026-06-13 | 2d | 3d | 0d |  |  |  |
| 1208 | 1.6.4.12 | Ramaleo hidráulico CPVC 1/2 cimentación |  | 2d | 2026-06-13 | 2026-06-16 | 1207 | 2026-06-13 | 2026-06-16 | 2d | 3d | 0d |  |  |  |
| 1209 | 1.6.4.13 | Prueba hidráulica |  | 1d | 2026-06-16 | 2026-06-17 | 1205, 1206, 1207, 1208 | 2026-06-16 | 2026-06-17 | 1d | 3d | 1d |  |  |  |
| 1210 | 1.6.4.14 | Ramaleo sanitario PVC 4 cimentación |  | 2d | 2026-06-11 | 2026-06-13 | 1199FS+1d | 2026-06-11 | 2026-06-13 | 2d | 4d | 0d |  |  |  |
| 1211 | 1.6.4.15 | Ramaleo sanitario PVC 2 cimentación |  | 1d | 2026-06-13 | 2026-06-15 | 1210 | 2026-06-13 | 2026-06-15 | 1d | 4d | 0d |  |  |  |
| 1212 | 1.6.4.16 | Prueba sanitaria |  | 1d | 2026-06-15 | 2026-06-16 | 1210, 1211 | 2026-06-15 | 2026-06-16 | 1d | 4d | 2d |  |  |  |
| 1213 | 1.6.4.17 | Acero contratrabe CT-1 |  | 4d | 2026-06-09 | 2026-06-13 | 1197 | 2026-06-09 | 2026-06-13 | 4d | 2d | 0d |  |  |  |
| 1214 | 1.6.4.18 | Acero contratrabe CT-2 |  | 4d | 2026-06-09 | 2026-06-13 | 1197 | 2026-06-09 | 2026-06-13 | 4d | 2d | 0d |  |  |  |
| 1215 | 1.6.4.19 | Malla electrosoldada 6-6/8-8 |  | 2d | 2026-06-16 | 2026-06-18 | 1213, 1214, 1216, 1217 | 2026-06-16 | 2026-06-18 | 2d | 2d | 0d |  |  |  |
| 1216 | 1.6.4.20 | Bastón de refuerzo LS |  | 2d | 2026-06-13 | 2026-06-16 | 1213, 1214 | 2026-06-13 | 2026-06-16 | 2d | 2d | 0d |  |  |  |
| 1217 | 1.6.4.21 | Bastón de refuerzo LI |  | 2d | 2026-06-13 | 2026-06-16 | 1213, 1214 | 2026-06-13 | 2026-06-16 | 2d | 2d | 0d |  |  |  |
| 1218 | 1.6.4.22 | Colado losa de cimentación f’c=200 |  | 1d | 2026-06-18 | 2026-06-19 | 1197, 1199, 1202, 1203, 1204, 1209, 1212, 1213, 1214, 1215, 1216, 1217, 1220, 1221 | 2026-06-18 | 2026-06-19 | 1d | 2d | 0d |  |  |  |
| 1219 | 1.6.4.23 | Curado de concreto |  | 1d | 2026-06-19 | 2026-06-22 | 1218 | 2026-06-19 | 2026-06-22 | 1d | 2d | 0d |  |  |  |
| 1220 | 1.6.4.24 | Acero zapata ZT-1 |  | 4d | 2026-06-13 | 2026-06-18 | 1213, 1214 | 2026-06-13 | 2026-06-18 | 4d | 2d | 0d |  |  |  |
| 1221 | 1.6.4.25 | Acero zapata ZT-2 |  | 4d | 2026-06-13 | 2026-06-18 | 1213, 1214 | 2026-06-13 | 2026-06-18 | 4d | 2d | 0d |  |  |  |

| ID | WBS | Task | Duration | Start | Finish | Predecessors | Baseline start | Baseline finish | Baseline duration | Total slack | Free slack |
| --- | --- | --- | --- | --- | --- | --- | --- | --- | --- | --- | --- |
| 1222 | 1.6.5 | **MUROS, PLANTA BAJA. CASTILLOS Y CERRAMIENTOS** | 20d | 2026-06-15 | 2026-07-09 |  | 2026-06-15 | 2026-07-09 | 20d | 7d |  |
| 1223 | 1.6.5.1 | Anclaje de castillos y Columnas PB | 5d | 2026-06-15 | 2026-06-22 | 1213FS+1d, 1214FS+1d | 2026-06-15 | 2026-06-22 | 5d | 153d | 0d |
| 1224 | 1.6.5.2 | Castillo K1 | 4d | 2026-06-22 | 2026-06-26 | 1219, 1223 | 2026-06-22 | 2026-06-26 | 4d | 153d | 0d |
| 1225 | 1.6.5.3 | Castillo K3 | 3d | 2026-06-24 | 2026-06-27 | 1224FS-2d | 2026-06-24 | 2026-06-27 | 3d | 153d | 0d |
| 1226 | 1.6.5.4 | Castillo K4 | 3d | 2026-06-24 | 2026-06-27 | 1224FS-2d | 2026-06-24 | 2026-06-27 | 3d | 153d | 0d |
| 1227 | 1.6.5.5 | Castillo K5 | 3d | 2026-06-26 | 2026-06-30 | 1225FS-1d, 1226FS-1d | 2026-06-26 | 2026-06-30 | 3d | 153d | 0d |
| 1228 | 1.6.5.6 | Refuerzo de muro K6 | 3d | 2026-06-27 | 2026-07-01 | 1227FS-2d | 2026-06-27 | 2026-07-01 | 3d | 153d | 0d |
| 1229 | 1.6.5.7 | Dala de cerramiento CR-1 | 4d | 2026-06-27 | 2026-07-02 | 1224, 1225 | 2026-06-27 | 2026-07-02 | 4d | 156d |  |
| 1230 | 1.6.5.8 | Dala de cerramiento CR-2 | 3d | 2026-06-27 | 2026-07-01 | 1224, 1225 | 2026-06-27 | 2026-07-01 | 3d | 157d |  |
| 1231 | 1.6.5.9 | Cadena block dala | 4d | 2026-07-01 | 2026-07-06 | 1228 | 2026-07-01 | 2026-07-06 | 4d | 153d |  |
| 1232 | 1.6.5.10 | Muro de ladrillo aparente | 15d | 2026-06-22 | 2026-07-09 | 1219 | 2026-06-22 | 2026-07-09 | 15d | 2d | 0d |
| 1233 | 1.6.5.11 | Muro de block planta baja | 13d | 2026-06-24 | 2026-07-09 | 1219FS+2d | 2026-06-24 | 2026-07-09 | 13d | 2d | 0d |
| 1234 | 1.6.5.12 | Ramaleo electrico en Muros Planta Baja | 4d | 2026-06-27 | 2026-07-02 | 1232SS+5d | 2026-06-27 | 2026-07-02 | 4d | 5d | 0d |
| 1235 | 1.6.5.13 | Ramaleo para cable poliducto 3/4 | 2d | 2026-07-02 | 2026-07-04 | 1234 | 2026-07-02 | 2026-07-04 | 2d | 5d | 0d |
| 1236 | 1.6.5.14 | Ramaleo para TV poliducto 3/4 | 3d | 2026-07-06 | 2026-07-08 | 1235 | 2026-07-06 | 2026-07-08 | 3d | 5d | 2d |
| 1237 | 1.6.6 | **ESCALERA** | 10d | 2026-07-28 | 2026-08-08 |  | 2026-07-28 | 2026-08-08 | 10d | 79d |  |
| 1238 | 1.6.6.1 | Escalera de concreto armado | 10d | 2026-07-28 | 2026-08-08 | 1254 | 2026-07-28 | 2026-08-08 | 10d | 79d | 77d |
| 1239 | 1.6.7 | **LOSA DE ENTREPISO (viegueta y caseton)** | 17d | 2026-07-08 | 2026-07-29 |  | 2026-07-08 | 2026-07-29 | 17d | 5d |  |
| 1240 | 1.6.7.1 | Dala de coronamiento 10cm | 3d | 2026-07-16 | 2026-07-20 | 1256FS-1d, 1242, 1243, 1244, 1245, 1246, 1247 | 2026-07-16 | 2026-07-20 | 3d | 5d | 3d |
| 1241 | 1.6.7.2 | Dala de coronamiento 12cm | 3d | 2026-07-17 | 2026-07-21 | 1256, 1242, 1243, 1244, 1245, 1246, 1247 | 2026-07-17 | 2026-07-21 | 3d | 4d | 2d |
| 1242 | 1.6.7.3 | Trabe TR-1 | 3d | 2026-07-08 | 2026-07-10 | 1232FS-2d, 1233FS-2d | 2026-07-08 | 2026-07-10 | 3d | 6d | 4d |
| 1243 | 1.6.7.4 | Trabe TR-2 | 4d | 2026-07-09 | 2026-07-14 | 1232FS-1d, 1233FS-1d | 2026-07-09 | 2026-07-14 | 4d | 4d | 2d |
| 1244 | 1.6.7.5 | Nervadura NR-1 | 4d | 2026-07-10 | 2026-07-15 | 1232, 1233 | 2026-07-10 | 2026-07-15 | 4d | 3d | 1d |
| 1245 | 1.6.7.6 | Nervadura NR-2 | 4d | 2026-07-11 | 2026-07-16 | 1232FS+1d, 1233FS+1d | 2026-07-11 | 2026-07-16 | 4d | 2d | 0d |
| 1246 | 1.6.7.7 | Nervadura NR-3 | 4d | 2026-07-11 | 2026-07-16 | 1232FS+1d, 1233FS+1d | 2026-07-11 | 2026-07-16 | 4d | 2d | 0d |
| 1247 | 1.6.7.8 | Nervadura NR-4 | 4d | 2026-07-11 | 2026-07-16 | 1232FS+1d, 1233FS+1d | 2026-07-11 | 2026-07-16 | 4d | 2d | 0d |
| 1248 | 1.6.7.9 | Acero de refuerzo en nervios #3 | 2d | 2026-07-16 | 2026-07-18 | 1242, 1243, 1244, 1245, 1246, 1247 | 2026-07-16 | 2026-07-18 | 2d | 2d | 0d |
| 1249 | 1.6.7.10 | Acero de refuerzo long. #3 | 3d | 2026-07-17 | 2026-07-21 | 1242, 1243, 1244, 1245, 1246, 1247, 1256 | 2026-07-17 | 2026-07-21 | 3d | 3d | 0d |
| 1250 | 1.6.7.11 | Acero de refuerzo long. #4 | 3d | 2026-07-17 | 2026-07-21 | 1249SS | 2026-07-17 | 2026-07-21 | 3d | 3d | 0d |
| 1251 | 1.6.7.12 | Malla 66-10/10 losa de compresión | 2d | 2026-07-23 | 2026-07-27 | 1240, 1241, 1248, 1261, 1264, 1253 | 2026-07-23 | 2026-07-27 | 2d | 2d | 0d |
| 1252 | 1.6.7.13 | Acero de Losa Maciza | 3d | 2026-07-16 | 2026-07-20 | 1244, 1245, 1246, 1247 | 2026-07-16 | 2026-07-20 | 3d | 7d | 5d |
| 1253 | 1.6.7.14 | Caseton de 60x60x20cm | 2d | 2026-07-16 | 2026-07-18 | 1244, 1245, 1246, 1247 | 2026-07-16 | 2026-07-18 | 2d | 6d | 4d |
| 1254 | 1.6.7.15 | Concreto losa de entrepiso f’c=200 | 1d | 2026-07-27 | 2026-07-28 | 1249, 1250, 1251, 1252, 1261, 1264, 1257, 1266 | 2026-07-27 | 2026-07-28 | 1d | 2d | 0d |
| 1255 | 1.6.7.16 | Curado de concreto | 1d | 2026-07-28 | 2026-07-29 | 1254 | 2026-07-28 | 2026-07-29 | 1d | 2d | 0d |
| 1256 | 1.6.7.17 | Cimbra losa de azotea | 5d | 2026-07-11 | 2026-07-17 | 1232FS+1d, 1233FS+1d, 1236 | 2026-07-11 | 2026-07-17 | 5d | 3d | 0d |
| 1257 | 1.6.7.18 | Cimbra exterior corta losa | 3d | 2026-07-20 | 2026-07-23 | 1249FS-1d, 1250FS-1d | 2026-07-20 | 2026-07-23 | 3d | 4d | 2d |
| 1258 | 1.6.7.19 | Ramaleo poliducto eléctrico entrepiso | 2d | 2026-07-18 | 2026-07-21 | 1248 | 2026-07-18 | 2026-07-21 | 2d | 141d |  |
| 1259 | 1.6.7.20 | Ramaleo hidráulico CPVC 3/4" | 2d | 2026-07-20 | 2026-07-22 | 1248FS+1d | 2026-07-20 | 2026-07-22 | 2d | 2d | 0d |
| 1260 | 1.6.7.21 | Ramaleo hidráulico CPVC 1/2" | 1d | 2026-07-22 | 2026-07-23 | 1259 | 2026-07-22 | 2026-07-23 | 1d | 2d | 0d |
| 1261 | 1.6.7.22 | Prueba hidráulica | 1d | 2026-07-22 | 2026-07-23 | 1259, 1260FS-1d | 2026-07-22 | 2026-07-23 | 1d | 2d | 0d |
| 1262 | 1.6.7.23 | Ramaleo sanitario PVC 4" | 2d | 2026-07-20 | 2026-07-22 | 1248FS+1d | 2026-07-20 | 2026-07-22 | 2d | 2d | 0d |
| 1263 | 1.6.7.24 | Ramaleo sanitario PVC 2" | 1d | 2026-07-22 | 2026-07-23 | 1262 | 2026-07-22 | 2026-07-23 | 1d | 2d | 0d |
| 1264 | 1.6.7.25 | Prueba sanitaria | 1d | 2026-07-22 | 2026-07-23 | 1262, 1263FS-1d | 2026-07-22 | 2026-07-23 | 1d | 2d | 0d |

| ID | WBS | Task | Duration | Start | Finish | Predecessors | Baseline start | Baseline finish | Baseline duration | Total slack | Free slack |
| --- | --- | --- | --- | --- | --- | --- | --- | --- | --- | --- | --- |
| 1265 | 1.6.8 | **MUROS EN PLANTA ALTA, CASTILLOS Y CERRM.** | 22d | 2026-07-20 | 2026-08-17 |  | 2026-07-20 | 2026-08-17 | 22d | 3d |  |
| 1266 | 1.6.8.1 | Anclaje de castillos y Columnas PA | 4d | 2026-07-20 | 2026-07-24 | 1249FS-1d, 1250FS-1d | 2026-07-20 | 2026-07-24 | 4d | 3d | 1d |
| 1267 | 1.6.8.2 | Castillo K1 | 4d | 2026-07-29 | 2026-08-03 | 1255 | 2026-07-29 | 2026-08-03 | 4d | 6d | 0d |
| 1268 | 1.6.8.3 | Castillo K2 | 4d | 2026-07-30 | 2026-08-04 | 1255FS+1d | 2026-07-30 | 2026-08-04 | 4d | 5d | 0d |
| 1269 | 1.6.8.4 | Castillo K4 | 3d | 2026-08-03 | 2026-08-06 | 1267 | 2026-08-03 | 2026-08-06 | 3d | 6d | 1d |
| 1270 | 1.6.8.5 | Castillo K5 | 3d | 2026-08-03 | 2026-08-06 | 1267 | 2026-08-03 | 2026-08-06 | 3d | 6d | 1d |
| 1271 | 1.6.8.6 | Castillo K6 | 3d | 2026-08-03 | 2026-08-06 | 1267 | 2026-08-03 | 2026-08-06 | 3d | 6d | 1d |
| 1272 | 1.6.8.7 | Refuerzo de muro | 3d | 2026-08-04 | 2026-08-07 | 1267, 1268 | 2026-08-04 | 2026-08-07 | 3d | 5d | 0d |
| 1273 | 1.6.8.8 | Dala de cerramiento CR-1 | 4d | 2026-08-07 | 2026-08-12 | 1269, 1270, 1271, 1272 | 2026-08-07 | 2026-08-12 | 4d | 5d | 0d |
| 1274 | 1.6.8.9 | Dala de cerramiento CR-2 | 4d | 2026-08-07 | 2026-08-12 | 1269, 1270, 1271, 1272 | 2026-08-07 | 2026-08-12 | 4d | 5d | 0d |
| 1275 | 1.6.8.10 | Cadena block dala | 3d | 2026-08-12 | 2026-08-17 | 1272, 1273, 1274 | 2026-08-12 | 2026-08-17 | 3d | 5d | 0d |
| 1276 | 1.6.8.11 | Muro de ladrillo aparente | 15d | 2026-07-29 | 2026-08-17 | 1255 | 2026-07-29 | 2026-08-17 | 15d | 2d | 0d |
| 1277 | 1.6.8.12 | Muro de block planta alta | 14d | 2026-07-30 | 2026-08-17 | 1255FS+1d | 2026-07-30 | 2026-08-17 | 14d | 2d | 0d |
| 1278 | 1.6.8.13 | Ramaleo electrico en Muros Planta Alta | 4d | 2026-08-07 | 2026-08-12 | 1276SS+8d | 2026-08-07 | 2026-08-12 | 4d | 13d | 3d |
| 1279 | 1.6.9 | **LOSA AZOTEA** | 15d | 2026-08-17 | 2026-09-03 |  | 2026-08-17 | 2026-09-03 | 15d | 2d |  |
| 1280 | 1.6.9.1 | Cortalosa CL-1 | 2d | 2026-08-31 | 2026-09-01 | 1292 | 2026-08-31 | 2026-09-01 | 2d | 2d | 0d |
| 1281 | 1.6.9.2 | Cortalosa CL-2 | 2d | 2026-08-31 | 2026-09-01 | 1292 | 2026-08-31 | 2026-09-01 | 2d | 2d | 0d |
| 1282 | 1.6.9.3 | Vigueta pretensada V11-30 125 | 5d | 2026-08-17 | 2026-08-22 | 1275, 1276, 1277 | 2026-08-17 | 2026-08-22 | 5d | 5d | 3d |
| 1283 | 1.6.9.4 | Vigueta pretensada V11-30 185 | 5d | 2026-08-17 | 2026-08-22 | 1276, 1277 | 2026-08-17 | 2026-08-22 | 5d | 5d | 3d |
| 1284 | 1.6.9.5 | Vigueta pretensada V11-30 190 | 5d | 2026-08-17 | 2026-08-22 | 1276, 1277 | 2026-08-17 | 2026-08-22 | 5d | 5d | 3d |
| 1285 | 1.6.9.6 | Vigueta pretensada V11-30 205 | 5d | 2026-08-19 | 2026-08-25 | 1276FS+2d, 1277FS+2d | 2026-08-19 | 2026-08-25 | 5d | 3d | 1d |
| 1286 | 1.6.9.7 | Vigueta pretensada V11-30 215 | 5d | 2026-08-19 | 2026-08-25 | 1276FS+2d, 1277FS+2d | 2026-08-19 | 2026-08-25 | 5d | 3d | 1d |
| 1287 | 1.6.9.8 | Vigueta pretensada V11-30 260 | 5d | 2026-08-20 | 2026-08-26 | 1276FS+3d, 1277FS+3d | 2026-08-20 | 2026-08-26 | 5d | 2d | 0d |
| 1288 | 1.6.9.9 | Vigueta pretensada V11-30 285 | 5d | 2026-08-20 | 2026-08-26 | 1276FS+3d, 1277FS+3d | 2026-08-20 | 2026-08-26 | 5d | 2d | 0d |
| 1289 | 1.6.9.10 | Vigueta pretensada V11-40 330 | 5d | 2026-08-20 | 2026-08-26 | 1276FS+3d, 1277 | 2026-08-20 | 2026-08-26 | 5d | 2d | 0d |
| 1290 | 1.6.9.11 | Vigueta pretensada V11-40 335 | 5d | 2026-08-20 | 2026-08-26 | 1276FS+3d, 1277 | 2026-08-20 | 2026-08-26 | 5d | 2d | 0d |
| 1291 | 1.6.9.12 | Vigueta pretensada V11-40 505 | 5d | 2026-08-20 | 2026-08-26 | 1276FS+3d, 1277 | 2026-08-20 | 2026-08-26 | 5d | 2d | 0d |
| 1292 | 1.6.9.13 | Bovedilla poliestireno azotea | 3d | 2026-08-26 | 2026-08-29 | 1282, 1283, 1284, 1285, 1286, 1287, 1288, 1289, 1290, 1291 | 2026-08-26 | 2026-08-29 | 3d | 2d | 0d |
| 1293 | 1.6.9.14 | Malla 66-10/10 losa de compresión | 2d | 2026-08-31 | 2026-09-01 | 1292 | 2026-08-31 | 2026-09-01 | 2d | 2d | 0d |
| 1294 | 1.6.9.15 | Concreto losa de azotea f’c=200 | 1d | 2026-09-02 | 2026-09-02 | 1280, 1281, 1292, 1293, 1297, 1296 | 2026-09-02 | 2026-09-02 | 1d | 2d | 0d |
| 1295 | 1.6.9.16 | Curado de concreto | 1d | 2026-09-03 | 2026-09-03 | 1294 | 2026-09-03 | 2026-09-03 | 1d | 2d | 0d |
| 1296 | 1.6.9.17 | Cimbra losa de azotea | 5d | 2026-08-17 | 2026-08-22 | 1276, 1277, 1278 | 2026-08-17 | 2026-08-22 | 5d | 10d | 8d |
| 1297 | 1.6.9.18 | Ramaleo de poliducto para inst. electrica en azotea | 2d | 2026-08-31 | 2026-09-01 | 1292 | 2026-08-31 | 2026-09-01 | 2d | 2d | 0d |

| ID | WBS | Task | Duration | Start | Finish | Predecessors | Baseline start | Baseline finish | Baseline duration | Total slack | Free slack |
| --- | --- | --- | --- | --- | --- | --- | --- | --- | --- | --- | --- |
| 1298 | 1.6.10 | **PRETIL Y ACABADOS DE AZOTEA** | 19d | 2026-09-04 | 2026-09-29 |  | 2026-09-04 | 2026-09-29 | 19d | 2d |  |
| 1299 | 1.6.10.1 | Castillo K1 | 5d | 2026-09-07 | 2026-09-12 | 1301SS+2d | 2026-09-07 | 2026-09-12 | 5d | 2d | 0d |
| 1300 | 1.6.10.2 | Dala de cerramiento en pretil | 4d | 2026-09-10 | 2026-09-15 | 1299FS-2d, 1301FS-2d | 2026-09-10 | 2026-09-15 | 4d | 2d | 0d |
| 1301 | 1.6.10.3 | Muro de block 12x15x40 | 5d | 2026-09-04 | 2026-09-10 | 1295 | 2026-09-04 | 2026-09-10 | 5d | 2d | 0d |
| 1302 | 1.6.10.4 | Chaflán en azotea | 4d | 2026-09-12 | 2026-09-18 | 1299, 1301 | 2026-09-12 | 2026-09-18 | 4d | 2d | 0d |
| 1303 | 1.6.10.5 | Diamante de entortado | 4d | 2026-09-12 | 2026-09-18 | 1299, 1301 | 2026-09-12 | 2026-09-18 | 4d | 2d | 0d |
| 1304 | 1.6.10.6 | Aplanado exterior Mortermax fino | 5d | 2026-09-15 | 2026-09-23 | 1300, 1302FS-2d, 1303FS-2d | 2026-09-15 | 2026-09-23 | 5d | 2d | 0d |
| 1305 | 1.6.10.7 | Entortado de Losa | 4d | 2026-09-24 | 2026-09-29 | 1306 | 2026-09-24 | 2026-09-29 | 4d | 2d | 0d |
| 1306 | 1.6.10.8 | Curado de concreto | 1d | 2026-09-23 | 2026-09-24 | 1302, 1304 | 2026-09-23 | 2026-09-24 | 1d | 2d | 0d |
| 1307 | 1.6.11 | **PRIMERA LIMPIEZA DE OBRA** | 4d | 2026-09-04 | 2026-09-09 |  | 2026-09-04 | 2026-09-09 | 4d | 62d |  |
| 1308 | 1.6.11.1 | Primera limpieza de obra | 2d | 2026-09-04 | 2026-09-07 | 1295 | 2026-09-04 | 2026-09-07 | 2d | 62d | 0d |
| 1309 | 1.6.11.2 | Primera carga y acarreo de escombro | 2d | 2026-09-07 | 2026-09-09 | 1308 | 2026-09-07 | 2026-09-09 | 2d | 62d | 1d |
| 1310 | 1.6.12 | **IMPERMEABILIZACION** | 5d | 2026-09-29 | 2026-10-05 |  | 2026-09-29 | 2026-10-05 | 5d | 2d |  |
| 1311 | 1.6.12.1 | Impermeabilización de pretil Kover 5 años | 4d | 2026-09-29 | 2026-10-03 | 1305 | 2026-09-29 | 2026-10-03 | 4d | 3d | 1d |
| 1312 | 1.6.12.2 | Impermeabilización de losa Kover 5 años | 5d | 2026-09-29 | 2026-10-05 | 1305 | 2026-09-29 | 2026-10-05 | 5d | 2d | 0d |
| 1313 | 1.6.13 | **ALBAÑILERIA** | 62d | 2026-09-10 | 2026-11-28 |  | 2026-09-10 | 2026-11-28 | 62d | 21d |  |
| 1314 | 1.6.13.1 | Lavadero de granito | 4d | 2026-10-26 | 2026-10-29 | 1350SS+8d | 2026-10-26 | 2026-10-29 | 4d | 61d |  |
| 1315 | 1.6.13.2 | Ranurado y resane general inst. en muros | 3d | 2026-10-02 | 2026-10-06 | 1312FS-2d | 2026-10-02 | 2026-10-06 | 3d | 4d | 1d |
| 1316 | 1.6.13.3 | Ranurado y resane eléctrico 1/2 a 3/4 | 3d | 2026-10-02 | 2026-10-06 | 1312FS-2d | 2026-10-02 | 2026-10-06 | 3d | 4d | 1d |
| 1317 | 1.6.13.4 | Ranurado y resane hidráulico 1/2 a 1 | 2d | 2026-10-05 | 2026-10-07 | 1312 | 2026-10-05 | 2026-10-07 | 2d | 3d | 0d |
| 1318 | 1.6.13.5 | Resane sanitario tubería 2 | 2d | 2026-10-05 | 2026-10-07 | 1312 | 2026-10-05 | 2026-10-07 | 2d | 3d | 0d |
| 1319 | 1.6.13.6 | Resane sanitario tubería 4 | 2d | 2026-10-05 | 2026-10-07 | 1312 | 2026-10-05 | 2026-10-07 | 2d | 3d | 0d |
| 1320 | 1.6.13.7 | Resane minisplit tubería 3 | 2d | 2026-10-05 | 2026-10-07 | 1312 | 2026-10-05 | 2026-10-07 | 2d | 3d | 0d |
| 1321 | 1.6.13.8 | Ramaleo hidráulico exterior CPVC 1 1/4 | 3d | 2026-10-05 | 2026-10-08 | 1311, 1312 | 2026-10-05 | 2026-10-08 | 3d | 2d | 0d |
| 1322 | 1.6.13.9 | Ramaleo hidráulico exterior CPVC 1 | 2d | 2026-10-05 | 2026-10-07 | 1321SS | 2026-10-05 | 2026-10-07 | 2d | 2d | 0d |
| 1323 | 1.6.13.10 | Ramaleo hidráulico exterior CPVC 3/4 | 2d | 2026-10-07 | 2026-10-09 | 1322 | 2026-10-07 | 2026-10-09 | 2d | 2d | 0d |
| 1324 | 1.6.13.11 | Ramaleo hidráulico exterior CPVC 1/2 | 2d | 2026-10-07 | 2026-10-09 | 1322 | 2026-10-07 | 2026-10-09 | 2d | 2d | 0d |
| 1325 | 1.6.13.12 | Prueba hidráulica | 1d | 2026-10-09 | 2026-10-12 | 1317, 1321, 1322, 1323, 1324 | 2026-10-09 | 2026-10-12 | 1d | 2d | 0d |
| 1326 | 1.6.13.13 | Ramaleo sanitario exterior PVC 4 | 4d | 2026-10-05 | 2026-10-09 | 1311, 1312 | 2026-10-05 | 2026-10-09 | 4d | 2d | 0d |
| 1327 | 1.6.13.14 | Ramaleo sanitario exterior PVC 2 | 3d | 2026-10-06 | 2026-10-09 | 1326SS+1d | 2026-10-06 | 2026-10-09 | 3d | 2d | 0d |
| 1328 | 1.6.13.15 | Prueba sanitaria | 1d | 2026-10-09 | 2026-10-12 | 1318, 1319, 1320, 1326, 1327 | 2026-10-09 | 2026-10-12 | 1d | 2d | 0d |
| 1329 | 1.6.13.16 | Centro de carga muros PB | 4d | 2026-10-08 | 2026-10-14 | 1311FS+3d, 1312FS+3d | 2026-10-08 | 2026-10-14 | 4d | 4d | 2d |
| 1330 | 1.6.13.17 | Firme de concreto 8 cm | 4d | 2026-10-12 | 2026-10-16 | 1325, 1328, 1332 | 2026-10-12 | 2026-10-16 | 4d | 55d | 0d |
| 1331 | 1.6.13.18 | Curado de concreto | 1d | 2026-10-16 | 2026-10-17 | 1330 | 2026-10-16 | 2026-10-17 | 1d | 55d | 17d |
| 1332 | 1.6.13.19 | Cisterna 2800 L con instalación | 18d | 2026-09-10 | 2026-10-03 | 1301, 1308, 1309 | 2026-09-10 | 2026-10-03 | 18d | 61d | 0d |
| 1333 | 1.6.13.20 | Banqueta y huellas de concreto | 8d | 2026-10-19 | 2026-10-28 | 1325, 1328, 1375, 1443FS-2d, 1452, 1444 | 2026-10-19 | 2026-10-28 | 8d | 38d | 0d |
| 1334 | 1.6.13.21 | Curado de concreto | 1d | 2026-10-29 | 2026-10-29 | 1333 | 2026-10-29 | 2026-10-29 | 1d | 38d | 0d |
| 1335 | 1.6.13.22 | Número oficial | 1d | 2026-11-27 | 2026-11-28 | 1343, 1344 | 2026-11-27 | 2026-11-28 | 1d | 38d |  |
| 1336 | 1.6.13.23 | Detallado de rodapié exterior | 4d | 2026-10-14 | 2026-10-19 | 1341 | 2026-10-14 | 2026-10-19 | 4d | 70d |  |
| 1337 | 1.6.13.24 | Detalle de losas y volados acabado fino | 4d | 2026-10-05 | 2026-10-09 | 1311, 1312 | 2026-10-05 | 2026-10-09 | 4d | 6d | 4d |
| 1338 | 1.6.13.25 | Detalle fino en muros interiores | 5d | 2026-10-07 | 2026-10-14 | 1315, 1316, 1317, 1318, 1319, 1320 | 2026-10-07 | 2026-10-14 | 5d | 3d | 1d |
| 1339 | 1.6.13.26 | Jardín interior bajo escalera con pozo de absorción | 12d | 2026-10-05 | 2026-10-20 | 1318FS-2d, 1319FS-2d, 1320FS-2d | 2026-10-05 | 2026-10-20 | 12d | 6d | 0d |

| ID | WBS | Task | Duration | Start | Finish | Predecessors | Baseline start | Baseline finish | Baseline duration | Total slack | Free slack |
| --- | --- | --- | --- | --- | --- | --- | --- | --- | --- | --- | --- |
| 1340 | 1.6.14 | **ACABADOS EN FACHADA A** | 47d | 2026-09-29 | 2026-11-27 |  | 2026-09-29 | 2026-11-27 | 47d | 38d |  |
| 1341 | 1.6.14.1 | Aplanado grueso fachada | 12d | 2026-09-29 | 2026-10-14 | 1305 | 2026-09-29 | 2026-10-14 | 12d | 44d | 0d |
| 1342 | 1.6.14.2 | Aplanado fino estuco fachada | 10d | 2026-10-07 | 2026-10-20 | 1341SS+7d | 2026-10-07 | 2026-10-20 | 10d | 44d | 0d |
| 1343 | 1.6.14.3 | Pintura acrílica 1-0102P | 8d | 2026-11-13 | 2026-11-25 | 1331FS+5d, 1334FS+12d, 1345, 1348 | 2026-11-13 | 2026-11-25 | 8d | 40d | 2d |
| 1344 | 1.6.14.4 | Pintura acrílica 1-1404D | 10d | 2026-11-13 | 2026-11-27 | 1331FS+5d, 1334FS+12d, 1345, 1348 | 2026-11-13 | 2026-11-27 | 10d | 38d | 0d |
| 1345 | 1.6.14.5 | Cantera 40x60cm | 14d | 2026-10-20 | 2026-11-06 | 1341, 1342 | 2026-10-20 | 2026-11-06 | 14d | 44d | 6d |
| 1346 | 1.6.14.6 | Lambrin de permabase 1 cara | 3d | 2026-10-14 | 2026-10-17 | 1341 | 2026-10-14 | 2026-10-17 | 3d | 51d | 0d |
| 1347 | 1.6.14.7 | Enchapado de Permabase | 4d | 2026-10-17 | 2026-10-22 | 1346 | 2026-10-17 | 2026-10-22 | 4d | 51d | 0d |
| 1348 | 1.6.14.8 | Cubierta de Permabase | 5d | 2026-10-22 | 2026-10-28 | 1347 | 2026-10-22 | 2026-10-28 | 5d | 51d | 13d |
| 1349 | 1.6.15 | **APLANADOS Y PINTURA** | 63d | 2026-10-05 | 2026-12-23 |  | 2026-10-05 | 2026-12-23 | 63d | 4d |  |
| 1350 | 1.6.15.1 | Yeso pulido en muros | 14d | 2026-10-15 | 2026-11-02 | 1315, 1316, 1329FS-1d, 1337, 1338, 1339FS-8d, 1355FS-4d, 1421FS-2d, 1424, 1425, 1426, 1427, 1428FS-1d, 1429FS-1d, 1430FS-1d, 1431FS-1d, 1432FS-2d, 1433FS-2d, 1434FS-3d, 1437FS-1d, 1438FS-5d, 1439FS-5d, 1440FS-6d, 1441FS-2d, 1442FS-7d, 1351 | 2026-10-15 | 2026-11-02 | 14d | 2d | 0d |
| 1351 | 1.6.15.2 | Aplanado en muros enjarre grueso | 5d | 2026-10-05 | 2026-10-12 | 1311, 1312 | 2026-10-05 | 2026-10-12 | 5d | 5d | 3d |
| 1352 | 1.6.15.3 | Pintura vinílica OR-W13 SHOELACE | 13d | 2026-12-08 | 2026-12-23 | 1359FS-2d, 1360FS-2d, 1373FS-2d, 1380, 1381, 1382, 1383, 1384, 1385, 1391, 1392, 1393, 1394, 1455, 1456, 1458, 1459, 1388, 1389, 1386, 1387, 1395 | 2026-12-08 | 2026-12-23 | 13d | 2d | 0d |
| 1353 | 1.6.15.4 | Pintura vinílica PPUI5-13 Creamy M. | 10d | 2026-12-01 | 2026-12-14 | 1359, 1360, 1373, 1403, 1404, 1399, 1397 | 2026-12-01 | 2026-12-14 | 10d | 10d | 8d |
| 1354 | 1.6.15.5 | Pintura vinílica MD-06 Nano White | 8d | 2026-12-01 | 2026-12-11 | 1359, 1360, 1373, 1403, 1404, 1399, 1397 | 2026-12-01 | 2026-12-11 | 8d | 12d | 10d |
| 1355 | 1.6.15.6 | Yeso pulido en plafones | 10d | 2026-10-05 | 2026-10-17 | 1311, 1312 | 2026-10-05 | 2026-10-17 | 10d | 4d | 2d |
| 1356 | 1.6.15.7 | Perfilado de puertas y ventanas | 4d | 2026-10-20 | 2026-10-24 | 1350SS+4d | 2026-10-20 | 2026-10-24 | 4d | 65d |  |
| 1357 | 1.6.16 | **PISOS Y AZULEJOS** | 24d | 2026-10-27 | 2026-11-26 |  | 2026-10-27 | 2026-11-26 | 24d | 2d |  |
| 1358 | 1.6.16.1 | **AREA SOCIAL** | 15d | 2026-10-30 | 2026-11-19 |  | 2026-10-30 | 2026-11-19 | 15d | 2d |  |
| 1359 | 1.6.16.1.1 | Piso Adhara 44X89 | 14d | 2026-10-30 | 2026-11-18 | 1350FS-2d, 1446, 1445, 1362FS-5d | 2026-10-30 | 2026-11-18 | 14d | 2d | 0d |
| 1360 | 1.6.16.1.2 | Zoclo Adhara 44X89 | 5d | 2026-11-11 | 2026-11-19 | 1359FS-4d | 2026-11-11 | 2026-11-19 | 5d | 19d | 10d |
| 1361 | 1.6.16.2 | **RECAMARAS** | 8d | 2026-10-27 | 2026-11-05 |  | 2026-10-27 | 2026-11-05 | 8d | 2d |  |
| 1362 | 1.6.16.2.1 | Acabado aparente de pisos - pulido | 8d | 2026-10-27 | 2026-11-05 | 1350FS-5d | 2026-10-27 | 2026-11-05 | 8d | 2d | 0d |
| 1363 | 1.6.16.3 | **BAÑOS** | 17d | 2026-10-28 | 2026-11-19 |  | 2026-10-28 | 2026-11-19 | 17d | 13d |  |
| 1364 | 1.6.16.3.1 | Azulejo Mod. Ornamenta 60x30 | 5d | 2026-11-05 | 2026-11-11 | 1365FS-1d, 1435, 1436, 1446 | 2026-11-05 | 2026-11-11 | 5d | 13d | 0d |
| 1365 | 1.6.16.3.2 | Impermeabilización en regadera | 2d | 2026-11-04 | 2026-11-06 | 1350, 1369 | 2026-11-04 | 2026-11-06 | 2d | 13d | 0d |
| 1366 | 1.6.16.3.3 | Piso Mod. Valparaiso 20x20 | 4d | 2026-11-11 | 2026-11-18 | 1364 | 2026-11-11 | 2026-11-18 | 4d | 13d | 0d |
| 1367 | 1.6.16.3.4 | Zoclo Adhara 44X89 | 2d | 2026-11-17 | 2026-11-19 | 1366FS-1d | 2026-11-17 | 2026-11-19 | 2d | 46d |  |
| 1368 | 1.6.16.3.5 | Piso Adhara 44X89 | 3d | 2026-11-11 | 2026-11-17 | 1364 | 2026-11-11 | 2026-11-17 | 3d | 48d |  |
| 1369 | 1.6.16.3.6 | Fabricacion de nicho decorativo en baños | 6d | 2026-10-28 | 2026-11-04 | 1350FS-4d | 2026-10-28 | 2026-11-04 | 6d | 13d | 0d |
| 1370 | 1.6.16.3.7 | Sardinel en regadera | 4d | 2026-11-11 | 2026-11-18 | 1364 | 2026-11-11 | 2026-11-18 | 4d | 47d |  |

| ID | WBS | Task | Duration | Start | Finish | Predecessors | Baseline start | Baseline finish | Baseline duration | Total slack | Free slack |
| --- | --- | --- | --- | --- | --- | --- | --- | --- | --- | --- | --- |
| 1371 | 1.6.16.4 | **ESCALERA** | 9d | 2026-11-13 | 2026-11-26 |  | 2026-11-13 | 2026-11-26 | 9d | 2d |  |
| 1372 | 1.6.16.4.1 | Piso Adhara 44X89 | 7d | 2026-11-13 | 2026-11-24 | 1238, 1350, 1359FS-2d | 2026-11-13 | 2026-11-24 | 7d | 2d | 0d |
| 1373 | 1.6.16.4.2 | Zoclo Adhara 44X89 | 4d | 2026-11-21 | 2026-11-26 | 1372FS-2d | 2026-11-21 | 2026-11-26 | 4d | 2d | 0d |
| 1374 | 1.6.17 | **EXTERIOR** | 3d | 2026-10-12 | 2026-10-15 |  | 2026-10-12 | 2026-10-15 | 3d | 7d |  |
| 1375 | 1.6.17.1 | Rastrilleo, afine y nivelado de tierra | 3d | 2026-10-12 | 2026-10-15 | 1325, 1328 | 2026-10-12 | 2026-10-15 | 3d | 7d | 0d |
| 1376 | 1.6.18 | **SEGUNDA LIMPIEZA DE OBRA** | 4d | 2026-11-26 | 2026-12-01 |  | 2026-11-26 | 2026-12-01 | 4d | 25d |  |
| 1377 | 1.6.18.1 | Segunda limpieza de obra | 2d | 2026-11-26 | 2026-11-28 | 1372, 1373 | 2026-11-26 | 2026-11-28 | 2d | 25d | 0d |
| 1378 | 1.6.18.2 | Segunda carga y acarreo de escombro | 2d | 2026-11-28 | 2026-12-01 | 1377 | 2026-11-28 | 2026-12-01 | 2d | 25d | 23d |
| 1379 | 1.6.19 | **CANCELERIA PUERTAS Y VENTANAS DE ALUMINIO** | 17d | 2026-11-13 | 2026-12-07 |  | 2026-11-13 | 2026-12-07 | 17d | 3d |  |
| 1380 | 1.6.19.1 | Fijo medidas 0.30x4.90m | 7d | 2026-11-18 | 2026-11-26 | 1350, 1359 | 2026-11-18 | 2026-11-26 | 7d | 11d | 9d |
| 1381 | 1.6.19.2 | Ventana Corrediza 1.80x1.60m | 4d | 2026-11-13 | 2026-11-20 | 1350FS+10d | 2026-11-13 | 2026-11-20 | 4d | 16d | 14d |
| 1382 | 1.6.19.3 | Ventana Corrediza 0.60x0.40m | 4d | 2026-11-18 | 2026-11-23 | 1350FS+12d | 2026-11-18 | 2026-11-23 | 4d | 14d | 12d |
| 1383 | 1.6.19.4 | Ventana Corrediza 1.54x0.50m | 4d | 2026-11-18 | 2026-11-23 | 1350FS+12d | 2026-11-18 | 2026-11-23 | 4d | 14d | 12d |
| 1384 | 1.6.19.5 | Fijo medidas 1.40x2.50m | 4d | 2026-11-21 | 2026-11-26 | 1350FS+10d, 1359FS+3d | 2026-11-21 | 2026-11-26 | 4d | 5d | 0d |
| 1385 | 1.6.19.6 | Ventana Corrediza 1.80x1.50m | 4d | 2026-11-24 | 2026-11-28 | 1350FS+7d, 1359FS+2d, 1372 | 2026-11-24 | 2026-11-28 | 4d | 3d | 0d |
| 1386 | 1.6.19.7 | Ventana Corrediza 1.40x1.60m | 4d | 2026-11-24 | 2026-11-28 | 1350, 1359, 1372 | 2026-11-24 | 2026-11-28 | 4d | 3d | 0d |
| 1387 | 1.6.19.8 | Ventana Corrediza 0.95x0.40m | 4d | 2026-11-24 | 2026-11-28 | 1350, 1359, 1372 | 2026-11-24 | 2026-11-28 | 4d | 3d | 0d |
| 1388 | 1.6.19.9 | Puerta corrediza 3.85x2.10m | 6d | 2026-11-26 | 2026-12-03 | 1384 | 2026-11-26 | 2026-12-03 | 6d | 5d | 3d |
| 1389 | 1.6.19.10 | Barandal de Cristal Templado | 6d | 2026-11-28 | 2026-12-07 | 1385, 1386, 1387 | 2026-11-28 | 2026-12-07 | 6d | 3d | 1d |
| 1390 | 1.6.20 | **CARPINTERIA, PUERTAS EXTERIORES E INTERIORES** | 9d | 2026-11-26 | 2026-12-08 |  | 2026-11-26 | 2026-12-08 | 9d | 2d |  |
| 1391 | 1.6.20.1 | Puerta P-01 de seguridad | 5d | 2026-11-26 | 2026-12-02 | 1373 | 2026-11-26 | 2026-12-02 | 5d | 6d | 4d |
| 1392 | 1.6.20.2 | Puerta P-01 interior | 8d | 2026-11-26 | 2026-12-07 | 1373 | 2026-11-26 | 2026-12-07 | 8d | 3d | 1d |
| 1393 | 1.6.20.3 | Puerta P-02 interior | 8d | 2026-11-26 | 2026-12-07 | 1373 | 2026-11-26 | 2026-12-07 | 8d | 3d | 1d |
| 1394 | 1.6.20.4 | Puerta P-03 interior | 4d | 2026-12-02 | 2026-12-08 | 1373FS+5d | 2026-12-02 | 2026-12-08 | 4d | 2d | 0d |
| 1395 | 1.6.20.5 | Puerta P-04 interior | 4d | 2026-12-02 | 2026-12-08 | 1373FS+5d | 2026-12-02 | 2026-12-08 | 4d | 2d | 0d |

| ID | WBS | Task | Duration | Start | Finish | Predecessors | Baseline start | Baseline finish | Baseline duration | Total slack | Free slack |
| --- | --- | --- | --- | --- | --- | --- | --- | --- | --- | --- | --- |
| 1396 | 1.6.21 | **VOLADOS, BARANDAL Y ESCALERA** | 33d | 2026-10-20 | 2026-12-01 |  | 2026-10-20 | 2026-12-01 | 33d | 10d |  |
| 1397 | 1.6.21.1 | Barandal de Herreria en escalera | 4d | 2026-11-06 | 2026-11-11 | 1398FS-4d | 2026-11-06 | 2026-11-11 | 4d | 25d | 15d |
| 1398 | 1.6.21.2 | Escalera de herreria | 18d | 2026-10-20 | 2026-11-11 | 1339 | 2026-10-20 | 2026-11-11 | 18d | 10d | 0d |
| 1399 | 1.6.21.3 | Techumbre en acceso Principal | 14d | 2026-11-05 | 2026-11-24 | 1398FS-5d | 2026-11-05 | 2026-11-24 | 14d | 16d | 6d |
| 1400 | 1.6.21.4 | Techumbre en 1.80x0.50m | 7d | 2026-11-05 | 2026-11-13 | 1398FS-5d | 2026-11-05 | 2026-11-13 | 7d | 10d | 0d |
| 1401 | 1.6.21.5 | Techumbre en 1.40x0.50m | 7d | 2026-11-13 | 2026-11-24 | 1400 | 2026-11-13 | 2026-11-24 | 7d | 10d | 0d |
| 1402 | 1.6.21.6 | Imper con manto prefabricado | 5d | 2026-11-19 | 2026-11-25 | 1400, 1401FS-4d | 2026-11-19 | 2026-11-25 | 5d | 10d | 0d |
| 1403 | 1.6.21.7 | Plafon hoja tablaroca std | 5d | 2026-11-25 | 2026-12-01 | 1402 | 2026-11-25 | 2026-12-01 | 5d | 10d | 0d |
| 1404 | 1.6.21.8 | Acabado Woodstock en parte inf. Cubierta | 5d | 2026-11-25 | 2026-12-01 | 1402 | 2026-11-25 | 2026-12-01 | 5d | 10d | 0d |
| 1405 | 1.6.22 | **INSTALACION ELECTRICA** | 16d | 2026-10-28 | 2026-11-18 |  | 2026-10-28 | 2026-11-18 | 16d | 31d |  |
| 1406 | 1.6.22.1 | Alimentación eléctrica base a centro de carga | 5d | 2026-11-02 | 2026-11-07 | 1329, 1350 | 2026-11-02 | 2026-11-07 | 5d | 35d | 0d |
| 1407 | 1.6.22.2 | Interruptor termomagnético 1x20 A | 1d | 2026-11-07 | 2026-11-09 | 1406 | 2026-11-07 | 2026-11-09 | 1d | 35d | 4d |
| 1408 | 1.6.22.3 | Interruptor termomagnético 2x20 A | 1d | 2026-11-07 | 2026-11-09 | 1406 | 2026-11-07 | 2026-11-09 | 1d | 35d | 4d |
| 1409 | 1.6.22.4 | Salida para apagador 3 vías | 4d | 2026-10-28 | 2026-11-02 | 1311, 1350FS-4d | 2026-10-28 | 2026-11-02 | 4d | 31d | 0d |
| 1410 | 1.6.22.5 | Salida para apagador doble | 3d | 2026-11-02 | 2026-11-05 | 1409 | 2026-11-02 | 2026-11-05 | 3d | 33d | 0d |
| 1411 | 1.6.22.6 | Salida para apagador sencillo | 3d | 2026-11-02 | 2026-11-05 | 1409 | 2026-11-02 | 2026-11-05 | 3d | 33d | 0d |
| 1412 | 1.6.22.7 | Salida de alumbrado en losa | 5d | 2026-11-02 | 2026-11-07 | 1409 | 2026-11-02 | 2026-11-07 | 5d | 31d | 0d |
| 1413 | 1.6.22.8 | Salida para contacto exterior doble | 2d | 2026-11-02 | 2026-11-04 | 1409 | 2026-11-02 | 2026-11-04 | 2d | 34d | 3d |
| 1414 | 1.6.22.9 | Salida para contacto 220 V | 3d | 2026-11-04 | 2026-11-07 | 1409FS+2d | 2026-11-04 | 2026-11-07 | 3d | 31d | 0d |
| 1415 | 1.6.22.10 | Salida para contacto doble | 5d | 2026-11-04 | 2026-11-10 | 1409FS+2d | 2026-11-04 | 2026-11-10 | 5d | 34d | 3d |
| 1416 | 1.6.22.11 | Salida para contacto doble área húmeda | 2d | 2026-11-07 | 2026-11-10 | 1413, 1414 | 2026-11-07 | 2026-11-10 | 2d | 34d | 3d |
| 1417 | 1.6.22.12 | Salida TV / telefonía / intercom | 4d | 2026-11-07 | 2026-11-12 | 1413, 1414 | 2026-11-07 | 2026-11-12 | 4d | 32d | 1d |
| 1418 | 1.6.22.13 | Extractor 4 baño | 5d | 2026-11-07 | 2026-11-13 | 1413, 1414 | 2026-11-07 | 2026-11-13 | 5d | 31d | 0d |
| 1419 | 1.6.22.14 | Prueba eléctrica | 2d | 2026-11-13 | 2026-11-18 | 1406, 1407, 1408, 1409, 1410, 1411, 1412, 1413, 1414, 1415, 1416, 1417, 1418, 1472, 1473, 1479, 1474, 1475, 1477, 1478, 1481, 1483 | 2026-11-13 | 2026-11-18 | 2d | 31d | 29d |

| ID | WBS | Task | Duration | Start | Finish | Predecessors | Baseline start | Baseline finish | Baseline duration | Total slack | Free slack |
| --- | --- | --- | --- | --- | --- | --- | --- | --- | --- | --- | --- |
| 1420 | 1.6.23 | **INSTALACIÓN HIDRO-SANITARIA** | 11d | 2026-10-12 | 2026-10-24 |  | 2026-10-12 | 2026-10-24 | 11d | 2d |  |
| 1421 | 1.6.23.1 | Tubería condensados PVC 1 | 5d | 2026-10-12 | 2026-10-17 | 1325 | 2026-10-12 | 2026-10-17 | 5d | 2d | 0d |
| 1422 | 1.6.23.2 | Tubería sanitaria PVC 4 | 5d | 2026-10-12 | 2026-10-17 | 1328 | 2026-10-12 | 2026-10-17 | 5d | 10d | 0d |
| 1423 | 1.6.23.3 | Coladera H-444 | 1d | 2026-10-17 | 2026-10-19 | 1422 | 2026-10-17 | 2026-10-19 | 1d | 10d | 4d |
| 1424 | 1.6.23.4 | Caja PVC para lavadora | 3d | 2026-10-12 | 2026-10-15 | 1325 | 2026-10-12 | 2026-10-15 | 3d | 2d | 0d |
| 1425 | 1.6.23.5 | Salida para secadora PVC 4 | 3d | 2026-10-12 | 2026-10-15 | 1328 | 2026-10-12 | 2026-10-15 | 3d | 2d | 0d |
| 1426 | 1.6.23.6 | Salida hidráulica para boiler | 2d | 2026-10-12 | 2026-10-14 | 1325 | 2026-10-12 | 2026-10-14 | 2d | 3d | 1d |
| 1427 | 1.6.23.7 | Salida hidráulica para llave de jardín | 3d | 2026-10-12 | 2026-10-15 | 1325 | 2026-10-12 | 2026-10-15 | 3d | 2d | 0d |
| 1428 | 1.6.23.8 | Salida hidráulica para lavabo | 4d | 2026-10-12 | 2026-10-16 | 1325 | 2026-10-12 | 2026-10-16 | 4d | 2d | 0d |
| 1429 | 1.6.23.9 | Salida hidráulica para purificación | 4d | 2026-10-12 | 2026-10-16 | 1325 | 2026-10-12 | 2026-10-16 | 4d | 2d | 0d |
| 1430 | 1.6.23.10 | Salida sanitaria para lavabo | 2d | 2026-10-14 | 2026-10-16 | 1325FS+2d | 2026-10-14 | 2026-10-16 | 2d | 2d | 0d |
| 1431 | 1.6.23.11 | Salida hidráulica para lavadero | 2d | 2026-10-14 | 2026-10-16 | 1325FS+2d | 2026-10-14 | 2026-10-16 | 2d | 2d | 0d |
| 1432 | 1.6.23.12 | Salida sanitaria para lavadero | 2d | 2026-10-15 | 2026-10-17 | 1325FS+3d | 2026-10-15 | 2026-10-17 | 2d | 2d | 0d |
| 1433 | 1.6.23.13 | Salida hidráulica para lavadora | 2d | 2026-10-15 | 2026-10-17 | 1325FS+3d | 2026-10-15 | 2026-10-17 | 2d | 2d | 0d |
| 1434 | 1.6.23.14 | Salida sanitaria para lavadora | 2d | 2026-10-16 | 2026-10-19 | 1328FS+4d | 2026-10-16 | 2026-10-19 | 2d | 2d | 0d |
| 1435 | 1.6.23.15 | Salida hidráulica para regadera | 5d | 2026-10-16 | 2026-10-22 | 1325FS+4d | 2026-10-16 | 2026-10-22 | 5d | 7d | 0d |
| 1436 | 1.6.23.16 | Salida sanitaria para regadera | 4d | 2026-10-16 | 2026-10-21 | 1328FS+4d | 2026-10-16 | 2026-10-21 | 4d | 8d | 2d |
| 1437 | 1.6.23.17 | Salida hidráulica para WC | 2d | 2026-10-14 | 2026-10-16 | 1328FS+2d | 2026-10-14 | 2026-10-16 | 2d | 2d | 0d |
| 1438 | 1.6.23.18 | Salida sanitaria para WC | 4d | 2026-10-16 | 2026-10-21 | 1328FS+4d | 2026-10-16 | 2026-10-21 | 4d | 2d | 0d |
| 1439 | 1.6.23.19 | Salida hidráulica para zinc | 4d | 2026-10-16 | 2026-10-21 | 1328FS+4d | 2026-10-16 | 2026-10-21 | 4d | 2d | 0d |
| 1440 | 1.6.23.20 | Salida sanitaria para zinc | 3d | 2026-10-19 | 2026-10-22 | 1328FS+6d | 2026-10-19 | 2026-10-22 | 3d | 2d | 0d |
| 1441 | 1.6.23.21 | Tubo para ventila de baño 2 | 5d | 2026-10-12 | 2026-10-17 | 1421SS | 2026-10-12 | 2026-10-17 | 5d | 2d | 0d |
| 1442 | 1.6.23.22 | Tubo para minisplit PVC 3 | 5d | 2026-10-17 | 2026-10-23 | 1441 | 2026-10-17 | 2026-10-23 | 5d | 2d | 0d |
| 1443 | 1.6.23.23 | Cuadro de medición | 5d | 2026-10-15 | 2026-10-21 | 1375 | 2026-10-15 | 2026-10-21 | 5d | 7d | 0d |
| 1444 | 1.6.23.24 | Pozo de absorción 0.50x0.50x0.50 | 3d | 2026-10-15 | 2026-10-19 | 1375 | 2026-10-15 | 2026-10-19 | 3d | 10d | 0d |
| 1445 | 1.6.23.25 | Prueba sanitaria final | 1d | 2026-10-23 | 2026-10-24 | 1421, 1422, 1423, 1425, 1430, 1432, 1434, 1436, 1438, 1441, 1442 | 2026-10-23 | 2026-10-24 | 1d | 6d | 4d |
| 1446 | 1.6.23.26 | Prueba hidrostática final | 1d | 2026-10-22 | 2026-10-23 | 1426, 1427, 1428, 1429, 1431, 1433, 1435, 1437, 1439, 1443, 1444, 1449, 1450, 1448, 1447 | 2026-10-22 | 2026-10-23 | 1d | 7d | 5d |
| 1447 | 1.6.23.27 | Salida válvula control 19 mm | 1d | 2026-10-21 | 2026-10-22 | 1443 | 2026-10-21 | 2026-10-22 | 1d | 7d | 0d |
| 1448 | 1.6.23.28 | Salida válvula control 13 mm | 1d | 2026-10-21 | 2026-10-22 | 1443 | 2026-10-21 | 2026-10-22 | 1d | 7d | 0d |
| 1449 | 1.6.23.29 | Salida hidráulica para tanque hidroneumático | 3d | 2026-10-15 | 2026-10-19 | 1375 | 2026-10-15 | 2026-10-19 | 3d | 10d | 3d |
| 1450 | 1.6.23.30 | Salida hidráulica para Active Driver | 3d | 2026-10-15 | 2026-10-19 | 1375 | 2026-10-15 | 2026-10-19 | 3d | 10d | 3d |

| ID | WBS | Task | Duration | Start | Finish | Predecessors | Baseline start | Baseline finish | Baseline duration | Total slack | Free slack |
| --- | --- | --- | --- | --- | --- | --- | --- | --- | --- | --- | --- |
| 1451 | 1.6.24 | **INSTALACION DE GAS** | 8d | 2026-10-08 | 2026-10-19 |  | 2026-10-08 | 2026-10-19 | 8d | 38d |  |
| 1452 | 1.6.24.1 | Ramaleo para gas 1/2 | 5d | 2026-10-13 | 2026-10-19 | 1375FS-2d, 1453 | 2026-10-13 | 2026-10-19 | 5d | 38d | 0d |
| 1453 | 1.6.24.2 | Excavación a mano material tipo B | 3d | 2026-10-08 | 2026-10-13 | 1375FF-2d | 2026-10-08 | 2026-10-13 | 3d | 38d | 0d |
| 1454 | 1.6.25 | **MUEBLES SANITARIOS** | 29d | 2026-11-18 | 2026-12-23 |  | 2026-11-18 | 2026-12-23 | 29d | 14d |  |
| 1455 | 1.6.25.1 | WC completo Austral | 2d | 2026-11-18 | 2026-11-20 | 1359, 1366, 1445, 1446 | 2026-11-18 | 2026-11-20 | 2d | 16d | 14d |
| 1456 | 1.6.25.2 | Lavabo Senna con pedestal | 4d | 2026-11-18 | 2026-11-23 | 1359, 1364, 1366, 1445, 1446 | 2026-11-18 | 2026-11-23 | 4d | 14d | 12d |
| 1457 | 1.6.25.3 | Tarja / lavabo combo Guinea 80x45 | 2d | 2026-11-18 | 2026-11-20 | 1203, 1359, 1364, 1366, 1446 | 2026-11-18 | 2026-11-20 | 2d | 45d |  |
| 1458 | 1.6.25.4 | Regadera con monomando | 3d | 2026-11-20 | 2026-11-24 | 1359, 1364FS+2d, 1366FS+2d, 1445, 1446 | 2026-11-20 | 2026-11-24 | 3d | 13d | 11d |
| 1459 | 1.6.25.5 | Coladera inserto cerámico | 2d | 2026-11-21 | 2026-11-24 | 1364, 1366FS+3d, 1446 | 2026-11-21 | 2026-11-24 | 2d | 13d | 11d |
| 1460 | 1.6.25.6 | Toallero sencillo | 1d | 2026-12-23 | 2026-12-23 | 1352FS-1d | 2026-12-23 | 2026-12-23 | 1d | 2d | 0d |
| 1461 | 1.6.25.7 | Toallero barra | 1d | 2026-12-23 | 2026-12-23 | 1352FS-1d | 2026-12-23 | 2026-12-23 | 1d | 2d | 0d |
| 1462 | 1.6.25.8 | Portapapel | 1d | 2026-12-23 | 2026-12-23 | 1352FS-1d | 2026-12-23 | 2026-12-23 | 1d | 2d | 0d |
| 1463 | 1.6.25.9 | Gancho baño | 1d | 2026-12-23 | 2026-12-23 | 1352FS-1d | 2026-12-23 | 2026-12-23 | 1d | 2d | 0d |
| 1464 | 1.6.26 | **EQUIPAMIENTO** | 6d | 2026-10-02 | 2026-10-09 |  | 2026-10-02 | 2026-10-09 | 6d | 61d |  |
| 1465 | 1.6.26.1 | Electronivel Rotoplas 5 m | 2d | 2026-10-03 | 2026-10-06 | 1470 | 2026-10-03 | 2026-10-06 | 2d | 64d | 62d |
| 1466 | 1.6.26.2 | Manómetro | 1d | 2026-10-03 | 2026-10-05 | 1470 | 2026-10-03 | 2026-10-05 | 1d | 65d | 63d |
| 1467 | 1.6.26.3 | Interruptor de presión 30-50 PSI | 1d | 2026-10-03 | 2026-10-05 | 1470 | 2026-10-03 | 2026-10-05 | 1d | 65d | 63d |
| 1468 | 1.6.26.4 | Tanque hidroneumático FPS-24LX | 3d | 2026-10-03 | 2026-10-07 | 1470 | 2026-10-03 | 2026-10-07 | 3d | 61d | 0d |
| 1469 | 1.6.26.5 | Bomba sumergible Dominator 1.2 HP | 2d | 2026-10-07 | 2026-10-09 | 1468 | 2026-10-07 | 2026-10-09 | 2d | 61d | 59d |
| 1470 | 1.6.26.6 | Cisterna prefabricada 2800 L | 1d | 2026-10-02 | 2026-10-03 | 1332FF | 2026-10-02 | 2026-10-03 | 1d | 61d | 0d |
| 1471 | 1.6.27 | **LUMINARIAS** | 5d | 2026-11-07 | 2026-11-13 |  | 2026-11-07 | 2026-11-13 | 5d | 31d |  |
| 1472 | 1.6.27.1 | Roseta cerámica | 3d | 2026-11-07 | 2026-11-11 | 1412 | 2026-11-07 | 2026-11-11 | 3d | 33d | 2d |
| 1473 | 1.6.27.2 | Luminaria lagartijera LED | 3d | 2026-11-07 | 2026-11-11 | 1412 | 2026-11-07 | 2026-11-11 | 3d | 33d | 2d |
| 1474 | 1.6.27.3 | Spot 6W Tecnolite | 3d | 2026-11-07 | 2026-11-11 | 1412 | 2026-11-07 | 2026-11-11 | 3d | 33d | 2d |
| 1475 | 1.6.27.4 | Spot 7W Tecnolite | 3d | 2026-11-07 | 2026-11-11 | 1412 | 2026-11-07 | 2026-11-11 | 3d | 33d | 2d |
| 1476 | 1.6.27.5 | Arbotante exterior | 2d | 2026-11-07 | 2026-11-10 | 1412 | 2026-11-07 | 2026-11-10 | 2d | 31d | 0d |
| 1477 | 1.6.27.6 | Estaca LED exterior | 3d | 2026-11-10 | 2026-11-13 | 1476 | 2026-11-10 | 2026-11-13 | 3d | 31d | 0d |
| 1478 | 1.6.27.7 | Tira LED | 3d | 2026-11-10 | 2026-11-13 | 1476 | 2026-11-10 | 2026-11-13 | 3d | 31d | 0d |
| 1479 | 1.6.27.8 | Spot exterior 50W | 2d | 2026-11-07 | 2026-11-10 | 1412 | 2026-11-07 | 2026-11-10 | 2d | 34d | 3d |

| ID | WBS | Task | Type | Duration | Start | Finish | Predecessors | Baseline start | Baseline finish | Baseline duration | Total slack | Free slack | Resources | Cost | Baseline cost |
| --- | --- | --- | --- | --- | --- | --- | --- | --- | --- | --- | --- | --- | --- | --- | --- |
| 1480 | 1.6.28 | **TIMBRE** |  | 2d | 2026-11-09 | 2026-11-11 |  | 2026-11-09 | 2026-11-11 | 2d | 33d |  |  |  |  |
| 1481 | 1.6.28.1 | Timbre inalámbrico con bocina |  | 2d | 2026-11-09 | 2026-11-11 | 1410FS+3d, 1411FS+3d | 2026-11-09 | 2026-11-11 | 2d | 33d | 2d |  |  |  |
| 1482 | 1.6.29 | **OBRA EXTERIOR - BARDA** |  | 18d | 2026-10-15 | 2026-11-06 |  | 2026-10-15 | 2026-11-06 | 18d | 39d |  |  |  |  |
| 1483 | 1.6.29.1 | Murete convencional |  | 5d | 2026-10-21 | 2026-10-27 | 1375FS+5d | 2026-10-21 | 2026-10-27 | 5d | 45d | 14d |  |  |  |
| 1484 | 1.6.29.2 | Barda de block aparente |  | 18d | 2026-10-15 | 2026-11-06 | 1375 | 2026-10-15 | 2026-11-06 | 18d | 39d | 37d |  |  |  |
| 1485 | 1.6.30 | **TERCER LIMPIEZA DE OBRA** |  | 16d | 2026-12-26 | 2027-01-18 |  | 2026-12-26 | 2027-01-18 | 16d | 2d |  |  |  |  |
| 1486 | 1.6.30.1 | Limpieza fina para entrega |  | 5d | 2026-12-26 | 2027-01-04 | 1352, 1353, 1354, 1385, 1394, 1395, 1419, 1445, 1446, 1460, 1461, 1462, 1463, 1465, 1466, 1467, 1468, 1469, 1484 | 2026-12-26 | 2027-01-04 | 5d | 2d | 0d |  |  |  |
| 1487 | 1.6.30.2 | Tercera limpieza de obra |  | 5d | 2027-01-04 | 2027-01-11 | 1378, 1486 | 2027-01-04 | 2027-01-11 | 5d | 2d | 0d |  |  |  |
| 1488 | 1.6.30.3 | Tercera carga y acarreo de escombro |  | 6d | 2027-01-11 | 2027-01-18 | 1487 | 2027-01-11 | 2027-01-18 | 6d | 2d | 0d |  |  |  |
| 1489 | 1.7 | **LOTE 22 M-663 CORSAC-B** |  | 174d | 2026-06-10 | 2027-01-20 |  | 2026-06-10 | 2027-01-20 | 174d | 0d |  |  | 2,101.94 | 2,101.94 |
| 1490 | 1.7.1 | **HITOS IMPORTANTES DEL LOTE** |  | 174d | 2026-06-10 | 2027-01-20 |  | 2026-06-10 | 2027-01-20 | 174d | 0d |  |  |  |  |
| 1491 | 1.7.1.1 | Inicio del LOTE 22 M-663 CORSAC-B | milestone | 0d | 2026-06-10 | 2026-06-10 | 9FS+11d | 2026-06-10 | 2026-06-10 |  | 0d |  |  |  |  |
| 1492 | 1.7.1.2 | Colado de Losa de Cimentación | milestone | 0d | 2026-07-01 | 2026-07-01 | 1522 | 2026-07-01 | 2026-07-01 |  | 157d |  |  |  |  |
| 1493 | 1.7.1.3 | Colado de Losa de Entrepiso | milestone | 0d | 2026-08-08 | 2026-08-08 | 1559 | 2026-08-08 | 2026-08-08 |  | 126d |  |  |  |  |
| 1494 | 1.7.1.4 | Colado de Losa de Azotea | milestone | 0d | 2026-09-15 | 2026-09-15 | 1594 | 2026-09-15 | 2026-09-15 |  | 96d |  |  |  |  |
| 1495 | 1.7.1.5 | Entrega de vivienda | milestone | 0d | 2027-01-20 | 2027-01-20 | 1743, 1744, 1745 | 2027-01-20 | 2027-01-20 |  | 0d |  |  |  |  |
| 1496 | 1.7.2 | **TRABAJOS PRELIMINARES** |  | 2d | 2026-06-10 | 2026-06-12 |  | 2026-06-10 | 2026-06-12 | 2d | 0d |  |  | 2,101.94 | 2,101.94 |
| 1497 | 1.7.2.1 | Trazo y nivelación |  | 2d | 2026-06-10 | 2026-06-12 | 1491 | 2026-06-10 | 2026-06-12 | 2d | 0d |  | Artico - Trazo y nivelación | 2,101.94 | 2,101.94 |
| 1498 | 1.7.3 | **EXCAVACIONES** |  | 3d | 2026-06-12 | 2026-06-16 |  | 2026-06-12 | 2026-06-16 | 3d | 0d |  |  |  |  |
| 1499 | 1.7.3.1 | Excavación a mano material tipo B |  | 3d | 2026-06-12 | 2026-06-16 | 1497 | 2026-06-12 | 2026-06-16 | 3d | 0d |  |  |  |  |
| 1500 | 1.7.3.2 | Acarreo en carretilla 20 m |  | 2d | 2026-06-13 | 2026-06-16 | 1499SS+1d | 2026-06-13 | 2026-06-16 | 2d | 0d |  |  |  |  |
| 1501 | 1.7.4 | **CIMENTACION** |  | 13d | 2026-06-16 | 2026-07-02 |  | 2026-06-16 | 2026-07-02 | 13d | 0d |  |  |  |  |
| 1502 | 1.7.4.1 | Cimbra perimetral losa de cimentación |  | 3d | 2026-06-16 | 2026-06-19 | 1499, 1500 | 2026-06-16 | 2026-06-19 | 3d | 0d |  |  |  |  |
| 1503 | 1.7.4.2 | Sistema antitermitas PVC |  | 3d | 2026-06-16 | 2026-06-19 | 1499, 1500 | 2026-06-16 | 2026-06-19 | 3d | 1d | 0d |  |  |  |
| 1504 | 1.7.4.3 | Hule negro en cimentación |  | 1d | 2026-06-19 | 2026-06-22 | 1503 | 2026-06-19 | 2026-06-22 | 1d | 1d | 0d |  |  |  |
| 1505 | 1.7.4.4 | Ramaleo poliducto eléctrico cimentación |  | 2d | 2026-06-22 | 2026-06-24 | 1504 | 2026-06-22 | 2026-06-24 | 2d | 4d | 0d |  |  |  |
| 1506 | 1.7.4.5 | Ramaleo eléctrico base-medición a centro de carga |  | 1d | 2026-06-22 | 2026-06-23 | 1504 | 2026-06-22 | 2026-06-23 | 1d | 5d | 1d |  |  |  |
| 1507 | 1.7.4.6 | Ramaleo eléctrico exterior |  | 1d | 2026-06-24 | 2026-06-25 | 1505, 1506 | 2026-06-24 | 2026-06-25 | 1d | 4d |  |  |  |  |
| 1508 | 1.7.4.7 | Ramaleo para cable poliducto 3/4 |  | 1d | 2026-06-24 | 2026-06-25 | 1505, 1506 | 2026-06-24 | 2026-06-25 | 1d | 4d |  |  |  |  |
| 1509 | 1.7.4.8 | Ramaleo para TV poliducto 3/4 |  | 1d | 2026-06-24 | 2026-06-25 | 1505, 1506 | 2026-06-24 | 2026-06-25 | 1d | 4d |  |  |  |  |
| 1510 | 1.7.4.9 | Ramaleo hidráulico CPVC 1 cimentación |  | 1d | 2026-06-22 | 2026-06-23 | 1504 | 2026-06-22 | 2026-06-23 | 1d | 1d | 0d |  |  |  |
| 1511 | 1.7.4.10 | Ramaleo hidráulico CPVC 3/4 cimentación |  | 2d | 2026-06-23 | 2026-06-25 | 1510 | 2026-06-23 | 2026-06-25 | 2d | 1d | 0d |  |  |  |
| 1512 | 1.7.4.11 | Ramaleo hidráulico CPVC 1/2 cimentación |  | 2d | 2026-06-25 | 2026-06-27 | 1511 | 2026-06-25 | 2026-06-27 | 2d | 1d | 0d |  |  |  |
| 1513 | 1.7.4.12 | Prueba hidráulica |  | 1d | 2026-06-27 | 2026-06-29 | 1510, 1511, 1512 | 2026-06-27 | 2026-06-29 | 1d | 1d |  |  |  |  |
| 1514 | 1.7.4.13 | Ramaleo sanitario PVC 4 cimentación |  | 2d | 2026-06-23 | 2026-06-25 | 1504FS+1d | 2026-06-23 | 2026-06-25 | 2d | 2d | 0d |  |  |  |
| 1515 | 1.7.4.14 | Ramaleo sanitario PVC 2 cimentación |  | 1d | 2026-06-25 | 2026-06-26 | 1514 | 2026-06-25 | 2026-06-26 | 1d | 2d | 0d |  |  |  |
| 1516 | 1.7.4.15 | Prueba sanitaria |  | 1d | 2026-06-26 | 2026-06-27 | 1514, 1515 | 2026-06-26 | 2026-06-27 | 1d | 2d |  |  |  |  |
| 1517 | 1.7.4.16 | Acero contratrabe CT-1 |  | 4d | 2026-06-19 | 2026-06-25 | 1502 | 2026-06-19 | 2026-06-25 | 4d | 0d |  |  |  |  |
| 1518 | 1.7.4.17 | Acero contratrabe CT-2 |  | 4d | 2026-06-19 | 2026-06-25 | 1502 | 2026-06-19 | 2026-06-25 | 4d | 0d |  |  |  |  |
| 1519 | 1.7.4.18 | Malla electrosoldada 6-6/8-8 |  | 2d | 2026-06-27 | 2026-06-30 | 1517, 1518, 1520, 1521 | 2026-06-27 | 2026-06-30 | 2d | 0d |  |  |  |  |
| 1520 | 1.7.4.19 | Bastón de refuerzo LS |  | 2d | 2026-06-25 | 2026-06-27 | 1517, 1518 | 2026-06-25 | 2026-06-27 | 2d | 0d |  |  |  |  |
| 1521 | 1.7.4.20 | Bastón de refuerzo LI |  | 2d | 2026-06-25 | 2026-06-27 | 1517, 1518 | 2026-06-25 | 2026-06-27 | 2d | 0d |  |  |  |  |
| 1522 | 1.7.4.21 | Colado losa de cimentación f’c=200 |  | 1d | 2026-06-30 | 2026-07-01 | 1502, 1504, 1507, 1508, 1509, 1513, 1516, 1517, 1518, 1519, 1520, 1521 | 2026-06-30 | 2026-07-01 | 1d | 0d |  |  |  |  |
| 1523 | 1.7.4.22 | Curado de concreto |  | 1d | 2026-07-01 | 2026-07-02 | 1522 | 2026-07-01 | 2026-07-02 | 1d | 0d |  |  |  |  |
| 1524 | 1.7.4.23 | Acero zapata ZT-1 |  | 4d | 2026-06-25 | 2026-06-30 | 1517, 1518 | 2026-06-25 | 2026-06-30 | 4d | 156d | 0d |  |  |  |
| 1525 | 1.7.4.24 | Acero zapata ZT-2 |  | 4d | 2026-06-25 | 2026-06-30 | 1517, 1518 | 2026-06-25 | 2026-06-30 | 4d | 156d | 0d |  |  |  |
| 1526 | 1.7.4.25 | Colado zapatas aisladas f’c=200 |  | 1d | 2026-07-01 | 2026-07-02 | 1527 | 2026-07-01 | 2026-07-02 | 1d | 156d |  |  |  |  |
| 1527 | 1.7.4.26 | Cimbra frontera zapatas |  | 3d | 2026-06-27 | 2026-07-01 | 1524FS-2d, 1525FS-2d | 2026-06-27 | 2026-07-01 | 3d | 156d | 0d |  |  |  |

| ID | WBS | Task | Duration | Start | Finish | Predecessors | Baseline start | Baseline finish | Baseline duration | Total slack | Free slack |
| --- | --- | --- | --- | --- | --- | --- | --- | --- | --- | --- | --- |
| 1528 | 1.7.5 | **MUROS, PLANTA BAJA. CASTILLOS Y CERRAMIENTOS** | 20d | 2026-06-26 | 2026-07-21 |  | 2026-06-26 | 2026-07-21 | 20d | 5d |  |
| 1529 | 1.7.5.1 | Anclaje de castillos y Columnas PB | 5d | 2026-06-26 | 2026-07-02 | 1517FS+1d, 1518FS+1d | 2026-06-26 | 2026-07-02 | 5d | 144d | 0d |
| 1530 | 1.7.5.2 | Castillo K1 | 4d | 2026-07-02 | 2026-07-07 | 1523, 1529 | 2026-07-02 | 2026-07-07 | 4d | 144d | 0d |
| 1531 | 1.7.5.3 | Castillo K2 | 4d | 2026-07-02 | 2026-07-07 | 1523, 1529 | 2026-07-02 | 2026-07-07 | 4d | 148d | 1d |
| 1532 | 1.7.5.4 | Castillo K3 | 3d | 2026-07-06 | 2026-07-08 | 1530FS-2d | 2026-07-06 | 2026-07-08 | 3d | 144d | 0d |
| 1533 | 1.7.5.5 | Castillo K4 | 3d | 2026-07-06 | 2026-07-08 | 1530FS-2d | 2026-07-06 | 2026-07-08 | 3d | 144d | 0d |
| 1534 | 1.7.5.6 | Castillo K5 | 3d | 2026-07-08 | 2026-07-10 | 1532FS-1d, 1533FS-1d | 2026-07-08 | 2026-07-10 | 3d | 144d | 0d |
| 1535 | 1.7.5.7 | Refuerzo de muro K6 | 3d | 2026-07-09 | 2026-07-13 | 1534FS-2d | 2026-07-09 | 2026-07-13 | 3d | 144d | 0d |
| 1536 | 1.7.5.8 | Columna C1 | 4d | 2026-07-02 | 2026-07-07 | 1523, 1529 | 2026-07-02 | 2026-07-07 | 4d | 148d | 0d |
| 1537 | 1.7.5.9 | Columna C2 | 4d | 2026-07-08 | 2026-07-13 | 1536 | 2026-07-08 | 2026-07-13 | 4d | 148d |  |
| 1538 | 1.7.5.10 | Dala de cerramiento CR-1 | 4d | 2026-07-09 | 2026-07-14 | 1530, 1531, 1532 | 2026-07-09 | 2026-07-14 | 4d | 147d |  |
| 1539 | 1.7.5.11 | Dala de cerramiento CR-2 | 3d | 2026-07-09 | 2026-07-13 | 1530, 1531, 1532 | 2026-07-09 | 2026-07-13 | 3d | 148d |  |
| 1540 | 1.7.5.12 | Cadena block dala | 4d | 2026-07-13 | 2026-07-17 | 1535 | 2026-07-13 | 2026-07-17 | 4d | 144d |  |
| 1541 | 1.7.5.13 | Muro de ladrillo aparente | 15d | 2026-07-02 | 2026-07-21 | 1523 | 2026-07-02 | 2026-07-21 | 15d | 0d |  |
| 1542 | 1.7.5.14 | Muro de block planta baja | 13d | 2026-07-06 | 2026-07-21 | 1523FS+2d | 2026-07-06 | 2026-07-21 | 13d | 0d |  |
| 1543 | 1.7.6 | **ESCALERA** | 14d | 2026-08-08 | 2026-08-26 |  | 2026-08-08 | 2026-08-26 | 14d | 112d |  |
| 1544 | 1.7.6.1 | Escalera de concreto armado | 14d | 2026-08-08 | 2026-08-26 | 1559 | 2026-08-08 | 2026-08-26 | 14d | 112d |  |
| 1545 | 1.7.7 | **LOSA DE ENTREPISO (viegueta y caseton)** | 18d | 2026-07-18 | 2026-08-10 |  | 2026-07-18 | 2026-08-10 | 18d | 3d |  |
| 1546 | 1.7.7.1 | Vigueta pretensada 1.40 m | 3d | 2026-07-18 | 2026-07-22 | 1541FS-2d, 1542FS-2d | 2026-07-18 | 2026-07-22 | 3d | 5d | 4d |
| 1547 | 1.7.7.2 | Vigueta pretensada 1.95 m | 4d | 2026-07-20 | 2026-07-24 | 1541FS-1d, 1542FS-1d | 2026-07-20 | 2026-07-24 | 4d | 3d | 2d |
| 1548 | 1.7.7.3 | Vigueta pretensada 3.35 m | 4d | 2026-07-21 | 2026-07-27 | 1541, 1542 | 2026-07-21 | 2026-07-27 | 4d | 2d | 1d |
| 1549 | 1.7.7.4 | Vigueta pretensada 3.50 m | 4d | 2026-07-22 | 2026-07-28 | 1541FS+1d, 1542FS+1d | 2026-07-22 | 2026-07-28 | 4d | 1d | 0d |
| 1550 | 1.7.7.5 | Vigueta pretensada 3.75 m | 4d | 2026-07-22 | 2026-07-28 | 1541FS+1d, 1542FS+1d | 2026-07-22 | 2026-07-28 | 4d | 1d | 0d |
| 1551 | 1.7.7.6 | Vigueta pretensada 3.90 m | 4d | 2026-07-22 | 2026-07-28 | 1541FS+1d, 1542FS+1d | 2026-07-22 | 2026-07-28 | 4d | 1d | 0d |
| 1552 | 1.7.7.7 | Bovedilla poliestireno entrepiso | 2d | 2026-07-28 | 2026-07-30 | 1546, 1547, 1548, 1549, 1550, 1551 | 2026-07-28 | 2026-07-30 | 2d | 1d | 0d |
| 1553 | 1.7.7.8 | Dala de coronamiento | 3d | 2026-07-28 | 2026-07-31 | 1546, 1547, 1548, 1549, 1550, 1551, 1558FS-1d | 2026-07-28 | 2026-07-31 | 3d | 4d | 3d |
| 1554 | 1.7.7.9 | Nervadura NR-1 | 3d | 2026-07-29 | 2026-08-01 | 1546, 1547, 1548, 1549, 1550, 1551, 1558 | 2026-07-29 | 2026-08-01 | 3d | 0d |  |
| 1555 | 1.7.7.10 | Nervadura NR-2 | 3d | 2026-07-29 | 2026-08-01 | 1554SS | 2026-07-29 | 2026-08-01 | 3d | 2d | 0d |
| 1556 | 1.7.7.11 | Trabe TR-1 | 5d | 2026-07-29 | 2026-08-04 | 1554SS | 2026-07-29 | 2026-08-04 | 5d | 0d |  |
| 1557 | 1.7.7.12 | Malla 66-10/10 losa de compresión | 2d | 2026-08-04 | 2026-08-06 | 1552, 1553, 1567, 1570 | 2026-08-04 | 2026-08-06 | 2d | 1d |  |
| 1558 | 1.7.7.13 | Cimbra losa de azotea | 5d | 2026-07-22 | 2026-07-29 | 1541FS+1d, 1542FS+1d | 2026-07-22 | 2026-07-29 | 5d | 0d |  |
| 1559 | 1.7.7.14 | Concreto losa de entrepiso f’c=200 | 1d | 2026-08-07 | 2026-08-08 | 1554, 1555, 1556, 1557, 1564, 1567, 1570, 1561, 1572 | 2026-08-07 | 2026-08-08 | 1d | 0d |  |
| 1560 | 1.7.7.15 | Curado de concreto | 1d | 2026-08-08 | 2026-08-10 | 1559 | 2026-08-08 | 2026-08-10 | 1d | 0d |  |
| 1561 | 1.7.7.16 | Cimbra exterior corta losa | 3d | 2026-07-31 | 2026-08-04 | 1554FS-1d, 1555FS-1d | 2026-07-31 | 2026-08-04 | 3d | 3d |  |
| 1562 | 1.7.7.17 | Ramaleo poliducto eléctrico entrepiso | 2d | 2026-07-30 | 2026-08-01 | 1552 | 2026-07-30 | 2026-08-01 | 2d | 4d | 0d |
| 1563 | 1.7.7.18 | Ramaleo para cable poliducto 3/4 | 1d | 2026-07-30 | 2026-07-31 | 1552 | 2026-07-30 | 2026-07-31 | 1d | 133d |  |
| 1564 | 1.7.7.19 | Ramaleo para TV poliducto 3/4 | 1d | 2026-08-01 | 2026-08-03 | 1562 | 2026-08-01 | 2026-08-03 | 1d | 4d |  |
| 1565 | 1.7.7.20 | Ramaleo hidráulico CPVC 3/4 | 2d | 2026-07-31 | 2026-08-03 | 1552FS+1d | 2026-07-31 | 2026-08-03 | 2d | 1d | 0d |
| 1566 | 1.7.7.21 | Ramaleo hidráulico CPVC 1/2 | 1d | 2026-08-03 | 2026-08-04 | 1565 | 2026-08-03 | 2026-08-04 | 1d | 1d | 0d |
| 1567 | 1.7.7.22 | Prueba hidráulica | 1d | 2026-08-03 | 2026-08-04 | 1565, 1566FS-1d | 2026-08-03 | 2026-08-04 | 1d | 1d | 0d |
| 1568 | 1.7.7.23 | Ramaleo sanitario PVC 4 | 2d | 2026-07-31 | 2026-08-03 | 1552FS+1d | 2026-07-31 | 2026-08-03 | 2d | 1d | 0d |
| 1569 | 1.7.7.24 | Ramaleo sanitario PVC 2 | 1d | 2026-08-03 | 2026-08-04 | 1568 | 2026-08-03 | 2026-08-04 | 1d | 1d | 0d |
| 1570 | 1.7.7.25 | Prueba sanitaria | 1d | 2026-08-03 | 2026-08-04 | 1568, 1569FS-1d | 2026-08-03 | 2026-08-04 | 1d | 1d | 0d |

| ID | WBS | Task | Duration | Start | Finish | Predecessors | Baseline start | Baseline finish | Baseline duration | Total slack | Free slack |
| --- | --- | --- | --- | --- | --- | --- | --- | --- | --- | --- | --- |
| 1571 | 1.7.8 | **MUROS EN PLANTA ALTA, CASTILLOS Y CERRM.** | 21d | 2026-08-03 | 2026-08-28 |  | 2026-08-03 | 2026-08-28 | 21d | 0d |  |
| 1572 | 1.7.8.1 | Anclaje de castillos y Columnas PA | 4d | 2026-08-03 | 2026-08-07 | 1554FS-1d, 1555FS-1d, 1556FS-1d | 2026-08-03 | 2026-08-07 | 4d | 0d |  |
| 1573 | 1.7.8.2 | Castillo K1 | 4d | 2026-08-10 | 2026-08-14 | 1560 | 2026-08-10 | 2026-08-14 | 4d | 4d | 0d |
| 1574 | 1.7.8.3 | Castillo K2 | 4d | 2026-08-11 | 2026-08-17 | 1560FS+1d | 2026-08-11 | 2026-08-17 | 4d | 3d | 0d |
| 1575 | 1.7.8.4 | Castillo K3 | 3d | 2026-08-12 | 2026-08-17 | 1560FS+2d | 2026-08-12 | 2026-08-17 | 3d | 3d | 0d |
| 1576 | 1.7.8.5 | Castillo K4 | 3d | 2026-08-14 | 2026-08-19 | 1573 | 2026-08-14 | 2026-08-19 | 3d | 4d | 1d |
| 1577 | 1.7.8.6 | Castillo K5 | 3d | 2026-08-14 | 2026-08-19 | 1573 | 2026-08-14 | 2026-08-19 | 3d | 4d | 1d |
| 1578 | 1.7.8.7 | Refuerzo de muro K6 | 3d | 2026-08-17 | 2026-08-20 | 1573, 1574, 1575 | 2026-08-17 | 2026-08-20 | 3d | 3d | 0d |
| 1579 | 1.7.8.8 | Dala de cerramiento CR-1 | 4d | 2026-08-20 | 2026-08-25 | 1576, 1577, 1578 | 2026-08-20 | 2026-08-25 | 4d | 3d | 0d |
| 1580 | 1.7.8.9 | Cadena block dala | 3d | 2026-08-25 | 2026-08-28 | 1578, 1579 | 2026-08-25 | 2026-08-28 | 3d | 3d | 0d |
| 1581 | 1.7.8.10 | Muro de ladrillo aparente | 15d | 2026-08-10 | 2026-08-28 | 1560 | 2026-08-10 | 2026-08-28 | 15d | 0d |  |
| 1582 | 1.7.8.11 | Muro de block planta alta | 14d | 2026-08-11 | 2026-08-28 | 1560FS+1d | 2026-08-11 | 2026-08-28 | 14d | 0d |  |
| 1583 | 1.7.9 | **LOSA AZOTEA** | 15d | 2026-08-28 | 2026-09-17 |  | 2026-08-28 | 2026-09-17 | 15d | 0d |  |
| 1584 | 1.7.9.1 | Cortalosa CL-1 | 2d | 2026-09-11 | 2026-09-14 | 1592 | 2026-09-11 | 2026-09-14 | 2d | 0d |  |
| 1585 | 1.7.9.2 | Vigueta pretensada V11-40 390 | 5d | 2026-08-28 | 2026-09-03 | 1580, 1581, 1582 | 2026-08-28 | 2026-09-03 | 5d | 3d |  |
| 1586 | 1.7.9.3 | Vigueta pretensada V11-30 280 | 5d | 2026-08-28 | 2026-09-03 | 1581, 1582 | 2026-08-28 | 2026-09-03 | 5d | 3d |  |
| 1587 | 1.7.9.4 | Vigueta pretensada V11-30 285 | 5d | 2026-08-28 | 2026-09-03 | 1581, 1582 | 2026-08-28 | 2026-09-03 | 5d | 3d |  |
| 1588 | 1.7.9.5 | Vigueta pretensada V11-30 220 | 5d | 2026-09-01 | 2026-09-07 | 1581FS+2d, 1582FS+2d | 2026-09-01 | 2026-09-07 | 5d | 1d |  |
| 1589 | 1.7.9.6 | Vigueta pretensada V11-40 75 | 5d | 2026-09-01 | 2026-09-07 | 1581FS+2d, 1582FS+2d | 2026-09-01 | 2026-09-07 | 5d | 1d |  |
| 1590 | 1.7.9.7 | Vigueta pretensada V11-40 195 | 5d | 2026-09-02 | 2026-09-08 | 1581FS+3d, 1582FS+3d | 2026-09-02 | 2026-09-08 | 5d | 0d |  |
| 1591 | 1.7.9.8 | Vigueta pretensada V11-50 450 | 5d | 2026-09-02 | 2026-09-08 | 1581FS+3d, 1582FS+3d | 2026-09-02 | 2026-09-08 | 5d | 0d |  |
| 1592 | 1.7.9.9 | Bovedilla poliestireno azotea | 3d | 2026-09-08 | 2026-09-11 | 1585, 1586, 1587, 1588, 1589, 1590, 1591 | 2026-09-08 | 2026-09-11 | 3d | 0d |  |
| 1593 | 1.7.9.10 | Malla 66-10/10 losa de compresión | 2d | 2026-09-11 | 2026-09-14 | 1592 | 2026-09-11 | 2026-09-14 | 2d | 0d |  |
| 1594 | 1.7.9.11 | Concreto losa de azotea f’c=200 | 1d | 2026-09-14 | 2026-09-15 | 1584, 1592, 1593, 1597, 1596 | 2026-09-14 | 2026-09-15 | 1d | 0d |  |
| 1595 | 1.7.9.12 | Curado de concreto | 1d | 2026-09-15 | 2026-09-17 | 1594 | 2026-09-15 | 2026-09-17 | 1d | 0d |  |
| 1596 | 1.7.9.13 | Cimbra losa de azotea | 5d | 2026-08-28 | 2026-09-03 | 1581, 1582 | 2026-08-28 | 2026-09-03 | 5d | 8d |  |
| 1597 | 1.7.9.14 | Ramaleo de poliducto para inst. electrica en azotea | 2d | 2026-09-11 | 2026-09-14 | 1592 | 2026-09-11 | 2026-09-14 | 2d | 0d |  |

| ID | WBS | Task | Duration | Start | Finish | Predecessors | Baseline start | Baseline finish | Baseline duration | Total slack | Free slack |
| --- | --- | --- | --- | --- | --- | --- | --- | --- | --- | --- | --- |
| 1598 | 1.7.10 | **PRETIL Y ACABADOS DE AZOTEA** | 19d | 2026-09-17 | 2026-10-12 |  | 2026-09-17 | 2026-10-12 | 19d | 0d |  |
| 1599 | 1.7.10.1 | Castillo K1 | 5d | 2026-09-21 | 2026-09-26 | 1601SS+2d | 2026-09-21 | 2026-09-26 | 5d | 0d |  |
| 1600 | 1.7.10.2 | Dala de cerramiento en pretil | 4d | 2026-09-24 | 2026-09-29 | 1599FS-2d, 1601FS-2d | 2026-09-24 | 2026-09-29 | 4d | 0d |  |
| 1601 | 1.7.10.3 | Muro de block 12x15x40 | 5d | 2026-09-17 | 2026-09-24 | 1595 | 2026-09-17 | 2026-09-24 | 5d | 0d |  |
| 1602 | 1.7.10.4 | Chaflán en azotea | 4d | 2026-09-26 | 2026-10-01 | 1599, 1601 | 2026-09-26 | 2026-10-01 | 4d | 0d |  |
| 1603 | 1.7.10.5 | Aplanado exterior Mortermax fino | 5d | 2026-09-29 | 2026-10-05 | 1600, 1602FS-2d | 2026-09-29 | 2026-10-05 | 5d | 0d |  |
| 1604 | 1.7.10.6 | Acabado de azotea para impermeabilizar | 4d | 2026-10-06 | 2026-10-12 | 1605 | 2026-10-06 | 2026-10-12 | 4d | 0d |  |
| 1605 | 1.7.10.7 | Curado de concreto | 1d | 2026-10-05 | 2026-10-06 | 1602, 1603 | 2026-10-05 | 2026-10-06 | 1d | 0d |  |
| 1606 | 1.7.11 | **PRIMERA LIMPIEZA DE OBRA** | 4d | 2026-09-17 | 2026-09-23 |  | 2026-09-17 | 2026-09-23 | 4d | 52d |  |
| 1607 | 1.7.11.1 | Primera limpieza de obra | 2d | 2026-09-17 | 2026-09-21 | 1595 | 2026-09-17 | 2026-09-21 | 2d | 52d | 0d |
| 1608 | 1.7.11.2 | Primera carga y acarreo de escombro | 2d | 2026-09-21 | 2026-09-23 | 1607 | 2026-09-21 | 2026-09-23 | 2d | 52d | 1d |
| 1609 | 1.7.12 | **IMPERMEABILIZACION** | 5d | 2026-10-12 | 2026-10-17 |  | 2026-10-12 | 2026-10-17 | 5d | 0d |  |
| 1610 | 1.7.12.1 | Impermeabilización de pretil Kover 5 años | 4d | 2026-10-12 | 2026-10-16 | 1604 | 2026-10-12 | 2026-10-16 | 4d | 1d |  |
| 1611 | 1.7.12.2 | Impermeabilización de losa Kover 5 años | 5d | 2026-10-12 | 2026-10-17 | 1604 | 2026-10-12 | 2026-10-17 | 5d | 0d |  |
| 1612 | 1.7.13 | **ALBAÑILERIA** | 62d | 2026-09-24 | 2026-12-11 |  | 2026-09-24 | 2026-12-11 | 62d | 19d |  |
| 1613 | 1.7.13.1 | Lavadero de granito | 4d | 2026-11-06 | 2026-11-11 | 1637SS+8d | 2026-11-06 | 2026-11-11 | 4d | 51d |  |
| 1614 | 1.7.13.2 | Ramaleo hidráulico exterior CPVC 1 1/4 | 3d | 2026-10-17 | 2026-10-21 | 1610, 1611 | 2026-10-17 | 2026-10-21 | 3d | 0d |  |
| 1615 | 1.7.13.3 | Ramaleo hidráulico exterior CPVC 1 | 2d | 2026-10-17 | 2026-10-20 | 1614SS | 2026-10-17 | 2026-10-20 | 2d | 0d |  |
| 1616 | 1.7.13.4 | Ramaleo hidráulico exterior CPVC 3/4 | 2d | 2026-10-20 | 2026-10-22 | 1615 | 2026-10-20 | 2026-10-22 | 2d | 0d |  |
| 1617 | 1.7.13.5 | Ramaleo hidráulico exterior CPVC 1/2 | 2d | 2026-10-20 | 2026-10-22 | 1615 | 2026-10-20 | 2026-10-22 | 2d | 0d |  |
| 1618 | 1.7.13.6 | Prueba hidráulica | 1d | 2026-10-22 | 2026-10-23 | 1614, 1615, 1616, 1617 | 2026-10-22 | 2026-10-23 | 1d | 0d |  |
| 1619 | 1.7.13.7 | Ramaleo sanitario exterior PVC 4 | 4d | 2026-10-17 | 2026-10-22 | 1610, 1611 | 2026-10-17 | 2026-10-22 | 4d | 0d |  |
| 1620 | 1.7.13.8 | Ramaleo sanitario exterior PVC 2 | 3d | 2026-10-19 | 2026-10-22 | 1619SS+1d | 2026-10-19 | 2026-10-22 | 3d | 0d |  |
| 1621 | 1.7.13.9 | Prueba sanitaria | 1d | 2026-10-22 | 2026-10-23 | 1619, 1620 | 2026-10-22 | 2026-10-23 | 1d | 0d |  |
| 1622 | 1.7.13.10 | Centro de carga muros PB | 4d | 2026-10-21 | 2026-10-26 | 1610FS+3d, 1611FS+3d | 2026-10-21 | 2026-10-26 | 4d | 2d |  |
| 1623 | 1.7.13.11 | Firme de concreto 8 cm | 4d | 2026-10-23 | 2026-10-28 | 1618, 1621, 1625 | 2026-10-23 | 2026-10-28 | 4d | 45d | 0d |
| 1624 | 1.7.13.12 | Curado de concreto | 1d | 2026-10-29 | 2026-10-29 | 1623 | 2026-10-29 | 2026-10-29 | 1d | 45d | 17d |
| 1625 | 1.7.13.13 | Cisterna 2800 L con instalación | 18d | 2026-09-24 | 2026-10-16 | 1601, 1607, 1608 | 2026-09-24 | 2026-10-16 | 18d | 51d | 0d |
| 1626 | 1.7.13.14 | Banqueta y huellas de concreto | 8d | 2026-10-31 | 2026-11-10 | 1618, 1621, 1659, 1714FS-2d, 1720 | 2026-10-31 | 2026-11-10 | 8d | 28d | 0d |
| 1627 | 1.7.13.15 | Curado de concreto | 1d | 2026-11-10 | 2026-11-11 | 1626 | 2026-11-10 | 2026-11-11 | 1d | 28d | 0d |
| 1628 | 1.7.13.16 | Número oficial | 1d | 2026-12-10 | 2026-12-11 | 1634, 1635 | 2026-12-10 | 2026-12-11 | 1d | 28d |  |
| 1629 | 1.7.13.17 | Detallado de rodapié exterior | 4d | 2026-10-27 | 2026-10-30 | 1632 | 2026-10-27 | 2026-10-30 | 4d | 60d |  |
| 1630 | 1.7.13.18 | Detallado de muros interiores | 4d | 2026-10-17 | 2026-10-22 | 1610, 1611 | 2026-10-17 | 2026-10-22 | 4d | 4d |  |

| ID | WBS | Task | Duration | Start | Finish | Predecessors | Baseline start | Baseline finish | Baseline duration | Total slack | Free slack |
| --- | --- | --- | --- | --- | --- | --- | --- | --- | --- | --- | --- |
| 1631 | 1.7.14 | **ACABADOS EN FACHADA A** | 47d | 2026-10-12 | 2026-12-10 |  | 2026-10-12 | 2026-12-10 | 47d | 29d |  |
| 1632 | 1.7.14.1 | Aplanado grueso fachada | 12d | 2026-10-12 | 2026-10-26 | 1604 | 2026-10-12 | 2026-10-26 | 12d | 59d | 0d |
| 1633 | 1.7.14.2 | Aplanado fino estuco fachada | 10d | 2026-10-20 | 2026-11-02 | 1632SS+7d | 2026-10-20 | 2026-11-02 | 10d | 59d |  |
| 1634 | 1.7.14.3 | Pintura acrílica 1-0102P | 8d | 2026-11-27 | 2026-12-08 | 1624FS+5d, 1627FS+12d | 2026-11-27 | 2026-12-08 | 8d | 30d | 2d |
| 1635 | 1.7.14.4 | Pintura acrílica 1-1404D | 10d | 2026-11-27 | 2026-12-10 | 1624FS+5d, 1627FS+12d | 2026-11-27 | 2026-12-10 | 10d | 28d | 0d |
| 1636 | 1.7.15 | **APLANADOS Y PINTURA** | 63d | 2026-10-17 | 2027-01-11 |  | 2026-10-17 | 2027-01-11 | 63d | 2d |  |
| 1637 | 1.7.15.1 | Yeso pulido en muros | 14d | 2026-10-28 | 2026-11-13 | 1622FS-1d, 1630, 1640FS-4d, 1694FS-2d, 1695, 1696, 1697, 1698, 1699FS-1d, 1700FS-1d, 1701FS-1d, 1702FS-1d, 1703FS-2d, 1704FS-2d, 1705FS-3d, 1708FS-1d, 1709FS-5d, 1710FS-5d, 1711FS-6d, 1712FS-2d, 1713FS-7d | 2026-10-28 | 2026-11-13 | 14d | 0d |  |
| 1638 | 1.7.15.2 | Pintura vinílica 699 Cottage White | 13d | 2026-12-21 | 2027-01-11 | 1645FS-2d, 1646FS-2d, 1657FS-2d, 1664, 1665, 1666, 1667, 1668, 1669, 1671, 1672, 1673, 1674, 1723, 1724, 1725, 1726 | 2026-12-21 | 2027-01-11 | 13d | 0d |  |
| 1639 | 1.7.15.3 | Pintura vinílica 691 Pacific Bungalow | 10d | 2026-12-09 | 2026-12-21 | 1645, 1646, 1657 | 2026-12-09 | 2026-12-21 | 10d | 20d |  |
| 1640 | 1.7.15.4 | Yeso pulido en plafones | 10d | 2026-10-17 | 2026-10-29 | 1610, 1611 | 2026-10-17 | 2026-10-29 | 10d | 2d |  |
| 1641 | 1.7.15.5 | Pintura vinílica Nano White | 7d | 2026-12-12 | 2026-12-21 | 1645FS+3d, 1646FS+3d, 1657FS+3d | 2026-12-12 | 2026-12-21 | 7d | 20d |  |
| 1642 | 1.7.15.6 | Perfilado de puertas y ventanas | 4d | 2026-11-02 | 2026-11-06 | 1637SS+4d | 2026-11-02 | 2026-11-06 | 4d | 55d |  |
| 1643 | 1.7.16 | **PISOS Y AZULEJOS** | 23d | 2026-11-09 | 2026-12-09 |  | 2026-11-09 | 2026-12-09 | 23d | 2d |  |
| 1644 | 1.7.16.1 | **AREA SOCIAL** | 15d | 2026-11-11 | 2026-12-01 |  | 2026-11-11 | 2026-12-01 | 15d | 0d |  |
| 1645 | 1.7.16.1.1 | Piso Moonside Crema 60x60 | 14d | 2026-11-11 | 2026-11-30 | 1637FS-2d, 1716, 1715 | 2026-11-11 | 2026-11-30 | 14d | 0d |  |
| 1646 | 1.7.16.1.2 | Zoclo piso 60x60 Moonside Crema | 5d | 2026-11-25 | 2026-12-01 | 1645FS-4d | 2026-11-25 | 2026-12-01 | 5d | 17d | 6d |
| 1647 | 1.7.16.2 | **BAÑOS** | 17d | 2026-11-09 | 2026-12-01 |  | 2026-11-09 | 2026-12-01 | 17d | 11d |  |
| 1648 | 1.7.16.2.1 | Piso Moonside Crema 60x60 | 4d | 2026-11-25 | 2026-11-30 | 1652 | 2026-11-25 | 2026-11-30 | 4d | 11d | 0d |
| 1649 | 1.7.16.2.2 | Zoclo piso 60x60 Moonside Crema | 2d | 2026-11-28 | 2026-12-01 | 1648FS-1d | 2026-11-28 | 2026-12-01 | 2d | 36d |  |
| 1650 | 1.7.16.2.3 | Piso porcelánico Acali 20x20 beige | 3d | 2026-11-25 | 2026-11-28 | 1652 | 2026-11-25 | 2026-11-28 | 3d | 38d |  |
| 1651 | 1.7.16.2.4 | Impermeabilización en regadera | 2d | 2026-11-18 | 2026-11-20 | 1637, 1653 | 2026-11-18 | 2026-11-20 | 2d | 11d | 0d |
| 1652 | 1.7.16.2.5 | Azulejo Moonside Crema 60x60 | 5d | 2026-11-19 | 2026-11-25 | 1651FS-1d, 1706, 1707, 1716 | 2026-11-19 | 2026-11-25 | 5d | 11d | 0d |
| 1653 | 1.7.16.2.6 | Fabricacion de nicho decorativo en baños | 6d | 2026-11-09 | 2026-11-18 | 1637FS-4d | 2026-11-09 | 2026-11-18 | 6d | 11d | 0d |
| 1654 | 1.7.16.2.7 | Sardinel en regadera | 4d | 2026-11-25 | 2026-11-30 | 1652 | 2026-11-25 | 2026-11-30 | 4d | 37d |  |

| ID | WBS | Task | Duration | Start | Finish | Predecessors | Baseline start | Baseline finish | Baseline duration | Total slack | Free slack |
| --- | --- | --- | --- | --- | --- | --- | --- | --- | --- | --- | --- |
| 1655 | 1.7.16.3 | **ESCALERA** | 9d | 2026-11-27 | 2026-12-09 |  | 2026-11-27 | 2026-12-09 | 9d | 0d |  |
| 1656 | 1.7.16.3.1 | Piso Moonside Crema 60x60 | 7d | 2026-11-27 | 2026-12-07 | 1637, 1645FS-2d | 2026-11-27 | 2026-12-07 | 7d | 0d |  |
| 1657 | 1.7.16.3.2 | Zoclo piso 60x60 Moonside Crema | 4d | 2026-12-03 | 2026-12-09 | 1656FS-2d | 2026-12-03 | 2026-12-09 | 4d | 0d |  |
| 1658 | 1.7.17 | **EXTERIOR** | 3d | 2026-10-23 | 2026-10-27 |  | 2026-10-23 | 2026-10-27 | 3d | 6d |  |
| 1659 | 1.7.17.1 | Rastrilleo, afine y nivelado de tierra | 3d | 2026-10-23 | 2026-10-27 | 1618, 1621 | 2026-10-23 | 2026-10-27 | 3d | 6d | 0d |
| 1660 | 1.7.18 | **SEGUNDA LIMPIEZA DE OBRA** | 4d | 2026-12-09 | 2026-12-14 |  | 2026-12-09 | 2026-12-14 | 4d | 18d |  |
| 1661 | 1.7.18.1 | Segunda limpieza de obra | 2d | 2026-12-09 | 2026-12-11 | 1656, 1657 | 2026-12-09 | 2026-12-11 | 2d | 18d | 0d |
| 1662 | 1.7.18.2 | Segunda carga y acarreo de escombro | 2d | 2026-12-11 | 2026-12-14 | 1661 | 2026-12-11 | 2026-12-14 | 2d | 18d |  |
| 1663 | 1.7.19 | **CANCELERIA PUERTAS Y VENTANAS DE ALUMINIO** | 13d | 2026-11-27 | 2026-12-14 |  | 2026-11-27 | 2026-12-14 | 13d | 5d |  |
| 1664 | 1.7.19.1 | Puerta ventana P-05 corrediza | 7d | 2026-11-30 | 2026-12-09 | 1637, 1645 | 2026-11-30 | 2026-12-09 | 7d | 9d |  |
| 1665 | 1.7.19.2 | Ventana corrediza V-01 | 4d | 2026-11-27 | 2026-12-02 | 1637FS+10d | 2026-11-27 | 2026-12-02 | 4d | 14d |  |
| 1666 | 1.7.19.3 | Ventana corrediza V-03 | 4d | 2026-11-30 | 2026-12-04 | 1637FS+12d | 2026-11-30 | 2026-12-04 | 4d | 12d |  |
| 1667 | 1.7.19.4 | Ventana corrediza V-05 | 4d | 2026-11-30 | 2026-12-04 | 1637FS+12d | 2026-11-30 | 2026-12-04 | 4d | 12d |  |
| 1668 | 1.7.19.5 | Ventana corrediza tipo XO | 4d | 2026-12-03 | 2026-12-09 | 1637FS+10d, 1645FS+3d | 2026-12-03 | 2026-12-09 | 4d | 9d |  |
| 1669 | 1.7.19.6 | Ventana fija escalera | 6d | 2026-12-07 | 2026-12-14 | 1637FS+7d, 1645FS+2d, 1656 | 2026-12-07 | 2026-12-14 | 6d | 5d |  |
| 1670 | 1.7.20 | **CARPINTERIA, PUERTAS EXTERIORES E INTERIORES** | 9d | 2026-12-09 | 2026-12-19 |  | 2026-12-09 | 2026-12-19 | 9d | 0d |  |
| 1671 | 1.7.20.1 | Puerta P-01 de seguridad | 5d | 2026-12-09 | 2026-12-15 | 1657 | 2026-12-09 | 2026-12-15 | 5d | 4d |  |
| 1672 | 1.7.20.2 | Puerta P-03 interior | 8d | 2026-12-09 | 2026-12-18 | 1657 | 2026-12-09 | 2026-12-18 | 8d | 1d |  |
| 1673 | 1.7.20.3 | Puerta P-02 interior | 8d | 2026-12-09 | 2026-12-18 | 1657 | 2026-12-09 | 2026-12-18 | 8d | 1d |  |
| 1674 | 1.7.20.4 | Puerta exterior lavandería | 4d | 2026-12-15 | 2026-12-19 | 1657FS+5d | 2026-12-15 | 2026-12-19 | 4d | 0d |  |
| 1675 | 1.7.21 | **INSTALACION ELECTRICA** | 19d | 2026-11-05 | 2026-11-30 |  | 2026-11-05 | 2026-11-30 | 19d | 29d |  |
| 1676 | 1.7.21.1 | Alimentación eléctrica base a centro de carga | 5d | 2026-11-13 | 2026-11-21 | 1622, 1637 | 2026-11-13 | 2026-11-21 | 5d | 33d | 0d |
| 1677 | 1.7.21.2 | Interruptor termomagnético 1x15 A | 1d | 2026-11-21 | 2026-11-23 | 1676 | 2026-11-21 | 2026-11-23 | 1d | 33d | 4d |
| 1678 | 1.7.21.3 | Interruptor termomagnético 1x20 A | 1d | 2026-11-21 | 2026-11-23 | 1676 | 2026-11-21 | 2026-11-23 | 1d | 33d | 4d |
| 1679 | 1.7.21.4 | Interruptor termomagnético 2x20 A | 1d | 2026-11-21 | 2026-11-23 | 1676 | 2026-11-21 | 2026-11-23 | 1d | 33d | 4d |
| 1680 | 1.7.21.5 | Salida para apagador 3 vías | 4d | 2026-11-09 | 2026-11-13 | 1610, 1637FS-4d | 2026-11-09 | 2026-11-13 | 4d | 29d | 0d |
| 1681 | 1.7.21.6 | Salida para apagador triple | 3d | 2026-11-13 | 2026-11-19 | 1610, 1611, 1637 | 2026-11-13 | 2026-11-19 | 3d | 33d | 0d |
| 1682 | 1.7.21.7 | Salida para apagador doble | 3d | 2026-11-19 | 2026-11-23 | 1680, 1681 | 2026-11-19 | 2026-11-23 | 3d | 33d | 4d |
| 1683 | 1.7.21.8 | Salida para apagador sencillo | 3d | 2026-11-13 | 2026-11-19 | 1680 | 2026-11-13 | 2026-11-19 | 3d | 36d | 7d |
| 1684 | 1.7.21.9 | Salida de alumbrado en losa | 5d | 2026-11-13 | 2026-11-21 | 1680 | 2026-11-13 | 2026-11-21 | 5d | 31d | 0d |
| 1685 | 1.7.21.10 | Salida de alumbrado en muro | 4d | 2026-11-13 | 2026-11-20 | 1680 | 2026-11-13 | 2026-11-20 | 4d | 35d | 6d |
| 1686 | 1.7.21.11 | Salida para contacto 220 V | 3d | 2026-11-18 | 2026-11-21 | 1680FS+2d | 2026-11-18 | 2026-11-21 | 3d | 29d | 0d |
| 1687 | 1.7.21.12 | Salida para contacto doble | 5d | 2026-11-18 | 2026-11-24 | 1680FS+2d | 2026-11-18 | 2026-11-24 | 5d | 32d | 3d |
| 1688 | 1.7.21.13 | Salida para contacto doble área húmeda | 2d | 2026-11-21 | 2026-11-24 | 1686 | 2026-11-21 | 2026-11-24 | 2d | 32d | 3d |
| 1689 | 1.7.21.14 | Salida TV / telefonía / intercom | 4d | 2026-11-21 | 2026-11-26 | 1686 | 2026-11-21 | 2026-11-26 | 4d | 30d | 1d |
| 1690 | 1.7.21.15 | Extractor 4 baño | 5d | 2026-11-21 | 2026-11-27 | 1686 | 2026-11-21 | 2026-11-27 | 5d | 29d | 0d |
| 1691 | 1.7.21.16 | Prueba eléctrica | 2d | 2026-11-27 | 2026-11-30 | 1676, 1677, 1678, 1679, 1680, 1681, 1682, 1683, 1684, 1685, 1686, 1687, 1688, 1689, 1690, 1692, 1739, 1740, 1741 | 2026-11-27 | 2026-11-30 | 2d | 29d |  |
| 1692 | 1.7.21.17 | Murete convencional | 4d | 2026-11-05 | 2026-11-10 | 1626FS-4d | 2026-11-05 | 2026-11-10 | 4d | 42d | 13d |

| ID | WBS | Task | Duration | Start | Finish | Predecessors | Baseline start | Baseline finish | Baseline duration | Total slack | Free slack |
| --- | --- | --- | --- | --- | --- | --- | --- | --- | --- | --- | --- |
| 1693 | 1.7.22 | **INSTALACIÓN HIDRO-SANITARIA** | 11d | 2026-10-23 | 2026-11-06 |  | 2026-10-23 | 2026-11-06 | 11d | 0d |  |
| 1694 | 1.7.22.1 | Tubo PVC 3/4 red de condensados | 5d | 2026-10-23 | 2026-10-29 | 1618 | 2026-10-23 | 2026-10-29 | 5d | 0d |  |
| 1695 | 1.7.22.2 | Caja PVC para lavadora | 3d | 2026-10-23 | 2026-10-27 | 1618 | 2026-10-23 | 2026-10-27 | 3d | 0d |  |
| 1696 | 1.7.22.3 | Salida para secadora PVC 4 | 3d | 2026-10-23 | 2026-10-27 | 1621 | 2026-10-23 | 2026-10-27 | 3d | 0d |  |
| 1697 | 1.7.22.4 | Salida hidráulica para boiler | 2d | 2026-10-23 | 2026-10-26 | 1618 | 2026-10-23 | 2026-10-26 | 2d | 1d |  |
| 1698 | 1.7.22.5 | Salida hidráulica para llave de jardín | 3d | 2026-10-23 | 2026-10-27 | 1618 | 2026-10-23 | 2026-10-27 | 3d | 0d |  |
| 1699 | 1.7.22.6 | Salida hidráulica para lavabo | 4d | 2026-10-23 | 2026-10-28 | 1618 | 2026-10-23 | 2026-10-28 | 4d | 0d |  |
| 1700 | 1.7.22.7 | Salida hidráulica para purificación | 4d | 2026-10-23 | 2026-10-28 | 1618 | 2026-10-23 | 2026-10-28 | 4d | 0d |  |
| 1701 | 1.7.22.8 | Salida sanitaria para lavabo | 2d | 2026-10-27 | 2026-10-28 | 1618FS+2d | 2026-10-27 | 2026-10-28 | 2d | 0d |  |
| 1702 | 1.7.22.9 | Salida hidráulica para lavadero | 2d | 2026-10-27 | 2026-10-28 | 1618FS+2d | 2026-10-27 | 2026-10-28 | 2d | 0d |  |
| 1703 | 1.7.22.10 | Salida sanitaria para lavadero | 2d | 2026-10-28 | 2026-10-29 | 1618FS+3d | 2026-10-28 | 2026-10-29 | 2d | 0d |  |
| 1704 | 1.7.22.11 | Salida hidráulica para lavadora | 2d | 2026-10-28 | 2026-10-29 | 1618FS+3d | 2026-10-28 | 2026-10-29 | 2d | 0d |  |
| 1705 | 1.7.22.12 | Salida sanitaria para lavadora | 2d | 2026-10-29 | 2026-10-30 | 1621FS+4d | 2026-10-29 | 2026-10-30 | 2d | 0d |  |
| 1706 | 1.7.22.13 | Salida hidráulica para regadera | 5d | 2026-10-29 | 2026-11-04 | 1618FS+4d | 2026-10-29 | 2026-11-04 | 5d | 5d | 0d |
| 1707 | 1.7.22.14 | Salida sanitaria para regadera | 4d | 2026-10-29 | 2026-11-03 | 1621FS+4d | 2026-10-29 | 2026-11-03 | 4d | 6d | 2d |
| 1708 | 1.7.22.15 | Salida hidráulica para WC | 2d | 2026-10-27 | 2026-10-28 | 1621FS+2d | 2026-10-27 | 2026-10-28 | 2d | 0d |  |
| 1709 | 1.7.22.16 | Salida sanitaria para WC | 4d | 2026-10-29 | 2026-11-03 | 1621FS+4d | 2026-10-29 | 2026-11-03 | 4d | 0d |  |
| 1710 | 1.7.22.17 | Salida hidráulica para zinc | 4d | 2026-10-29 | 2026-11-03 | 1621FS+4d | 2026-10-29 | 2026-11-03 | 4d | 0d |  |
| 1711 | 1.7.22.18 | Salida sanitaria para zinc | 3d | 2026-10-31 | 2026-11-04 | 1621FS+6d | 2026-10-31 | 2026-11-04 | 3d | 0d |  |
| 1712 | 1.7.22.19 | Tubo para ventila de baño 2 | 5d | 2026-10-23 | 2026-10-29 | 1694SS | 2026-10-23 | 2026-10-29 | 5d | 0d |  |
| 1713 | 1.7.22.20 | Tubo para minisplit PVC 3 | 5d | 2026-10-30 | 2026-11-05 | 1712 | 2026-10-30 | 2026-11-05 | 5d | 0d |  |
| 1714 | 1.7.22.21 | Cuadro de medición | 5d | 2026-10-28 | 2026-11-03 | 1659 | 2026-10-28 | 2026-11-03 | 5d | 6d | 0d |
| 1715 | 1.7.22.22 | Prueba sanitaria | 1d | 2026-11-05 | 2026-11-06 | 1696, 1701, 1703, 1705, 1707, 1709, 1712, 1713 | 2026-11-05 | 2026-11-06 | 1d | 4d |  |
| 1716 | 1.7.22.23 | Prueba hidráulica | 1d | 2026-11-04 | 2026-11-05 | 1694, 1697, 1698, 1699, 1700, 1702, 1704, 1706, 1708, 1710, 1714, 1717, 1718 | 2026-11-04 | 2026-11-05 | 1d | 5d |  |
| 1717 | 1.7.22.24 | Salida hidráulica para tanque hidroneumático | 3d | 2026-10-28 | 2026-10-30 | 1659 | 2026-10-28 | 2026-10-30 | 3d | 8d | 3d |
| 1718 | 1.7.22.25 | Salida hidráulica para Active Driver | 3d | 2026-10-28 | 2026-10-30 | 1659 | 2026-10-28 | 2026-10-30 | 3d | 8d | 3d |

| ID | WBS | Task | Duration | Start | Finish | Predecessors | Baseline start | Baseline finish | Baseline duration | Total slack | Free slack |
| --- | --- | --- | --- | --- | --- | --- | --- | --- | --- | --- | --- |
| 1719 | 1.7.23 | **INSTALACION DE GAS** | 8d | 2026-10-21 | 2026-10-30 |  | 2026-10-21 | 2026-10-30 | 8d | 28d |  |
| 1720 | 1.7.23.1 | Ramaleo para gas 1/2 | 5d | 2026-10-26 | 2026-10-30 | 1659FS-2d, 1721 | 2026-10-26 | 2026-10-30 | 5d | 28d | 0d |
| 1721 | 1.7.23.2 | Excavación a mano material tipo B | 3d | 2026-10-21 | 2026-10-24 | 1659FF-2d | 2026-10-21 | 2026-10-24 | 3d | 28d | 0d |
| 1722 | 1.7.24 | **MUEBLES SANITARIOS** | 29d | 2026-11-30 | 2027-01-11 |  | 2026-11-30 | 2027-01-11 | 29d | 0d |  |
| 1723 | 1.7.24.1 | WC one piece Smart Corona | 2d | 2026-11-30 | 2026-12-02 | 1645, 1648, 1715, 1716 | 2026-11-30 | 2026-12-02 | 2d | 14d |  |
| 1724 | 1.7.24.2 | Lavabo Tarento Vanity | 4d | 2026-11-30 | 2026-12-04 | 1645, 1648, 1652, 1715, 1716 | 2026-11-30 | 2026-12-04 | 4d | 12d |  |
| 1725 | 1.7.24.3 | Regadera y monomando Thames | 3d | 2026-12-02 | 2026-12-07 | 1645, 1648FS+2d, 1652FS+2d, 1715, 1716 | 2026-12-02 | 2026-12-07 | 3d | 11d |  |
| 1726 | 1.7.24.4 | Coladera cuadrada para inserto cerámico | 2d | 2026-12-03 | 2026-12-07 | 1648FS+3d, 1652, 1716 | 2026-12-03 | 2026-12-07 | 2d | 11d |  |
| 1727 | 1.7.24.5 | Toallero argolla Thames | 1d | 2027-01-08 | 2027-01-11 | 1638FS-1d | 2027-01-08 | 2027-01-11 | 1d | 0d |  |
| 1728 | 1.7.24.6 | Toallero barra Thames | 1d | 2027-01-08 | 2027-01-11 | 1638FS-1d | 2027-01-08 | 2027-01-11 | 1d | 0d |  |
| 1729 | 1.7.24.7 | Portapapel Thames | 1d | 2027-01-08 | 2027-01-11 | 1638FS-1d | 2027-01-08 | 2027-01-11 | 1d | 0d |  |
| 1730 | 1.7.24.8 | Gancho percha Thames | 1d | 2027-01-08 | 2027-01-11 | 1638FS-1d | 2027-01-08 | 2027-01-11 | 1d | 0d |  |
| 1731 | 1.7.25 | **EQUIPAMIENTO** | 6d | 2026-10-15 | 2026-10-22 |  | 2026-10-15 | 2026-10-22 | 6d | 59d |  |
| 1732 | 1.7.25.1 | Electronivel Rotoplas 5 m | 2d | 2026-10-16 | 2026-10-19 | 1737 | 2026-10-16 | 2026-10-19 | 2d | 62d |  |
| 1733 | 1.7.25.2 | Manómetro | 1d | 2026-10-16 | 2026-10-17 | 1737 | 2026-10-16 | 2026-10-17 | 1d | 63d |  |
| 1734 | 1.7.25.3 | Interruptor de presión 30-50 PSI | 1d | 2026-10-16 | 2026-10-17 | 1737 | 2026-10-16 | 2026-10-17 | 1d | 63d |  |
| 1735 | 1.7.25.4 | Tanque hidroneumático FPS-24LX | 3d | 2026-10-16 | 2026-10-20 | 1737 | 2026-10-16 | 2026-10-20 | 3d | 59d | 0d |
| 1736 | 1.7.25.5 | Bomba sumergible Dominator 1.2 HP | 2d | 2026-10-20 | 2026-10-22 | 1735 | 2026-10-20 | 2026-10-22 | 2d | 59d |  |
| 1737 | 1.7.25.6 | Cisterna prefabricada 2800 L | 1d | 2026-10-15 | 2026-10-16 | 1625FF | 2026-10-15 | 2026-10-16 | 1d | 59d | 0d |
| 1738 | 1.7.26 | **LUMINARIAS** | 3d | 2026-11-21 | 2026-11-25 |  | 2026-11-21 | 2026-11-25 | 3d | 31d |  |
| 1739 | 1.7.26.1 | Roseta de cerámica para luminaria | 3d | 2026-11-21 | 2026-11-25 | 1684 | 2026-11-21 | 2026-11-25 | 3d | 31d | 2d |
| 1740 | 1.7.26.2 | Spot Brighton | 3d | 2026-11-21 | 2026-11-25 | 1684 | 2026-11-21 | 2026-11-25 | 3d | 31d | 2d |
| 1741 | 1.7.26.3 | Arbotante bidireccional 12W | 2d | 2026-11-21 | 2026-11-24 | 1684 | 2026-11-21 | 2026-11-24 | 2d | 32d | 3d |
| 1742 | 1.7.27 | **TERCER LIMPIEZA DE OBRA** | 8d | 2027-01-11 | 2027-01-20 |  | 2027-01-11 | 2027-01-20 | 8d | 0d |  |
| 1743 | 1.7.27.1 | Limpieza fina para entrega | 5d | 2027-01-11 | 2027-01-16 | 1638, 1662, 1669, 1674, 1691, 1715, 1716, 1727, 1728, 1729, 1730, 1732, 1733, 1734, 1735, 1736, 1747 | 2027-01-11 | 2027-01-16 | 5d | 0d |  |
| 1744 | 1.7.27.2 | Tercera limpieza de obra | 4d | 2027-01-13 | 2027-01-18 | 1743FS-3d | 2027-01-13 | 2027-01-18 | 4d | 0d |  |
| 1745 | 1.7.27.3 | Tercera carga y acarreo de escombro | 4d | 2027-01-15 | 2027-01-20 | 1744FS-2d | 2027-01-15 | 2027-01-20 | 4d | 0d |  |

| ID | WBS | Task | Duration | Start | Finish | Predecessors | Baseline start | Baseline finish | Baseline duration | Total slack |
| --- | --- | --- | --- | --- | --- | --- | --- | --- | --- | --- |
| 1746 | 1.7.28 | **OBRA EXTERIOR - BARDA** | 18d | 2026-10-28 | 2026-11-20 |  | 2026-10-28 | 2026-11-20 | 18d | 37d |
| 1747 | 1.7.28.1 | Barda de block aparente | 18d | 2026-10-28 | 2026-11-20 | 1659 | 2026-10-28 | 2026-11-20 | 18d | 37d |
